# RAID - Cronograma consolidado_LMF_20140620

How a schedule from MS Project changed from version to version. A marks actual dates.

## Version 1 (data date 2014-11-28, saved 2015-01-19, file 84710_CONSOLIDADO_180115.mpp)

Note of the change: up 201801031547

| ID | WBS | Task | Duration | Start | Finish | Predecessors | Complete | Total float | Constraint |
| --- | --- | --- | --- | --- | --- | --- | --- | --- | --- |
| 1 | 1 | **84710 - Controles de Integridade Grupos 1 e 2** | 485d | 2014-05-19 A | 2016-03-25 |  | 32% | 0d |  |
| 2 | 1.1 | **Visão e DSOL** | 90d | 2014-05-19 A | 2014-09-19 A |  | 100% |  |  |
| 3 |  | Ajustar STI | 6d | 2014-05-19 A | 2014-05-26 A |  | 100% |  |  |
| 4 | 1.1.2 | **Primeira plenária** | 4d | 2014-05-26 A | 2014-05-29 A |  | 100% |  |  |
| 5 |  | 1ª Plenária - CRM x HLR - Tráfego - STI 84710 | 1d | 2014-05-26 A | 2014-05-26 A |  | 100% |  | start no earlier than 2014-05-26 |
| 6 |  | 1ª Plenária - CRM x Faturamento Móvel - STI 84710 | 1d | 2014-05-27 A | 2014-05-27 A | 5 | 100% |  |  |
| 7 |  | 1ª Plenária - CRM x Faturamento Fixa R2 - STI 84710 | 1d | 2014-05-28 A | 2014-05-28 A | 6 | 100% |  |  |
| 8 |  | 1ª Plenária - CRM x Rede Fixa R1 - STI 84710 | 1d | 2014-05-29 A | 2014-05-29 A | 7 | 100% |  |  |
| 9 |  | 1ª Plenária - STC x SISRAF - STI 84710 | 1d | 2014-05-29 A | 2014-05-29 A | 8FF | 100% |  |  |
| 10 | 1.1.3 | **Segunda plenária** | 1d | 2014-06-05 A | 2014-06-05 A |  | 100% |  |  |
| 11 |  | 2ª Plenária - Revisão do documento STI 84710 | 1d | 2014-06-05 A | 2014-06-05 A |  | 100% |  | start no earlier than 2014-06-05 |
| 12 | 1.1.4 | **Terceira plenária** | 1d | 2014-06-05 A | 2014-06-05 A |  | 100% |  |  |
| 13 |  | 3ª Plenária - Revisão do documento STI 84710 | 1d | 2014-06-05 A | 2014-06-05 A |  | 100% |  | start no earlier than 2014-06-05 |
| 14 | 1.1.5 | **Quarta plenária** | 2.5d | 2014-07-23 A | 2014-07-25 A |  | 100% |  |  |
| 15 |  | STI 84710 - DSOL - SAC x SFA - 4ª Plenária | 1d | 2014-07-23 A | 2014-07-23 A |  | 100% |  | start no earlier than 2014-07-23 |
| 16 |  | STI 84710 - DSOL - STC e SISRAF - 4ª Plenária | 0.5d | 2014-07-25 A | 2014-07-25 A |  | 100% |  | start no earlier than 2014-07-25 |
| 17 |  | STI 84710 - DSOL - SIEBEL, INFORMÁTICA - 4ª Plenária | 0.5d | 2014-07-25 A | 2014-07-25 A |  | 100% |  | start no earlier than 2014-07-25 |
| 18 | 1.1.6 | **Quinta plenária** | 3d | 2014-07-29 A | 2014-07-31 A |  | 100% |  |  |
| 19 |  | STI 84710 - DSOL - 5ª Plenária | 3d | 2014-07-29 A | 2014-07-31 A |  | 100% |  | start no earlier than 2014-07-29 |
| 20 | 1.1.7 | **Sexta Plenária** | 1d | 2014-08-06 A | 2014-08-06 A |  | 100% |  |  |
| 21 |  | Reunião - 6a. Plenaria | 1d | 2014-08-06 A | 2014-08-06 A |  | 100% |  | start no earlier than 2014-08-06 |
| 22 | 1.1.8 | **1a Revisão de escopo - acerto de interfaces** | 3d | 2014-06-13 A | 2014-06-17 |  | 100% |  |  |
| 23 |  | Documento atualizado no STI | 1d? | 2014-06-13 A | 2014-06-13 A |  | 100% |  |  |
| 24 |  | Aprovação Gerente imediato | 1d? | 2014-06-13 A | 2014-06-13 A |  | 100% |  |  |
| 25 | 1.1.8.3 | **Aprovaçao de áreas impactadas** | 5d | 2014-06-13 A | 2014-06-19 A |  | 100% |  |  |
| 26 |  | Controladoria | 3d | 2014-06-13 A | 2014-06-17 A |  | 100% |  |  |
| 27 |  | projetos de faturamento | 3d | 2014-06-13 A | 2014-06-17 A |  | 100% |  |  |
| 28 |  | planejamento core rede movel | 5d | 2014-06-13 A | 2014-06-19 A |  | 100% |  |  |
| 29 |  | RA e prevenção a fraudes | 3d | 2014-06-13 A | 2014-06-17 A |  | 100% |  |  |
| 30 |  | segurança da informação | 3d | 2014-06-13 A | 2014-06-17 A |  | 100% |  |  |
| 31 |  | Tributos diretos | 3d | 2014-06-13 A | 2014-06-17 A |  | 100% |  |  |
| 32 | 1.1.9 | **2a Revisão de escopo - retirada PTS** | 5d | 2014-06-18 A | 2014-06-24 A |  | 100% |  |  |
| 33 |  | Aprovação Gerente imediato | 1d | 2014-06-18 A | 2014-06-18 A |  | 100% |  |  |
| 34 |  | Documento atualizado no STI | 2d | 2014-06-19 A | 2014-06-20 A | 33 | 100% |  |  |
| 35 | 1.1.9.3 | **Aprovação de áreas impactadas** | 2d | 2014-06-23 A | 2014-06-24 A |  | 100% |  |  |
| 36 |  | controladoria | 2d | 2014-06-23 A | 2014-06-24 A | 34 | 100% |  |  |
| 37 |  | projetos de faturamento | 0d | 2014-06-23 A | 2014-06-23 A | 34 | 100% |  |  |
| 38 |  | planejamento core rede movel | 2d | 2014-06-23 A | 2014-06-24 A | 34 | 100% |  |  |
| 39 |  | RA e prevenção a fraudes | 2d | 2014-06-23 A | 2014-06-24 A | 34 | 100% |  |  |
| 40 |  | Segurança da informação | 0d | 2014-06-23 A | 2014-06-23 A | 34 | 100% |  |  |
| 41 |  | Tributos diretos | 0d | 2014-06-23 A | 2014-06-23 A | 34 | 100% |  |  |
| 42 |  | STI enviado para o CSOL | 0d | 2014-06-24 A | 2014-06-24 A | 35 | 100% |  |  |
| 43 |  | Atualização de Visão Gráfica | 2d | 2014-06-25 A | 2014-06-26 A | 42 | 100% |  |  |
| 44 |  | Atualização de ME Consolidada STI | 1d | 2014-06-26 A | 2014-06-26 A | 43 | 100% |  |  |
| 45 | 1.1.13 | **Revalidação de GO para as fábricas** | 0d | 2014-06-27 A | 2014-06-27 A | 43 | 100% |  |  |
| 46 |  | Confirmação de Custo/Prazo ACC SBL | 0d | 2014-06-27 A | 2014-06-27 A | 43 | 100% |  |  |
| 47 |  | Confirmação de Custo/Prazo ACC ARBOR | 0d | 2014-06-27 A | 2014-06-27 A | 43 | 100% |  |  |
| 48 |  | Confirmação de Custo/Prazo ACC STC | 0d | 2014-06-27 A | 2014-06-27 A | 43 | 100% |  |  |
| 49 |  | Confirmação de Custo/Prazo ACC SAC | 0d | 2014-06-27 A | 2014-06-27 A | 43 | 100% |  |  |
| 50 |  | Confirmação de Custo/Prazo ACC INF | 0d | 2014-06-27 A | 2014-06-27 A | 43 | 100% |  |  |
| 51 |  | Confirmação de Custo/Prazo IBM SISRAF | 0d | 2014-06-27 A | 2014-06-27 A | 43 | 100% |  |  |
| 52 |  | Confirmação de Custo/Prazo IBM SFA | 0d | 2014-06-27 A | 2014-06-27 A | 43 | 100% |  |  |
| 53 |  | Confirmação de Custo/Prazo IBM GENEVA | 0d | 2014-06-27 A | 2014-06-27 A | 43 | 100% |  |  |
| 54 |  | Confirmação de Custo/Prazo WEDO RAID PI | 0d | 2014-06-27 A | 2014-06-27 A | 43 | 100% |  |  |
| 55 |  | Revisão de plano do DSOL | 1d | 2014-06-27 A | 2014-06-27 A | 45 | 100% |  |  |
| 56 | 1.1.15 | **Elaboração Visão de Solução Final SISTEMAS IMPACTADOS** | 16d | 2014-06-27 A | 2014-07-18 A |  | 100% |  |  |
| 57 |  | DS - Elaborar Visão da solução Final Siebel 6.3 | 10d | 2014-07-01 A | 2014-07-14 A | 46 | 100% |  | start no earlier than 2014-07-01 |
| 58 |  | DS - Elaborar Visão da solução Final ARBOR | 10d | 2014-07-01 A | 2014-07-14 A | 47 | 100% |  | start no earlier than 2014-07-01 |
| 59 |  | DS - Elaborar Visão da solução Final STC/SISRAF | 10d | 2014-07-01 A | 2014-07-14 A | 48 | 100% |  | start no earlier than 2014-07-01 |
| 60 |  | DS - Elaborar Visão da solução Final SAC | 10d | 2014-07-01 A | 2014-07-14 A | 49 | 100% |  | start no earlier than 2014-07-01 |
| 61 |  | DS - Elaborar Visão da solução Final INF | 16d | 2014-06-27 A | 2014-07-18 A | 50 | 100% |  | start no earlier than 2014-06-27 |
| 62 |  | DS - Elaborar Visão da solução Fina SFA | 10d | 2014-07-01 A | 2014-07-14 A | 51 | 100% |  | start no earlier than 2014-07-01 |
| 63 |  | DS - Elaborar Visão da solução Final GENEVA | 10d | 2014-07-01 A | 2014-07-14 A | 52 | 100% |  | start no earlier than 2014-07-01 |
| 64 |  | DS - Elaborar Visão da solução Final HLR | 10d | 2014-07-01 A | 2014-07-14 A | 53 | 100% |  | start no earlier than 2014-07-01 |
| 65 |  | DS - Elaborar Visão da solução Final RAID IP | 10d | 2014-06-30 A | 2014-07-11 A | 54 | 100% |  | start no earlier than 2014-06-23 |
| 66 | 1.1.16 | **Aprovação Visão da Solução Final** | 10d | 2014-07-14 A | 2014-07-25 A |  | 100% |  |  |
| 67 |  | DS – Aprovar Visão da Solução Final – Siebel 6.3 | 9d | 2014-07-15 A | 2014-07-25 A | 57 | 100% |  |  |
| 68 |  | DS – Aprovar Visão da Solução Final – Arbor | 9d | 2014-07-15 A | 2014-07-25 A | 58 | 100% |  |  |
| 69 |  | DS – Aprovar Visão da Solução Final – STC | 5d | 2014-07-15 A | 2014-07-21 A | 59 | 100% |  |  |
| 70 |  | DS – Aprovar Visão da Solução Final – SAC | 5d | 2014-07-15 A | 2014-07-21 A | 60 | 100% |  |  |

| ID | WBS | Task | Duration | Start | Finish | Predecessors | Complete | Total float | Constraint |
| --- | --- | --- | --- | --- | --- | --- | --- | --- | --- |
| 71 |  | DS – Aprovar Visão da Solução Final – Informatica | 3d | 2014-07-21 A | 2014-07-23 A | 61 | 100% |  |  |
| 72 |  | DS – Aprovar Visão da Solução Final – SFA | 5d | 2014-07-15 A | 2014-07-21 A | 62 | 100% |  |  |
| 73 |  | DS – Aprovar Visão da Solução Final – GENEVA | 5d | 2014-07-15 A | 2014-07-21 A | 63 | 100% |  |  |
| 74 |  | DS – Aprovar Visão da Solução Final – HLR | 5d | 2014-07-15 A | 2014-07-21 A | 64 | 100% |  |  |
| 75 |  | DS – Aprovar Visão da Solução Final – RAID IP | 5d | 2014-07-14 A | 2014-07-18 A | 65 | 100% |  |  |
| 76 |  | DS – Consolidar Visão da Solução Final – Todos os sistemas | 2d | 2014-07-28 A | 2014-07-29 A | 66 | 100% |  |  |
| 77 |  | DS – Aprovar Visão da Solução Final Consolidada | 0d | 2014-07-29 A | 2014-07-29 A | 76 | 100% |  |  |
| 78 | 1.1.19 | **Elaboração Artefatos do Desenho de Solução SISTEMAS IMPACTADOS** | 26d | 2014-07-22 A | 2014-08-26 A |  | 100% |  |  |
| 79 |  | DS – Elabora artefatos do Desenho da Solução – Siebel 6.3 | 18d | 2014-07-24 A | 2014-08-18 A | 67FS-2d | 100% |  |  |
| 80 |  | DS – Elabora artefatos do Desenho da Solução – Arbor | 24d | 2014-07-24 A | 2014-08-26 A | 68FS-2d | 100% |  |  |
| 81 |  | DS – Elabora artefatos do Desenho da Solução – STC | 10d | 2014-07-22 A | 2014-08-04 A | 69 | 100% |  |  |
| 82 |  | DS – Elabora artefatos do Desenho da Solução – SAC | 17d | 2014-07-24 A | 2014-08-15 A | 70FS+2d | 100% |  |  |
| 83 |  | DS – Elabora artefatos do Desenho da Solução – Informatica | 19d | 2014-07-28 A | 2014-08-21 A | 71FS+2d | 100% |  |  |
| 84 |  | DS – Elabora artefatos do Desenho da Solução – SFA | 10d | 2014-07-22 A | 2014-08-04 A | 72 | 100% |  |  |
| 85 |  | DS – Elabora artefatos do Desenho da Solução – GENEVA | 10d | 2014-07-22 A | 2014-08-04 A | 73 | 100% |  | finish no earlier than 2014-07-25 |
| 86 |  | DS – Elabora artefatos do Desenho da Solução – HLR | 15d | 2014-07-22 A | 2014-08-11 A | 74 | 100% |  |  |
| 87 |  | DS – Elabora artefatos do Desenho da Solução – RAID IP | 24d | 2014-07-22 A | 2014-08-22 A | 75FS+1d | 100% |  |  |
| 88 |  | DS - Elaborar artefatos do Desenho da solução - SIS Móvel | 8d | 2014-08-12 A | 2014-08-21 A | 86 | 100% |  |  |
| 89 | 1.1.20 | **Aprovação de Artefatos de Desenho de Solução** | 31d | 2014-08-05 A | 2014-09-16 A |  | 100% |  |  |
| 90 |  | DS – Aprovar artefatos do Desenho da Solução – Siebel 6.3 | 11d | 2014-08-07 A | 2014-08-21 A | 79FS-2d | 100% |  |  |
| 91 |  | DS – Aprovar artefatos do Desenho da Solução – Arbor | 12d | 2014-08-13 A | 2014-08-28 A | 80FS-10d | 100% |  |  |
| 92 |  | DS – Aprovar artefatos do Desenho da Solução – STC | 5d | 2014-08-05 A | 2014-08-11 A | 81 | 100% |  |  |
| 93 |  | DS – Aprovar artefatos do Desenho da Solução – SAC | 5d | 2014-08-18 A | 2014-08-22 A | 82 | 100% |  |  |
| 94 |  | DS – Aprovar artefatos do Desenho da Solução – Informatica | 2d | 2014-08-22 A | 2014-08-25 A | 83 | 100% |  |  |
| 95 |  | DS – Aprovar artefatos do Desenho da Solução – SFA | 5d | 2014-08-05 A | 2014-08-11 A | 84 | 100% |  |  |
| 96 |  | DS – Aprovar artefatos do Desenho da Solução – GENEVA | 19d | 2014-08-13 A | 2014-09-08 A | 85FS+6d | 100% |  |  |
| 97 |  | DS – Aprovar artefatos do Desenho da Solução – HLR | 5d | 2014-08-12 A | 2014-08-18 A | 86 | 100% |  |  |
| 98 |  | DS – Aprovar artefatos do Desenho da Solução – RAID IP | 17d | 2014-08-25 A | 2014-09-16 A | 87 | 100% |  |  |
| 99 |  | DS - Aprovar artefatos do Desneho da Solução - SIS Móvel | 1d | 2014-08-22 A | 2014-08-22 A | 88 | 100% |  |  |
| 100 |  | DS – Consolidar Desenho da Solução Final – Todos os sistemas + HLR | 2d | 2014-09-17 A | 2014-09-18 A | 89 | 100% |  |  |
| 101 |  | DS – Aprovar Desenho da Solução Final Consolidada | 1d | 2014-09-19 A | 2014-09-19 A | 100 | 100% |  |  |
| 102 | 1.2 | **Fechar Custo** | 34d | 2014-09-12 A | 2014-10-29 A | 101 | 100% |  |  |
| 103 |  | Receber proposta Desenvolvimento | 4d | 2014-09-12 A | 2014-09-25 A |  | 100% |  |  |
| 104 |  | Validar propostas Desenvolvimento | 11d | 2014-09-26 A | 2014-10-10 A | 103 | 100% |  |  |
| 105 | 1.2.3 | **RAID** | 4d | 2014-09-29 A | 2014-10-02 A |  | 100% |  |  |
| 106 |  | Validação Métricas | 1d | 2014-09-29 A | 2014-09-29 A | 103FS+1d | 100% |  |  |
| 107 |  | Validação Métricas e WEDO | 1d | 2014-10-01 A | 2014-10-01 A | 106FS+1d | 100% |  |  |
| 108 |  | Receber proposta RAID ajustada | 0d | 2014-10-02 A | 2014-10-02 A | 107FS+2d | 100% |  |  |
| 109 |  | Validar proposta RAId ajustada | 0d | 2014-10-02 A | 2014-10-02 A | 108 | 100% |  |  |
| 110 | 1.2.4 | **Testes** | 28d | 2014-09-22 A | 2014-10-29 A |  | 100% |  |  |
| 111 |  | Elaborar estratégia de testes | 7d | 2014-09-22 A | 2014-09-30 A | 101 | 100% |  |  |
| 112 |  | Validar estratégia de testes | 2d | 2014-10-01 A | 2014-10-02 A | 111 | 100% |  |  |
| 113 |  | Receber/validar propostas de testes | 19d | 2014-10-03 A | 2014-10-29 A | 112 | 100% |  |  |
| 114 |  | Custo desenvolvimento fechado | 0d | 2014-10-29 A | 2014-10-29 A |  | 100% |  |  |
| 115 | 1.3 | **Aprovação Financeira** | 5d | 2014-10-23 A | 2014-10-29 A |  | 100% |  |  |
| 116 |  | Aprovação Custo final | 5d | 2014-10-23 A | 2014-10-29 A | 114FS-5d | 100% |  |  |
| 117 |  | Go para fornecedores | 0d | 2014-10-29 A | 2014-10-29 A | 116 | 100% |  |  |
| 118 | 1.4 | **Planejar desenvolvimento** | 27d | 2014-10-30 A | 2014-12-05 |  | 44% | 340d |  |
| 119 |  | Receber cronogramas Desenvolvimento | 12d | 2014-10-30 A | 2014-11-14 A | 117 | 100% |  |  |
| 120 |  | Validar e Consolidar Cronogramas | 15d | 2014-11-17 | 2014-12-05 | 119 |  | 340d |  |
| 121 | 1.5 | **DESENVOLVIMENTO** | 485d | 2014-05-19 | 2016-03-25 |  |  | 0d |  |
| 122 | 1.5.1 | **Desenho Técnico** | 96d | 2014-11-24 | 2015-04-06 |  |  | -40d |  |
| 123 | 1.5.1.1 | **WEDO** | 40d | 2014-12-01 | 2015-01-23 |  |  | -45d |  |
| 124 |  | Elaborar Desenho Técnico | 34d | 2014-12-01 | 2015-01-15 |  |  | -45d | start no earlier than 2014-12-01 |
| 125 |  | Elaborar Modelo da Dados | 5d | 2015-01-09 | 2015-01-15 | 124FF |  | 311d |  |
| 126 |  | Validar Desenho Técnico | 5d | 2015-01-16 | 2015-01-22 | 124 |  | -45d |  |
| 127 |  | Aprovar Desenho Técnico | 1d | 2015-01-23 | 2015-01-23 | 126 |  | -45d |  |
| 128 |  | Desenho Técnico Finalizado | 0d | 2015-01-23 | 2015-01-23 | 127 |  | -45d |  |
| 129 | 1.5.1.2 | **ACCENTURE** | 96d | 2014-11-24 | 2015-04-06 | 128 |  | 0d |  |
| 130 | 1.5.1.2.1 | **Sistema Siebel 63** | 20d | 2015-01-05 | 2015-01-30 |  |  | 0d |  |
| 131 |  | Elaboração de Especificação Técnica | 15d | 2015-01-05 | 2015-01-23 |  |  |  | start no earlier than 2015-01-05 |
| 132 |  | Validação da Especificação Técnica - Oi (opcional) | 5d | 2015-01-26 | 2015-01-30 | 131 |  | 261d |  |
| 133 | 1.5.1.2.2 | **Sistema INFORMATICA** | 20d | 2015-01-26 | 2015-02-20 |  |  | 246d |  |
| 134 |  | Elaboração de Especificação Técnica | 15d | 2015-01-26 | 2015-02-13 |  |  | 246d |  |
| 135 |  | Validação da Especificação Técnica - Oi (opcional) | 5d | 2015-02-16 | 2015-02-20 | 134 |  | 246d |  |
| 136 | 1.5.1.2.3 | **Sistema SISMOVEL** | 50d | 2014-11-24 | 2015-01-30 |  |  | 0d |  |
| 137 |  | Elaboração de Especificação Técnica | 19d | 2014-11-24 | 2014-12-18 |  |  | -45d | must start on 2014-11-24 |
| 138 |  | Validação da Especificação Técnica - Oi (opcional) | 5d | 2015-01-26 | 2015-01-30 | 137 |  | 261d |  |
| 139 | 1.5.1.2.4 | **Sistema STC** | 11d | 2015-03-23 | 2015-04-06 |  |  | 215d |  |
| 140 |  | Elaboração de Especificação Técnica | 6d | 2015-03-23 | 2015-03-30 | 143SS |  | 215d |  |

| ID | WBS | Task | Duration | Start | Finish | Predecessors | Total float | Constraint |
| --- | --- | --- | --- | --- | --- | --- | --- | --- |
| 141 |  | Validação da Especificação Técnica - Oi (opcional) | 5d | 2015-03-31 | 2015-04-06 | 140 | 215d |  |
| 142 | 1.5.1.2.5 | **Sistema SAC** | 10d | 2015-03-23 | 2015-04-03 |  | 0d |  |
| 143 |  | Elaboração de Especificação Técnica | 5d | 2015-03-23 | 2015-03-27 |  | 0d | must start on 2015-03-23 |
| 144 |  | Validação da Especificação Técnica - Oi (opcional) | 5d | 2015-03-30 | 2015-04-03 | 143 | 216d |  |
| 145 | 1.5.1.2.6 | **Sistema ARBOR** | 15d | 2015-01-20 | 2015-02-09 |  | 0d |  |
| 146 |  | Elaboração de Especificação Técnica | 10d | 2015-01-20 | 2015-02-02 |  | -4d | must start on 2015-01-20 |
| 147 |  | Validação da Especificação Técnica - Oi (opcional) | 5d | 2015-02-03 | 2015-02-09 | 146 | 255d |  |
| 148 | 1.5.1.3 | **IBM** | 24d | 2014-12-09 | 2015-01-09 |  | 0d |  |
| 149 |  | Elaborar Desenho Técnico SFA e Geneva | 19d | 2014-12-09 | 2015-01-02 |  | 0d | must start on 2014-12-09 |
| 150 |  | Validar Desenho Técnico (opcional) | 5d | 2015-01-05 | 2015-01-09 | 149 | 315d | finish no earlier than 2015-01-09 |
| 151 | 1.5.2 | **Planejamento de Testes** | 85d | 2015-02-02 | 2015-05-29 |  | 215d |  |
| 152 | 1.5.2.1 | **Testes de Sistema** | 63d | 2015-02-02 | 2015-04-29 |  | 237d |  |
| 153 | 1.5.2.1.1 | **WEDO** | 17d | 2015-04-07 | 2015-04-29 |  | 215d |  |
| 154 |  | Elaborar Plano/Cenários de Testes Sistema | 12d | 2015-04-07 | 2015-04-22 | 129 | 215d | start no earlier than 2014-11-04 |
| 155 |  | Validar Plano/Cenários de Testes de sistema | 4d | 2015-04-23 | 2015-04-28 | 154 | 215d |  |
| 156 |  | Aprovar Plano/Cenários de Testes de Sistema | 1d | 2015-04-29 | 2015-04-29 | 155 | 215d |  |
| 157 |  | Plano de Testes Finalizado | 0d | 2015-04-29 | 2015-04-29 | 156 | 215d |  |
| 158 | 1.5.2.1.2 | **ACCENTURE** | 51d | 2015-02-02 | 2015-04-13 |  | 249d |  |
| 159 | 1.5.2.1.2.1 | **Sistema Siebel 63** | 7d | 2015-02-02 | 2015-02-10 |  | 293d |  |
| 160 |  | Elaboração do planejamento de teste | 7d | 2015-02-02 | 2015-02-10 |  | 293d | start no earlier than 2015-02-02 |
| 161 | 1.5.2.1.2.2 | **Sistema STC** | 6d | 2015-04-06 | 2015-04-13 |  | 249d |  |
| 162 |  | Elaboração do planejamento de teste | 6d | 2015-04-06 | 2015-04-13 |  | 249d | start no earlier than 2015-04-06 |
| 163 | 1.5.2.1.2.3 | **Sistema SAC** | 6d | 2015-04-06 | 2015-04-13 |  | 249d |  |
| 164 |  | Elaboração do planejamento de teste | 6d | 2015-04-06 | 2015-04-13 |  | 249d | start no earlier than 2015-04-06 |
| 165 | 1.5.2.1.2.4 | **Sistema ARBOR** | 2d | 2015-02-02 | 2015-02-03 |  | 298d |  |
| 166 |  | Elaboração do planejamento de teste | 2d | 2015-02-02 | 2015-02-03 |  | 298d | start no earlier than 2015-02-02 |
| 167 | 1.5.2.2 | **Testes Integrados e UAT** | 85d | 2015-02-02 | 2015-05-29 |  | 215d |  |
| 168 | 1.5.2.2.1 | **WEDO** | 22d | 2015-04-30 | 2015-05-29 |  | 215d |  |
| 169 |  | Elaborar e Cadastrar (Quality Center) Plano/Cenários de Testes Integrados e UAT | 11d | 2015-04-30 | 2015-05-14 | 157 | 215d |  |
| 170 |  | Validar Plano/Cenários de Testes Integrados e UAT | 5d | 2015-05-15 | 2015-05-21 | 169 | 215d |  |
| 171 |  | Validar Plano/Cenários de Testes Integrados e UAT | 5d | 2015-05-22 | 2015-05-28 | 170 | 215d |  |
| 172 |  | Aprovar Plano/Cenários de Testes de Sistema | 1d | 2015-05-29 | 2015-05-29 | 171 | 215d |  |
| 173 |  | Plano de Testes Finalizado | 0d | 2015-05-29 | 2015-05-29 | 172 | 215d |  |
| 174 | 1.5.2.2.2 | **IBM** | 41d | 2015-02-02 | 2015-03-30 |  | 259d |  |
| 175 |  | Elaborar e Cadastrar (Quality Center) Plano/Cenários de Testes Integrados e UAT | 10d | 2015-02-02 | 2015-02-13 |  | 262d | start no earlier than 2015-02-02 |
| 176 |  | Validar Plano/Cenários de Testes Integrados e UAT | 5d | 2015-02-19 | 2015-02-25 | 175 | 259d |  |
| 177 |  | Validar Plano/Cenários de Testes Integrados e UAT | 5d | 2015-02-26 | 2015-03-04 | 176 | 259d |  |
| 178 |  | Aprovar Plano/Cenário de testes Integrados e UAT | 1d | 2015-03-05 | 2015-03-05 | 177 | 259d |  |
| 179 |  | Reuniões de Interdependências | 5d | 2015-03-06 | 2015-03-12 | 178 | 259d |  |
| 180 |  | Atualizar Cronograma de TI/UAT com interdependências | 2d | 2015-03-13 | 2015-03-16 | 179 | 259d |  |
| 181 |  | Consolidar Cronograma de TI/UAT | 2d | 2015-03-17 | 2015-03-18 | 180 | 259d |  |
| 182 |  | Aprovar Cronograma TI/UAT | 5d | 2015-03-19 | 2015-03-25 | 181 | 259d |  |
| 183 |  | Atualizar datas no ALM11 | 3d | 2015-03-26 | 2015-03-30 | 182 | 259d |  |
| 184 | 1.5.3 | **Construção/Configuração e Testes de Sistema** | 485d | 2014-05-19 | 2016-03-25 |  | 0d |  |
| 185 | 1.5.3.1 | **WEDO** | 91d | 2015-01-26 | 2015-06-01 |  | 204d |  |
| 186 |  | Realizar Construção e TU | 65d | 2015-01-26 | 2015-04-24 | 128 | 204d |  |
| 187 |  | Realizar Testes de sistema | 31d | 2015-04-20 | 2015-06-01 | 186FS-5d | 204d |  |
| 188 |  | Construção e Teste de sistema WEDO Finalizada | 0d | 2015-06-01 | 2015-06-01 | 187 | 204d |  |
| 189 | 1.5.3.2 | **ACCENTURE** | 485d | 2014-05-19 | 2016-03-25 |  | 0d |  |
| 190 | 1.5.3.2.1 | **Construção** | 239d | 2014-05-19 | 2015-04-16 |  | 246d |  |
| 191 | 1.5.3.2.1.1 | **Sistema Siebel 63** | 30d | 2015-01-26 | 2015-03-06 |  | 275d |  |
| 192 |  | Construção e teste unitário | 20d | 2015-01-26 | 2015-02-20 | 131 | 275d |  |
| 193 |  | Merge | 1d | 2015-02-23 | 2015-02-23 | 192 | 279d |  |
| 194 |  | Elaborar Runbook / Simproc | 5d | 2015-02-23 | 2015-02-27 | 192 | 275d |  |
| 195 |  | Validação Runbook / Simproc - Oi | 5d | 2015-03-02 | 2015-03-06 | 194 | 275d |  |
| 196 |  | Execução do teste de conectividade | 5d | 2015-02-24 | 2015-03-02 | 193 | 279d |  |
| 197 | 1.5.3.2.1.2 | **Sistema INFORMATICA** | 235d | 2014-05-19 | 2015-04-10 |  | 250d |  |
| 198 |  | Construção e teste unitário | 30d | 2015-02-16 | 2015-03-27 | 134 | 250d |  |
| 199 |  | Elaborar Runbook / Simproc | 5d | 2015-03-30 | 2015-04-03 | 198 | 250d |  |
| 200 |  | Validação Runbook / Simproc - Oi | 5d | 2015-04-06 | 2015-04-10 | 199 | 250d |  |
| 201 |  | Execução do teste de conectividade | 5d | 2014-05-19 | 2014-05-23 |  | 480d |  |
| 202 | 1.5.3.2.1.3 | **Sistema STC** | 13d | 2015-03-31 | 2015-04-16 |  | 246d |  |
| 203 |  | Construção e teste unitário | 12d | 2015-03-31 | 2015-04-15 | 140 | 246d |  |
| 204 |  | Merge | 1d | 2015-04-16 | 2015-04-16 | 203 | 246d |  |
| 205 | 1.5.3.2.1.4 | **Sistema SAC** | 7d | 2015-03-30 | 2015-04-07 |  | 253d |  |
| 206 |  | Construção e teste unitário | 6d | 2015-03-30 | 2015-04-06 | 143 | 253d |  |
| 207 |  | Merge | 1d | 2015-04-07 | 2015-04-07 | 206 | 253d |  |
| 208 | 1.5.3.2.1.5 | **Sistema ARBOR** | 16d | 2015-02-03 | 2015-02-24 |  | 283d |  |
| 209 |  | Construção e teste unitário | 15d | 2015-02-03 | 2015-02-23 | 146 | 283d |  |
| 210 |  | Merge | 1d | 2015-02-24 | 2015-02-24 | 209 | 283d |  |

| ID | WBS | Task | Duration | Start | Finish | Predecessors | Total float | Constraint |
| --- | --- | --- | --- | --- | --- | --- | --- | --- |
| 211 | 1.5.3.2.2 | **Migração** | 264d | 2014-07-08 | 2015-07-10 |  | 185d |  |
| 212 | 1.5.3.2.2.1 | **Sistema Siebel 63** | 79d | 2015-03-20 | 2015-07-08 |  | 177d |  |
| 213 |  | Migração para TS | 1d | 2015-03-20 | 2015-03-20 |  | 253d | start no earlier than 2015-03-20 |
| 214 |  | Migração para TI | 1d | 2015-05-12 | 2015-05-12 |  | 140d | start no earlier than 2015-05-12 |
| 215 |  | Migração para TRG | 1d | 2015-07-08 | 2015-07-08 |  | 187d | start no earlier than 2015-07-08 |
| 216 | 1.5.3.2.2.2 | **Sistema INFORMATICA** | 221d | 2014-07-08 | 2015-05-12 |  | 228d |  |
| 217 |  | Migração para TI | 1d | 2015-05-12 | 2015-05-12 |  | 228d | start no earlier than 2015-05-12 |
| 218 |  | Migração para TRG | 1d | 2014-07-08 | 2014-07-08 |  | 448d | start no earlier than 2014-07-08 |
| 219 | 1.5.3.2.2.3 | **Sistema STC** | 69d | 2015-04-07 | 2015-07-10 |  | 0d |  |
| 220 |  | Migração para TS | 1d | 2015-04-07 | 2015-04-07 |  | 0d | start no earlier than 2015-04-07 |
| 221 |  | Migração para TI | 1d | 2015-05-13 | 2015-05-13 |  | 227d | start no earlier than 2015-05-13 |
| 222 |  | Migração para TRG | 1d | 2015-07-10 | 2015-07-10 |  | 185d | start no earlier than 2015-07-10 |
| 223 | 1.5.3.2.2.4 | **Sistema SAC** | 69d | 2015-04-07 | 2015-07-10 |  | 0d |  |
| 224 |  | Migração para TS | 1d | 2015-04-07 | 2015-04-07 | 220SS | 0d |  |
| 225 |  | Migração para TI | 1d | 2015-05-13 | 2015-05-13 | 221SS | 227d |  |
| 226 |  | Migração para TRG | 1d | 2015-07-10 | 2015-07-10 | 222SS | 185d |  |
| 227 | 1.5.3.2.2.5 | **Sistema ARBOR** | 73d | 2015-03-30 | 2015-07-08 |  | 187d |  |
| 228 |  | Migração para TS | 1d | 2015-03-30 | 2015-03-30 | 213FS+5d | 253d |  |
| 229 |  | Migração para TI | 1d | 2015-05-12 | 2015-05-12 | 214SS | 228d |  |
| 230 |  | Migração para TRG | 1d | 2015-07-08 | 2015-07-08 | 215SS | 187d |  |
| 231 | 1.5.3.2.3 | **Execução Testes de sistemas** | 265d | 2015-03-23 | 2016-03-25 |  | 0d |  |
| 232 | 1.5.3.2.3.1 | **Sistema Siebel 63** | 12d | 2015-03-23 | 2015-04-07 |  | 253d |  |
| 233 |  | Execução do teste | 11d | 2015-03-23 | 2015-04-06 | 213 | 253d |  |
| 234 |  | Envio do Termo de Aceite do TS | 1d | 2015-04-07 | 2015-04-07 | 233 | 253d |  |
| 235 | 1.5.3.2.3.2 | **Sistema STC** | 8d | 2015-04-08 | 2015-04-17 |  | 245d |  |
| 236 |  | Execução do teste | 7d | 2015-04-08 | 2015-04-16 | 220 | 245d |  |
| 237 |  | Envio do Termo de Aceite do TS | 1d | 2015-04-17 | 2015-04-17 | 236 | 245d |  |
| 238 | 1.5.3.2.3.3 | **Sistema SAC** | 253d | 2015-04-08 | 2016-03-25 |  | 0d |  |
| 239 |  | Execução do teste | 252d | 2015-04-08 | 2016-03-24 | 224 | 0d |  |
| 240 |  | Envio do Termo de Aceite do TS | 1d | 2016-03-25 | 2016-03-25 | 239 | 0d |  |
| 241 | 1.5.3.2.3.4 | **Sistema ARBOR** | 6d | 2015-03-31 | 2015-04-07 |  | 253d |  |
| 242 |  | Execução do teste | 5d | 2015-03-31 | 2015-04-06 | 228 | 253d |  |
| 243 |  | Envio do Termo de Aceite do TS | 1d | 2015-04-07 | 2015-04-07 | 242 | 253d |  |
| 244 | 1.5.3.3 | **IBM** | 37d | 2015-01-05 | 2015-02-24 |  | 283d |  |
| 245 |  | Construção SFA e Geneva | 22d | 2015-01-05 | 2015-02-03 | 149 | 283d |  |
| 246 |  | Teste de Sistema | 15d | 2015-02-04 | 2015-02-24 | 245 | 283d |  |
| 247 | 1.5.4 | **Treinamento** | 10d | 2015-06-02 | 2015-06-15 |  | 204d |  |
| 248 |  | Preparar Treinamento (Material e ambiente) | 5d | 2015-06-02 | 2015-06-08 | 188 | 204d |  |
| 249 |  | Realizar Treinamento | 5d | 2015-06-09 | 2015-06-15 | 248, 187 | 204d |  |
| 250 |  | Treinamento Finalizado | 0d | 2015-06-15 | 2015-06-15 | 249 | 204d |  |
| 251 | 1.5.5 | **Testes Integrados** | 51d | 2015-04-27 | 2015-07-06 |  | 152d |  |
| 252 | 1.5.5.1 | **ACCENTURE** | 34d | 2015-04-27 | 2015-06-11 |  | 152d |  |
| 253 |  | Criação Massa | 10d | 2015-04-27 | 2015-05-08 | 214FS-12d | 230d |  |
| 254 |  | Execução testes integrados Acc | 22d | 2015-05-13 | 2015-06-11 | 214 | 140d |  |
| 255 | 1.5.5.2 | **IBM** | 22d | 2015-05-13 | 2015-06-11 |  | 201d |  |
| 256 |  | Execução testes integrados IBM | 22d | 2015-05-13 | 2015-06-11 | 254SS | 201d |  |
| 257 | 1.5.5.3 | **WEDO** | 25d | 2015-06-02 | 2015-07-06 |  | 148d |  |
| 258 |  | Preparar Ambiente de Homologação para inicio dos TI (Migrar Funcionalidades) | 5d | 2015-06-02 | 2015-06-08 | 188 | 209d |  |
| 259 |  | Receber massa para Testes Integrados | 2d | 2015-06-12 | 2015-06-15 | 254 | 140d |  |
| 260 |  | Executar Testes Integrados | 10d | 2015-06-16 | 2015-06-29 | 259 | 140d | start no earlier than 2014-10-21 |
| 261 |  | Validar Evidencias Testes Integrados | 5d | 2015-06-30 | 2015-07-06 | 260 | 140d |  |
| 262 |  | Testes integrados Aprovados | 0d | 2015-07-06 | 2015-07-06 | 261 | 189d | start no earlier than 2014-08-25 |
| 263 |  | Testes Integrados Finalizados | 0d | 2015-07-06 | 2015-07-06 | 261 | 140d |  |
| 264 | 1.5.6 | **UAT** | 38d | 2015-06-12 | 2015-08-04 |  | 157d |  |
| 265 | 1.5.6.1 | **ACCENTURE** | 10d | 2015-06-12 | 2015-06-25 |  | 196d |  |
| 266 |  | Validar evidências UAT SBL / ARB / STC / SIS / Informatica | 10d | 2015-06-12 | 2015-06-25 | 254 | 196d |  |
| 267 | 1.5.6.2 | **IBM** | 5d | 2015-06-12 | 2015-06-18 |  | 201d |  |
| 268 |  | Validar evidências UAT SFA e Geneva | 5d | 2015-06-12 | 2015-06-18 | 256 | 201d |  |
| 269 | 1.5.6.3 | **WEDO** | 21d | 2015-07-07 | 2015-08-04 |  | 140d |  |
| 270 |  | Validar Evidencias Testes de UAT | 20d | 2015-07-07 | 2015-08-03 | 263 | 140d |  |
| 271 |  | Aprovar UAT | 1d | 2015-08-04 | 2015-08-04 | 270 | 140d |  |
| 272 |  | Testes de UAT Finalizados e Aprovados | 0d | 2015-08-04 | 2015-08-04 | 271 | 140d |  |
| 273 | 1.5.7 | **Testes de Performance** | 12d | 2015-07-07 | 2015-07-22 |  | 177d |  |
| 274 |  | Migrar Fluxos para ambiente de Produção | 5d | 2015-07-07 | 2015-07-13 | 263 | 177d |  |
| 275 |  | Realizar Testes de Performance | 5d | 2015-07-14 | 2015-07-20 | 274 | 177d |  |
| 276 |  | Gerar relatório de Performance | 1d | 2015-07-20 | 2015-07-20 | 275FF | 177d |  |
| 277 |  | Validar Evidencias Testes Performance | 2d | 2015-07-21 | 2015-07-22 | 276 | 177d |  |
| 278 |  | Aprovar Testes de Perfomance | 1d | 2015-07-22 | 2015-07-22 | 277FF | 177d |  |
| 279 |  | Testes de Performance Finalizado | 0d | 2015-07-22 | 2015-07-22 | 278 | 177d |  |
| 280 | 1.5.8 | **Preparação para Implantação** | 339d | 2014-05-19 | 2015-09-03 |  | 146d |  |

| ID | WBS | Task | Duration | Start | Finish | Predecessors | Total float | Constraint |
| --- | --- | --- | --- | --- | --- | --- | --- | --- |
| 281 | 1.5.8.1 | **WEDO** | 24d | 2015-07-07 | 2015-08-07 |  | 140d |  |
| 282 |  | Definir estratégia de Implantação e Preparar Plano de Implantação | 3d | 2015-07-07 | 2015-07-09 | 263 | 140d |  |
| 283 |  | Preparar Runbook e Manual da Operação RAID | 5d | 2015-07-10 | 2015-07-16 | 282 | 140d | start no earlier than 2014-10-24 |
| 284 |  | Validar e Aprovar Runbook | 3d | 2015-07-17 | 2015-07-21 | 283 | 140d | start no earlier than 2014-10-31 |
| 285 |  | Elaborar Runbook PI - Grupo 1 e 2 | 5d | 2015-07-10 | 2015-07-16 | 283SS | 140d |  |
| 286 |  | Validar Runbook - Grupo 1 e 2 | 3d | 2015-07-17 | 2015-07-21 | 285 | 140d |  |
| 287 |  | Criação de CRQ | 2d | 2015-07-22 | 2015-07-23 | 286 | 174d |  |
| 288 |  | Validação de CRQ | 2d | 2015-07-24 | 2015-07-27 | 287 | 174d |  |
| 289 |  | Preparar cadeias ControlM e scripts | 10d | 2015-07-22 | 2015-08-04 | 284, 286 | 140d | start no earlier than 2014-11-05 |
| 290 |  | Abertura GMUD STI 84710 | 2d | 2015-08-05 | 2015-08-06 | 289, 282, 272 | 140d |  |
| 291 |  | Pronta para implantação | 1d | 2015-08-07 | 2015-08-07 | 289, 282, 290 | 140d |  |
| 292 | 1.5.8.2 | **ACCENTURE** | 6d | 2014-05-19 | 2014-05-26 |  | 479d |  |
| 293 | 1.5.8.2.1 | **Sistema STC** | 6d | 2014-05-19 | 2014-05-26 |  | 479d |  |
| 294 |  | Plano de implantação | 1d | 2014-05-19 | 2014-05-19 |  | 479d |  |
| 295 |  | Validação Plano Implantação | 5d | 2014-05-20 | 2014-05-26 | 294 | 479d |  |
| 296 | 1.5.8.2.2 | **Sistema SAC** | 5d | 2014-05-19 | 2014-05-23 |  | 480d |  |
| 297 |  | Plano de implantação | 2d | 2014-05-19 | 2014-05-20 |  | 483d |  |
| 298 |  | Validação Plano Implantação | 5d | 2014-05-19 | 2014-05-23 |  | 480d |  |
| 299 | 1.5.8.3 | **IBM** | 87d | 2015-05-06 | 2015-09-03 |  | 146d |  |
| 300 |  | Entrega de Runbook/simproc | 1d | 2015-08-13 | 2015-08-13 |  | 156d | start no earlier than 2015-08-13 |
| 301 |  | Validação Runbook/simproc | 5d | 2015-08-14 | 2015-08-20 | 300 | 156d |  |
| 302 |  | Entrega RNC | 1d | 2015-05-06 | 2015-05-06 |  | 232d | start no earlier than 2015-05-06 |
| 303 |  | Abertura de CRQ | 1d | 2015-09-03 | 2015-09-03 |  | 146d | start no earlier than 2015-09-03 |
| 304 | 1.5.9 | **Colocar em Produção** | 279d | 2014-07-18 | 2015-08-12 |  | 162d |  |
| 305 | 1.5.9.1 | **WEDO** | 3d | 2015-08-10 | 2015-08-12 |  | 140d |  |
| 306 |  | Implantar RAID | 3d | 2015-08-10 | 2015-08-12 | 291 | 140d | start no earlier than 2015-01-05 |
| 307 | 1.5.9.2 | **ACCENTURE** | 267d | 2014-07-18 | 2015-07-27 |  | 174d |  |
| 308 | 1.5.9.2.1 | **Sistema Siebel 63** | 2d | 2015-07-24 | 2015-07-27 |  | 174d |  |
| 309 |  | Pré-Implantação | 1d | 2015-07-24 | 2015-07-24 |  | 174d | start no earlier than 2015-07-24 |
| 310 |  | Release | 2d | 2015-07-24 | 2015-07-27 | 309SS | 174d |  |
| 311 | 1.5.9.2.2 | **Sistema INFORMATICA** | 2d | 2015-07-24 | 2015-07-27 |  | 174d |  |
| 312 |  | Pré-Implantação | 1d | 2015-07-24 | 2015-07-24 | 309SS | 174d |  |
| 313 |  | Release | 2d | 2015-07-24 | 2015-07-27 | 312SS | 174d |  |
| 314 | 1.5.9.2.3 | **Sistema STC** | 2d | 2015-07-24 | 2015-07-27 |  | 174d |  |
| 315 |  | Pré-Implantação | 1d | 2015-07-24 | 2015-07-24 | 312SS | 174d |  |
| 316 |  | Release | 2d | 2015-07-24 | 2015-07-27 | 315SS | 174d |  |
| 317 | 1.5.9.2.4 | **Sistema SAC** | 2d | 2015-07-24 | 2015-07-27 |  | 174d |  |
| 318 |  | Pré-Implantação | 1d | 2015-07-24 | 2015-07-24 | 315SS | 174d |  |
| 319 |  | Release | 2d | 2015-07-24 | 2015-07-27 | 318SS | 174d |  |
| 320 | 1.5.9.2.5 | **Sistema ARBOR** | 2d | 2014-07-18 | 2014-07-21 |  | 439d |  |
| 321 |  | Pré-Implantação | 1d | 2014-07-18 | 2014-07-18 |  | 439d | start no earlier than 2014-07-18 |
| 322 |  | Release | 2d | 2014-07-18 | 2014-07-21 | 321SS | 439d |  |
| 323 |  | Demanda 84710 - Upgrade PI - Grupo 1 e 2 Implantada | 0d | 2015-08-12 | 2015-08-12 | 304 | 162d |  |
| 324 | 1.6 | **PÓS-PRODUÇÃO** | 22d | 2015-08-13 | 2015-09-11 |  | 140d |  |
| 325 | 1.6.1 | **Rollout** | 20d | 2015-08-13 | 2015-09-09 |  | 140d |  |
| 326 |  | Acompanhar Produção RAID (WEDO) | 20d | 2015-08-13 | 2015-09-09 | 306 | 140d |  |
| 327 | 1.6.2 | **Fecho do Projeto** | 2d | 2015-09-10 | 2015-09-11 |  | 140d |  |
| 328 |  | Gerar termo de Aceitação final do Projeto | 1d | 2015-09-10 | 2015-09-10 | 326 | 140d |  |
| 329 |  | Gerar Inquerito Satisfação do projeto | 1d | 2015-09-10 | 2015-09-10 | 328FF | 140d |  |
| 330 |  | Assinar Termo de Aceitação Final do Projeto | 1d | 2015-09-11 | 2015-09-11 | 329 | 140d |  |
| 331 |  | Preencher Inquerito de Satisfaçãp do projetos | 1d | 2015-09-10 | 2015-09-10 | 329FF | 141d |  |
| 332 |  | Projeto Finalizado | 0d | 2015-09-10 | 2015-09-10 | 331 | 141d |  |

## Version 2 (data date 2014-12-01, saved 2015-02-24, file 84710_consolidado_2402_v1.mpp)

Note of the change: up 201801031547

Last finish 2016-03-25 → 2015-09-24 (-183d).

Added:

| ID | Task | Duration | Start | Finish | Predecessors | Constraint |
| --- | --- | --- | --- | --- | --- | --- |
| 114 | **Aprovação financeira** | 5d | 2014-10-23 A | 2014-10-29 A | 102 |  |
| 118 | **Planejar Desenvolvimento** | 57d | 2014-10-30 A | 2015-01-27 |  |  |
| 184 | **Accenture** | 38d | 2015-02-19 | 2015-04-14 |  |  |
| 185 | **Siebel 6** | 20d | 2015-02-19 | 2015-03-18 |  |  |
| 186 | Elaborar Planilha de carga no Repositório Central | 3d | 2015-02-19 | 2015-02-23 |  | start no earlier than 2015-02-19 |
| 187 | Carga no Repositório Central | 3d | 2015-02-24 | 2015-02-26 | 186 | start no earlier than 2014-10-06 |
| 188 | Cadastro de cenários no ALM | 4d | 2015-02-27 | 2015-03-04 | 187 | start no earlier than 2014-10-06 |
| 189 | Validar Plano de TI | 5d | 2015-03-05 | 2015-03-11 | 188 |  |
| 190 | Validar Plano de UAT | 5d | 2015-03-12 | 2015-03-18 | 189 | start no earlier than 2014-10-27 |
| 191 | **Arbor** | 16d | 2015-02-19 | 2015-03-12 |  |  |
| 192 | Elaborar Planilha de carga no Repositório Central | 1d | 2015-02-19 | 2015-02-19 |  | start no earlier than 2015-02-19 |
| 193 | Carga no Repositório Central | 3d | 2015-02-20 | 2015-02-24 | 192 | start no earlier than 2014-10-06 |
| 194 | Cadastro de cenários no ALM | 2d | 2015-02-25 | 2015-02-26 | 193 | start no earlier than 2014-10-06 |
| 195 | Validar Plano de TI | 5d | 2015-02-27 | 2015-03-05 | 194 |  |
| 196 | Validar Plano de UAT | 5d | 2015-03-06 | 2015-03-12 | 195 | start no earlier than 2014-10-27 |
| 197 | **STC / SISRAF Cadastro** | 17d | 2015-03-20 | 2015-04-14 |  |  |
| 198 | Elaborar Planilha de carga no Repositório Central | 2d | 2015-03-20 | 2015-03-23 |  | start no earlier than 2015-03-20 |
| 199 | Carga no Repositório Central | 3d | 2015-03-24 | 2015-03-26 | 198 | start no earlier than 2014-10-06 |
| 200 | Cadastro de cenários no ALM | 2d | 2015-03-27 | 2015-03-30 | 199 | start no earlier than 2014-10-06 |
| 201 | Validar Plano de TI | 5d | 2015-03-31 | 2015-04-07 | 200 |  |
| 202 | Validar Plano de UAT | 5d | 2015-04-08 | 2015-04-14 | 201 | start no earlier than 2014-10-27 |
| 203 | **SAC** | 17d | 2015-03-20 | 2015-04-14 |  |  |
| 204 | Elaborar Planilha de carga no Repositório Central | 2d | 2015-03-20 | 2015-03-23 |  | start no earlier than 2015-03-20 |
| 205 | Carga no Repositório Central | 3d | 2015-03-24 | 2015-03-26 | 204 | start no earlier than 2014-10-06 |
| 206 | Cadastro de cenários no ALM | 2d | 2015-03-27 | 2015-03-30 | 205 | start no earlier than 2014-10-06 |
| 207 | Validar Plano de TI | 5d | 2015-03-31 | 2015-04-07 | 206 |  |
| 208 | Validar Plano de UAT | 5d | 2015-04-08 | 2015-04-14 | 207 | start no earlier than 2014-10-27 |
| 209 | **Informática** | 12d | 2015-02-24 | 2015-03-11 |  |  |
| 210 | Elaborar Planilha de carga no Repositório Central | 2d | 2015-02-24 | 2015-02-25 | 135 | start no earlier than 2015-02-19 |
| 211 | Carga no Repositório Central | 3d | 2015-02-26 | 2015-03-02 | 210 | start no earlier than 2014-10-06 |
| 212 | Cadastro de cenários no ALM | 2d | 2015-03-03 | 2015-03-04 | 211 | start no earlier than 2014-10-06 |
| 213 | Validar Plano de TI | 5d | 2015-03-05 | 2015-03-11 | 212 |  |
| 277 | **Treinamento RAID** | 10d | 2015-06-22 | 2015-07-03 |  |  |
| 283 | **STC** | 11d | 2015-05-14 | 2015-05-28 |  |  |
| 284 | Execução de TI | 6d | 2015-05-14 | 2015-05-21 | 251 |  |
| 285 | Validação das Evidências de TI | 5d | 2015-05-22 | 2015-05-28 | 284 |  |
| 286 | **SAC** | 7d | 2015-05-15 | 2015-05-25 |  |  |
| 287 | Execução de TI | 2d | 2015-05-15 | 2015-05-18 | 284SS+1d |  |
| 288 | Validação das Evidências de TI | 5d | 2015-05-19 | 2015-05-25 | 287 |  |
| 289 | **Siebel 6** | 40d | 2015-04-20 | 2015-06-18 |  |  |
| 290 | Execução de TI - (Massa - Fora da esteira) | 15d | 2015-04-20 | 2015-05-13 | 244FS-15d |  |
| 291 | Execução de TI | 14d | 2015-05-22 | 2015-06-11 | 284 |  |
| 292 | Validação das Evidências de TI | 5d | 2015-06-12 | 2015-06-18 | 291 | start no earlier than 2015-05-22 |
| 293 | **Arbor** | 34d | 2015-05-14 | 2015-07-01 |  |  |
| 294 | Execução de TI | 6d | 2015-05-14 | 2015-05-21 | 290 |  |
| 295 | Validação das Evidências de TI | 5d | 2015-05-22 | 2015-05-28 | 294 |  |
| 296 | **Informática** | 16d | 2015-05-22 | 2015-06-15 |  |  |
| 297 | Execução 1 TI - Integração SBL 6.3 x Raid | 4d | 2015-05-29 | 2015-06-03 | 291SS+5d | start no earlier than 2015-05-29 |
| 298 | Execução 2 TI - Integração ARB x Raid | 3d | 2015-05-22 | 2015-05-26 | 294 |  |
| 299 | Execução 3 TI - Integração HLR x Raid | 1d | 2015-06-12 | 2015-06-12 | 291 |  |
| 300 | Validação das Evidências de TI | 5d | 2015-06-09 | 2015-06-15 | 299FS-4d |  |
| 301 | Janela de testes integrados Acc concluída. Pronto para início testes RAID | 0d | 2015-06-15 | 2015-06-15 | 300 |  |
| 303 | Abertura de ARS Migração TI | 1d | 2015-05-11 | 2015-05-11 |  | must start on 2015-05-11 |
| 304 | Migração para Teste Integrado / UAT | 2d | 2015-05-12 | 2015-05-13 | 303 |  |
| 305 | **Geneva** | 27d | 2015-05-14 | 2015-06-22 |  |  |
| 306 | Execução de TI | 22d | 2015-05-14 | 2015-06-15 | 251 |  |
| 307 | Validação das Evidências de TI | 5d | 2015-06-16 | 2015-06-22 | 306 |  |
| 308 | **SFA - Faturamento** | 27d | 2015-05-14 | 2015-06-22 |  |  |
| 309 | Execução de TI | 22d | 2015-05-14 | 2015-06-15 | 306SS |  |
| 310 | Validação das Evidências de TI | 5d | 2015-06-16 | 2015-06-22 | 309 |  |
| 312 | Preparação estrutura diretorios RAID | 2d | 2015-06-18 | 2015-06-19 | 313SS-2d |  |
| 316 | Validação dos testes de carga (massa UAT Legados) | 5d | 2015-06-29 | 2015-07-03 | 315SS |  |
| 320 | **Teste Performance Arbor** | 13d | 2015-03-09 | 2015-03-25 |  |  |
| 321 | **Accenture** | 13d | 2015-03-09 | 2015-03-25 |  |  |
| 322 | **Arbor** | 13d | 2015-03-09 | 2015-03-25 |  |  |
| 323 | Execução TP | 13d | 2015-03-09 | 2015-03-25 |  | start no earlier than 2015-03-09 |
| 326 | Validação das Evidências do UAT - STC | 5d | 2015-05-29 | 2015-06-05 | 285 | start no earlier than 2015-05-22 |
| 327 | Validação das Evidências do UAT - SAC | 5d | 2015-05-26 | 2015-06-01 | 288 | start no earlier than 2015-05-19 |
| 328 | Validação das Evidências do UAT - Siebel | 5d | 2015-06-19 | 2015-06-25 | 292 | start no earlier than 2015-06-12 |
| 329 | Validação das Evidências do UAT - Arbor | 5d | 2015-05-29 | 2015-06-05 | 295 |  |
| 331 | Validar evidências UAT - SFA e Geneva | 5d | 2015-06-23 | 2015-06-29 | 307, 310 |  |
| 352 | Plano de shakeout | 5d | 2015-05-25 | 2015-05-29 | 351SS |  |
| 357 | Entrega de Runbook | 1d | 2015-06-15 | 2015-06-15 |  | start no earlier than 2015-06-15 |
| 358 | Validação Runbook | 5d | 2015-06-16 | 2015-06-22 | 357 |  |
| 359 | Entrega de Simproc | 1d | 2015-06-23 | 2015-06-23 | 358 |  |
| 360 | Validação Simproc | 5d | 2015-06-24 | 2015-06-30 | 359 |  |
| 382 | **IBM** | 1d | 2015-07-14 | 2015-07-14 |  |  |
| 383 | Implantar SFA | 1d | 2015-07-14 | 2015-07-14 |  | start no earlier than 2015-07-14 |
| 384 | Implantar Geneva | 1d | 2015-07-14 | 2015-07-14 | 383SS |  |
| 389 | **Testes de Performance RAID** | 12d | 2015-08-25 | 2015-09-10 |  |  |
| 400 | Preencher Inquerito de Satisfação do projetos | 1d | 2015-09-23 | 2015-09-23 | 398FF |  |

Removed: 115 Aprovação Financeira; 118 Planejar desenvolvimento; 247 Treinamento; 253 Criação Massa; 254 Execução testes integrados Acc; 256 Execução testes integrados IBM; 266 Validar evidências UAT SBL / ARB / STC / SIS / Informatica; 268 Validar evidências UAT SFA e Geneva; 273 Testes de Performance; 300 Entrega de Runbook/simproc; 301 Validação Runbook/simproc; 331 Preencher Inquerito de Satisfaçãp do projetos

Changed:

| ID | Task | Finish | Duration | Complete | Other |
| --- | --- | --- | --- | --- | --- |
| 1 | **84710 - Controles de Integridade Grupos 1 e 2** | 2016-03-25 → 2015-09-24 (-183d) | 485d → 336d | 32% → 35% | baseline finish 2014-09-25 → 2015-10-30 |
| 2 | **Visão e DSOL** |  | 90d → 86d |  | baseline start none → 2014-05-19; baseline finish none → 2014-09-19 |
| 3 | Ajustar STI |  |  |  | constraint none → finish no earlier than 2014-05-26 |
| 5 | 1ª Plenária - CRM x HLR - Tráfego - STI 84710 |  |  |  | constraint start no earlier than 2014-05-26 → finish no earlier than 2014-05-26 |
| 6 | 1ª Plenária - CRM x Faturamento Móvel - STI 84710 |  |  |  | constraint none → finish no earlier than 2014-05-27 |
| 7 | 1ª Plenária - CRM x Faturamento Fixa R2 - STI 84710 |  |  |  | constraint none → finish no earlier than 2014-05-28 |
| 8 | 1ª Plenária - CRM x Rede Fixa R1 - STI 84710 |  |  |  | constraint none → finish no earlier than 2014-05-29 |
| 9 | 1ª Plenária - STC x SISRAF - STI 84710 |  |  |  | constraint none → finish no earlier than 2014-05-29 |
| 11 | 2ª Plenária - Revisão do documento STI 84710 |  |  |  | constraint start no earlier than 2014-06-05 → finish no earlier than 2014-06-05 |
| 13 | 3ª Plenária - Revisão do documento STI 84710 |  |  |  | constraint start no earlier than 2014-06-05 → finish no earlier than 2014-06-05 |
| 14 | **Quarta plenária** |  | 2.5d → 3d |  |  |
| 15 | STI 84710 - DSOL - SAC x SFA - 4ª Plenária |  |  |  | constraint start no earlier than 2014-07-23 → finish no earlier than 2014-07-23 |
| 16 | STI 84710 - DSOL - STC e SISRAF - 4ª Plenária |  | 0.5d → 1d |  | constraint start no earlier than 2014-07-25 → finish no earlier than 2014-07-25 |
| 17 | STI 84710 - DSOL - SIEBEL, INFORMÁTICA - 4ª Plenária |  | 0.5d → 1d |  | constraint start no earlier than 2014-07-25 → finish no earlier than 2014-07-25 |
| 19 | STI 84710 - DSOL - 5ª Plenária |  |  |  | constraint start no earlier than 2014-07-29 → finish no earlier than 2014-07-31; baseline start 2014-07-30 → 2014-07-29; baseline finish 2014-07-30 → 2014-07-31 |
| 21 | Reunião - 6a. Plenaria |  |  |  | constraint start no earlier than 2014-08-06 → finish no earlier than 2014-08-06 |
| 22 | **1a Revisão de escopo - acerto de interfaces** | 2014-06-17 → 2014-06-20 A (+3d) | 3d → 4d |  | baseline finish 2014-06-17 → 2014-06-19 |
| 23 | Documento atualizado no STI |  | 1d? → 1d |  | constraint none → finish no earlier than 2014-06-13 |
| 24 | Aprovação Gerente imediato |  | 1d? → 1d |  | constraint none → finish no earlier than 2014-06-13 |
| 25 | **Aprovaçao de áreas impactadas** | 2014-06-19 A → 2014-06-20 A (+1d) | 5d → 4d |  |  |
| 26 | Controladoria | 2014-06-17 A → 2014-06-18 A (+1d) |  |  | constraint none → finish no earlier than 2014-06-17 |
| 27 | projetos de faturamento | 2014-06-17 A → 2014-06-18 A (+1d) |  |  | constraint none → finish no earlier than 2014-06-17 |
| 28 | planejamento core rede movel | 2014-06-19 A → 2014-06-20 A (+1d) | 5d → 4d |  | constraint none → finish no earlier than 2014-06-19 |
| 29 | RA e prevenção a fraudes | 2014-06-17 A → 2014-06-18 A (+1d) |  |  | constraint none → finish no earlier than 2014-06-17 |
| 30 | segurança da informação | 2014-06-17 A → 2014-06-18 A (+1d) |  |  | constraint none → finish no earlier than 2014-06-17 |
| 31 | Tributos diretos | 2014-06-17 A → 2014-06-18 A (+1d) |  |  | constraint none → finish no earlier than 2014-06-17 |
| 32 | **2a Revisão de escopo - retirada PTS** | 2014-06-24 A → 2014-06-26 A (+2d) | 5d → 4.12d |  |  |
| 33 | Aprovação Gerente imediato |  |  |  | constraint none → finish no earlier than 2014-06-18 |
| 34 | Documento atualizado no STI |  | 2d → 1d |  | constraint none → finish no earlier than 2014-06-20 |
| 35 | **Aprovação de áreas impactadas** | 2014-06-24 A → 2014-06-26 A (+2d) |  |  |  |
| 36 | controladoria | 2014-06-24 A → 2014-06-26 A (+2d) |  |  | constraint none → finish no earlier than 2014-06-24 |
| 37 | projetos de faturamento | 2014-06-23 A → 2014-06-24 A (+1d) | 0d → 1d |  | constraint none → finish no earlier than 2014-06-23 |
| 38 | planejamento core rede movel | 2014-06-24 A → 2014-06-26 A (+2d) |  |  | constraint none → finish no earlier than 2014-06-24 |
| 39 | RA e prevenção a fraudes | 2014-06-24 A → 2014-06-26 A (+2d) |  |  | constraint none → finish no earlier than 2014-06-24 |
| 40 | Segurança da informação | 2014-06-23 A → 2014-06-24 A (+1d) | 0d → 1d |  | constraint none → finish no earlier than 2014-06-23 |
| 41 | Tributos diretos | 2014-06-23 A → 2014-06-24 A (+1d) | 0d → 1d |  | constraint none → finish no earlier than 2014-06-23 |
| 42 | STI enviado para o CSOL |  | 0d → 1d |  | constraint none → finish no earlier than 2014-06-24 |
| 43 | Atualização de Visão Gráfica | 2014-06-26 A → 2014-06-27 A (+1d) |  |  | constraint none → finish no earlier than 2014-06-26 |
| 44 | Atualização de ME Consolidada STI |  |  |  | constraint none → finish no earlier than 2014-06-26 |
| 45 | **Revalidação de GO para as fábricas** |  | 0d → 1d |  |  |
| 46 | Confirmação de Custo/Prazo ACC SBL |  | 0d → 1d |  | constraint none → finish no earlier than 2014-06-27 |
| 47 | Confirmação de Custo/Prazo ACC ARBOR |  | 0d → 1d |  | constraint none → finish no earlier than 2014-06-27 |
| 48 | Confirmação de Custo/Prazo ACC STC |  | 0d → 1d |  | constraint none → finish no earlier than 2014-06-27 |
| 49 | Confirmação de Custo/Prazo ACC SAC |  | 0d → 1d |  | constraint none → finish no earlier than 2014-06-27 |
| 50 | Confirmação de Custo/Prazo ACC INF |  | 0d → 1d |  | constraint none → finish no earlier than 2014-06-27 |
| 51 | Confirmação de Custo/Prazo IBM SISRAF |  | 0d → 1d |  | constraint none → finish no earlier than 2014-06-27 |
| 52 | Confirmação de Custo/Prazo IBM SFA |  | 0d → 1d |  | constraint none → finish no earlier than 2014-06-27 |
| 53 | Confirmação de Custo/Prazo IBM GENEVA |  | 0d → 1d |  | constraint none → finish no earlier than 2014-06-27 |
| 54 | Confirmação de Custo/Prazo WEDO RAID PI |  | 0d → 1d |  | constraint none → finish no earlier than 2014-06-27 |
| 55 | Revisão de plano do DSOL |  |  |  | constraint none → finish no earlier than 2014-06-27 |
| 56 | **Elaboração Visão de Solução Final SISTEMAS IMPACTADOS** | 2014-07-18 A → 2014-07-21 A (+3d) |  |  |  |
| 57 | DS - Elaborar Visão da solução Final Siebel 6.3 | 2014-07-14 A → 2014-07-15 A (+1d) |  |  | constraint start no earlier than 2014-07-01 → finish no earlier than 2014-07-14 |
| 58 | DS - Elaborar Visão da solução Final ARBOR | 2014-07-14 A → 2014-07-15 A (+1d) |  |  | constraint start no earlier than 2014-07-01 → finish no earlier than 2014-07-14 |
| 59 | DS - Elaborar Visão da solução Final STC/SISRAF | 2014-07-14 A → 2014-07-15 A (+1d) |  |  | constraint start no earlier than 2014-07-01 → finish no earlier than 2014-07-14 |
| 60 | DS - Elaborar Visão da solução Final SAC | 2014-07-14 A → 2014-07-15 A (+1d) |  |  | constraint start no earlier than 2014-07-01 → finish no earlier than 2014-07-14 |
| 61 | DS - Elaborar Visão da solução Final INF | 2014-07-18 A → 2014-07-21 A (+3d) |  |  | constraint start no earlier than 2014-06-27 → finish no earlier than 2014-07-18 |
| 62 | DS - Elaborar Visão da solução Fina SFA | 2014-07-14 A → 2014-07-15 A (+1d) |  |  | constraint start no earlier than 2014-07-01 → finish no earlier than 2014-07-14 |
| 63 | DS - Elaborar Visão da solução Final GENEVA | 2014-07-14 A → 2014-07-15 A (+1d) |  |  | constraint start no earlier than 2014-07-01 → finish no earlier than 2014-07-14 |
| 64 | DS - Elaborar Visão da solução Final HLR | 2014-07-14 A → 2014-07-15 A (+1d) |  |  | constraint start no earlier than 2014-07-01 → finish no earlier than 2014-07-14 |
| 65 | DS - Elaborar Visão da solução Final RAID IP | 2014-07-11 A → 2014-07-14 A (+3d) |  |  | constraint start no earlier than 2014-06-23 → finish no earlier than 2014-07-11 |
| 67 | DS – Aprovar Visão da Solução Final – Siebel 6.3 |  |  |  | constraint none → finish no earlier than 2014-07-25 |
| 68 | DS – Aprovar Visão da Solução Final – Arbor |  |  |  | constraint none → finish no earlier than 2014-07-25 |
| 69 | DS – Aprovar Visão da Solução Final – STC |  |  |  | constraint none → finish no earlier than 2014-07-21 |
| 70 | DS – Aprovar Visão da Solução Final – SAC |  |  |  | constraint none → finish no earlier than 2014-07-21 |
| 71 | DS – Aprovar Visão da Solução Final – Informatica |  |  |  | constraint none → finish no earlier than 2014-07-23 |
| 72 | DS – Aprovar Visão da Solução Final – SFA |  |  |  | constraint none → finish no earlier than 2014-07-21 |
| 73 | DS – Aprovar Visão da Solução Final – GENEVA |  |  |  | constraint none → finish no earlier than 2014-07-21 |
| 74 | DS – Aprovar Visão da Solução Final – HLR |  |  |  | constraint none → finish no earlier than 2014-07-21 |
| 75 | DS – Aprovar Visão da Solução Final – RAID IP |  |  |  | constraint none → finish no earlier than 2014-07-18 |
| 76 | DS – Consolidar Visão da Solução Final – Todos os sistemas |  |  |  | constraint none → finish no earlier than 2014-07-29 |

| ID | Task | Start | Finish | Duration | Complete | Total float | Predecessors | Other |
| --- | --- | --- | --- | --- | --- | --- | --- | --- |
| 77 | DS – Aprovar Visão da Solução Final Consolidada |  |  | 0d → 1d |  |  |  | constraint none → finish no earlier than 2014-07-29 |
| 78 | **Elaboração Artefatos do Desenho de Solução SISTEMAS IMPACTADOS** |  |  |  |  |  |  | baseline finish 2014-08-18 → 2014-08-26 |
| 79 | DS – Elabora artefatos do Desenho da Solução – Siebel 6.3 |  |  |  |  |  |  | constraint none → finish no earlier than 2014-08-18; baseline finish 2014-08-06 → 2014-08-18 |
| 80 | DS – Elabora artefatos do Desenho da Solução – Arbor |  |  |  |  |  |  | constraint none → finish no earlier than 2014-08-26; baseline finish 2014-08-06 → 2014-08-26 |
| 81 | DS – Elabora artefatos do Desenho da Solução – STC |  |  |  |  |  |  | constraint none → finish no earlier than 2014-08-04 |
| 82 | DS – Elabora artefatos do Desenho da Solução – SAC |  |  |  |  |  |  | constraint none → finish no earlier than 2014-08-15; baseline finish 2014-08-06 → 2014-08-15 |
| 83 | DS – Elabora artefatos do Desenho da Solução – Informatica |  |  |  |  |  |  | constraint none → finish no earlier than 2014-08-21; baseline finish 2014-08-08 → 2014-08-21 |
| 84 | DS – Elabora artefatos do Desenho da Solução – SFA |  |  |  |  |  |  | constraint none → finish no earlier than 2014-08-04 |
| 85 | DS – Elabora artefatos do Desenho da Solução – GENEVA |  |  |  |  |  |  | constraint finish no earlier than 2014-07-25 → finish no earlier than 2014-08-04 |
| 86 | DS – Elabora artefatos do Desenho da Solução – HLR |  |  |  |  |  |  | constraint none → finish no earlier than 2014-08-11; baseline finish 2014-08-04 → 2014-08-11 |
| 87 | DS – Elabora artefatos do Desenho da Solução – RAID IP |  |  |  |  |  |  | constraint none → finish no earlier than 2014-08-22; baseline finish 2014-08-04 → 2014-08-22 |
| 88 | DS - Elaborar artefatos do Desenho da solução - SIS Móvel |  |  |  |  |  |  | constraint none → finish no earlier than 2014-08-21; baseline finish 2014-08-18 → 2014-08-21 |
| 89 | **Aprovação de Artefatos de Desenho de Solução** |  |  |  |  |  |  | baseline finish 2014-08-15 → 2014-09-16 |
| 90 | DS – Aprovar artefatos do Desenho da Solução – Siebel 6.3 |  |  |  |  |  |  | constraint none → finish no earlier than 2014-08-21; baseline finish 2014-08-13 → 2014-08-21 |
| 91 | DS – Aprovar artefatos do Desenho da Solução – Arbor |  |  |  |  |  |  | constraint none → finish no earlier than 2014-08-28; baseline start 2014-08-07 → 2014-08-13; baseline finish 2014-08-13 → 2014-08-28 |
| 92 | DS – Aprovar artefatos do Desenho da Solução – STC |  |  |  |  |  |  | constraint none → finish no earlier than 2014-08-11 |
| 93 | DS – Aprovar artefatos do Desenho da Solução – SAC |  |  |  |  |  |  | constraint none → finish no earlier than 2014-08-22; baseline start 2014-08-07 → 2014-08-18; baseline finish 2014-08-13 → 2014-08-22 |
| 94 | DS – Aprovar artefatos do Desenho da Solução – Informatica |  |  |  |  |  |  | constraint none → finish no earlier than 2014-08-25; baseline start 2014-08-11 → 2014-08-22; baseline finish 2014-08-15 → 2014-08-25 |
| 95 | DS – Aprovar artefatos do Desenho da Solução – SFA |  |  |  |  |  |  | constraint none → finish no earlier than 2014-08-11 |
| 96 | DS – Aprovar artefatos do Desenho da Solução – GENEVA |  |  |  |  |  |  | constraint none → finish no earlier than 2014-09-08; baseline start 2014-08-05 → 2014-08-13; baseline finish 2014-08-11 → 2014-09-08 |
| 97 | DS – Aprovar artefatos do Desenho da Solução – HLR |  |  |  |  |  |  | constraint none → finish no earlier than 2014-08-18; baseline start 2014-08-05 → 2014-08-12; baseline finish 2014-08-11 → 2014-08-18 |
| 98 | DS – Aprovar artefatos do Desenho da Solução – RAID IP |  |  |  |  |  |  | constraint none → finish no earlier than 2014-09-16; baseline start 2014-08-05 → 2014-08-25; baseline finish 2014-08-11 → 2014-09-16 |
| 99 | DS - Aprovar artefatos do Desneho da Solução - SIS Móvel |  |  |  |  |  |  | constraint none → finish no earlier than 2014-08-22; baseline start none → 2014-08-22; baseline finish none → 2014-08-22 |
| 100 | DS – Consolidar Desenho da Solução Final – Todos os sistemas + HLR |  |  |  |  |  |  | constraint none → finish no earlier than 2014-09-18; baseline start 2014-08-18 → 2014-09-17; baseline finish 2014-08-20 → 2014-09-18 |
| 101 | DS – Aprovar Desenho da Solução Final Consolidada |  |  |  |  |  |  | constraint none → finish no earlier than 2014-09-19; baseline start 2014-08-21 → 2014-09-19; baseline finish 2014-08-27 → 2014-09-19 |
| 102 | **Fechar Custo** |  |  |  |  |  |  | baseline finish 2014-10-08 → 2014-10-29 |
| 103 | Receber proposta Desenvolvimento |  |  | 4d → 10d |  |  |  | constraint none → finish no earlier than 2014-09-25; baseline start 2014-09-05 → 2014-09-12; baseline finish 2014-09-11 → 2014-09-17 |
| 104 | Validar propostas Desenvolvimento |  |  |  |  |  |  | constraint none → finish no earlier than 2014-10-10; baseline start 2014-09-12 → 2014-09-26; baseline finish 2014-09-18 → 2014-10-10 |
| 105 | **RAID** |  |  |  |  |  |  | baseline finish 2014-10-08 → 2014-10-02 |
| 106 | Validação Métricas |  |  |  |  |  |  | constraint none → finish no earlier than 2014-09-29 |
| 107 | Validação Métricas e WEDO |  |  |  |  |  |  | constraint none → finish no earlier than 2014-10-01 |
| 108 | Receber proposta RAID ajustada |  |  | 0d → 1d |  |  |  | constraint none → finish no earlier than 2014-10-02; baseline start 2014-10-06 → 2014-10-02; baseline finish 2014-10-08 → 2014-10-02 |
| 109 | Validar proposta RAId ajustada |  |  | 0d → 1d |  |  |  | constraint none → finish no earlier than 2014-10-02; baseline start 2014-10-09 → 2014-10-02; baseline finish 2014-10-10 → 2014-10-02 |
| 110 | **Testes** |  |  |  |  |  |  | baseline finish 2014-10-07 → 2014-10-29 |
| 111 | Elaborar estratégia de testes |  |  |  |  |  |  | constraint none → finish no earlier than 2014-09-30; baseline finish 2014-09-24 → 2014-09-30 |
| 112 | Validar estratégia de testes |  |  |  |  |  |  | constraint none → finish no earlier than 2014-10-02; baseline start 2014-09-25 → 2014-10-01; baseline finish 2014-09-30 → 2014-10-02 |
| 113 | Receber/validar propostas de testes |  |  |  |  |  |  | constraint none → finish no earlier than 2014-10-29; baseline start 2014-10-01 → 2014-10-03; baseline finish 2014-10-07 → 2014-10-29 |
| 115 | Custo desenvolvimento fechado |  |  | 0d → 1d |  |  |  | constraint none → finish no earlier than 2014-10-29; baseline start 2014-10-10 → 2014-10-29; baseline finish 2014-10-10 → 2014-10-29 |
| 116 | Aprovação Custo final |  |  |  |  |  |  | constraint none → finish no earlier than 2014-10-29; baseline start 2014-09-19 → 2014-10-23; baseline finish 2014-09-25 → 2014-10-29 |
| 117 | Go para fornecedores |  |  | 0d → 1d |  |  |  | constraint none → finish no earlier than 2014-10-29; baseline start none → 2014-10-29; baseline finish none → 2014-10-29 |
| 119 | Receber cronogramas Desenvolvimento |  |  |  |  |  |  | constraint none → finish no earlier than 2014-11-14; baseline start none → 2014-10-30; baseline finish none → 2014-11-14 |
| 120 | Validar e Consolidar Cronogramas | 2014-11-17 A | 2014-12-05 → 2015-01-27 (+53d) | 15d → 45d | 0% → 50% | 340d → 0d |  | constraint none → finish no earlier than 2014-11-21; baseline start none → 2014-11-17; baseline finish none → 2014-12-08 |
| 121 | **DESENVOLVIMENTO** | 2014-05-19 → 2014-07-08 A (+50d) | 2016-03-25 → 2015-08-24 (-214d) | 485d → 282d | 0% → 1% |  |  |  |
| 122 | **Desenho Técnico** |  | 2015-04-06 → 2015-03-20 (-17d) | 96d → 78d |  | -40d → 0d |  |  |
| 123 | **WEDO** |  | 2015-01-23 → 2015-02-02 (+10d) |  |  | -45d → 0d |  |  |
| 124 | Elaborar Desenho Técnico |  | 2015-01-15 → 2015-01-23 (+8d) |  |  | -45d → 0d |  |  |
| 125 | Elaborar Modelo da Dados | 2015-01-09 → 2015-01-15 (+6d) | 2015-01-15 → 2015-01-23 (+8d) |  |  | 311d → 0d |  |  |
| 126 | Validar Desenho Técnico | 2015-01-16 → 2015-01-26 (+10d) | 2015-01-22 → 2015-01-30 (+8d) |  |  | -45d → 0d |  |  |
| 127 | Aprovar Desenho Técnico | 2015-01-23 → 2015-02-02 (+10d) | 2015-01-23 → 2015-02-02 (+10d) |  |  | -45d → 0d |  |  |
| 128 | Desenho Técnico Finalizado | 2015-01-23 → 2015-02-02 (+10d) | 2015-01-23 → 2015-02-02 (+10d) |  |  | -45d → 0d |  |  |
| 129 | **ACCENTURE** |  | 2015-04-06 → 2015-03-20 (-17d) | 96d → 78d |  |  | 128 → none |  |
| 130 | **Sistema Siebel 63** |  | 2015-01-30 → 2015-02-02 (+3d) | 20d → 19d |  |  |  |  |
| 131 | Elaboração de Especificação Técnica |  | 2015-01-23 → 2015-01-26 (+3d) | 15d → 14d |  | none → 0d |  |  |
| 132 | Validação da Especificação Técnica - Oi (opcional) | 2015-01-26 → 2015-01-27 (+1d) | 2015-01-30 → 2015-02-02 (+3d) |  |  | 261d → 33d |  |  |
| 133 | **Sistema INFORMATICA** |  | 2015-02-20 → 2015-02-23 (+3d) |  |  | 246d → 0d |  |  |
| 134 | Elaboração de Especificação Técnica |  |  |  |  | 246d → 0d |  | constraint none → start no earlier than 2015-01-26 |
| 135 | Validação da Especificação Técnica - Oi (opcional) |  | 2015-02-20 → 2015-02-23 (+3d) |  |  | 246d → 0d |  |  |
| 136 | **Sistema SISMOVEL** |  | 2015-01-30 → 2014-12-29 (-32d) | 50d → 24d |  |  |  |  |
| 138 | Validação da Especificação Técnica - Oi (opcional) | 2015-01-26 → 2014-12-19 (-38d) | 2015-01-30 → 2014-12-29 (-32d) |  |  | 261d → 54d |  |  |
| 139 | **Sistema STC** | 2015-03-23 → 2015-03-06 (-17d) | 2015-04-06 → 2015-03-20 (-17d) |  |  | 215d → 0d |  |  |
| 140 | Elaboração de Especificação Técnica | 2015-03-23 → 2015-03-06 (-17d) | 2015-03-30 → 2015-03-13 (-17d) |  |  | 215d → 0d | 143SS → none | constraint none → start no earlier than 2015-03-06 |
| 141 | Validação da Especificação Técnica - Oi (opcional) | 2015-03-31 → 2015-03-16 (-15d) | 2015-04-06 → 2015-03-20 (-17d) |  |  | 215d → 0d |  |  |
| 142 | **Sistema SAC** | 2015-03-23 → 2015-03-09 (-14d) | 2015-04-03 → 2015-03-20 (-14d) |  |  |  |  |  |
| 143 | Elaboração de Especificação Técnica | 2015-03-23 → 2015-03-09 (-14d) | 2015-03-27 → 2015-03-13 (-14d) |  |  |  | none → 140SS+1d | constraint must start on 2015-03-23 → none |
| 144 | Validação da Especificação Técnica - Oi (opcional) | 2015-03-30 → 2015-03-16 (-14d) | 2015-04-03 → 2015-03-20 (-14d) |  |  | 216d → 0d |  |  |
| 145 | **Sistema ARBOR** |  | 2015-02-09 → 2015-02-10 (+1d) |  |  |  |  |  |
| 146 | Elaboração de Especificação Técnica |  | 2015-02-02 → 2015-02-03 (+1d) |  |  | -4d → 0d |  |  |
| 147 | Validação da Especificação Técnica - Oi (opcional) | 2015-02-03 → 2015-02-04 (+1d) | 2015-02-09 → 2015-02-10 (+1d) |  |  | 255d → 27d |  |  |
| 148 | **IBM** |  | 2015-01-09 → 2015-01-15 (+6d) |  |  |  |  |  |
| 149 | Elaborar Desenho Técnico SFA e Geneva |  | 2015-01-02 → 2015-01-08 (+6d) |  |  |  |  |  |

| ID | Task | Start | Finish | Duration | Complete | Total float | Predecessors | Other |
| --- | --- | --- | --- | --- | --- | --- | --- | --- |
| 150 | Validar Desenho Técnico (opcional) | 2015-01-05 → 2015-01-09 (+4d) | 2015-01-09 → 2015-01-15 (+6d) |  |  | 315d → 0d |  |  |
| 151 | **Planejamento de Testes** | 2015-02-02 A | 2015-05-29 → 2015-05-20 (-9d) | 85d → 73d | 0% → 4% | 215d → 0d |  |  |
| 152 | **Testes de Sistema** |  | 2015-04-29 → 2015-04-15 (-14d) | 63d → 51d |  | 237d → 0d |  |  |
| 153 | **WEDO** | 2015-04-07 → 2015-03-23 (-15d) | 2015-04-29 → 2015-04-15 (-14d) |  |  | 215d → 0d |  |  |
| 154 | Elaborar Plano/Cenários de Testes Sistema | 2015-04-07 → 2015-03-23 (-15d) | 2015-04-22 → 2015-04-08 (-14d) |  |  | 215d → 0d |  |  |
| 155 | Validar Plano/Cenários de Testes de sistema | 2015-04-23 → 2015-04-09 (-14d) | 2015-04-28 → 2015-04-14 (-14d) |  |  | 215d → 0d |  |  |
| 156 | Aprovar Plano/Cenários de Testes de Sistema | 2015-04-29 → 2015-04-15 (-14d) | 2015-04-29 → 2015-04-15 (-14d) |  |  | 215d → 0d |  |  |
| 157 | Plano de Testes Finalizado | 2015-04-29 → 2015-04-15 (-14d) | 2015-04-29 → 2015-04-15 (-14d) |  |  | 215d → 0d |  |  |
| 158 | **ACCENTURE** |  |  | 51d → 49d |  | 249d → 0d |  |  |
| 167 | **Testes Integrados e UAT** | 2015-02-02 A | 2015-05-29 → 2015-05-20 (-9d) | 85d → 73d | 0% → 6% | 215d → 0d |  |  |
| 168 | **WEDO** | 2015-04-30 → 2015-04-16 (-14d) | 2015-05-29 → 2015-05-20 (-9d) |  |  | 215d → 0d |  |  |
| 169 | Elaborar e Cadastrar (Quality Center) Plano/Cenários de Testes Integrados e UAT | 2015-04-30 → 2015-04-16 (-14d) | 2015-05-14 → 2015-05-05 (-9d) |  |  | 215d → 0d |  |  |
| 170 | Validar Plano/Cenários de Testes Integrados e UAT | 2015-05-15 → 2015-05-06 (-9d) | 2015-05-21 → 2015-05-12 (-9d) |  |  | 215d → 0d |  |  |
| 171 | Validar Plano/Cenários de Testes Integrados e UAT | 2015-05-22 → 2015-05-13 (-9d) | 2015-05-28 → 2015-05-19 (-9d) |  |  | 215d → 0d |  |  |
| 172 | Aprovar Plano/Cenários de Testes de Sistema | 2015-05-29 → 2015-05-20 (-9d) | 2015-05-29 → 2015-05-20 (-9d) |  |  | 215d → 0d |  |  |
| 173 | Plano de Testes Finalizado | 2015-05-29 → 2015-05-20 (-9d) | 2015-05-29 → 2015-05-20 (-9d) |  |  | 215d → 0d |  |  |
| 174 | **IBM** | 2015-02-02 A |  | 41d → 40d | 0% → 21% | 259d → 0d |  |  |
| 175 | Elaborar e Cadastrar (Quality Center) Plano/Cenários de Testes Integrados e UAT | 2015-02-02 A |  |  | 0% → 80% | 262d → 2d |  |  |
| 176 | Validar Plano/Cenários de Testes Integrados e UAT |  |  |  |  | 259d → 0d |  | constraint none → start no earlier than 2015-02-19; resources oi → none |
| 177 | Validar Plano/Cenários de Testes Integrados e UAT |  |  |  |  | 259d → 0d |  | constraint none → start no earlier than 2015-02-24; resources oi → none |
| 178 | Aprovar Plano/Cenário de testes Integrados e UAT |  |  |  |  | 259d → 0d |  | constraint none → start no earlier than 2015-03-03; resources oi → none |
| 179 | Reuniões de Interdependências |  |  |  |  | 259d → 0d |  | constraint none → start no earlier than 2015-03-04 |
| 180 | Atualizar Cronograma de TI/UAT com interdependências |  |  |  |  | 259d → 0d |  | constraint none → start no earlier than 2015-03-11 |
| 181 | Consolidar Cronograma de TI/UAT |  |  |  |  | 259d → 0d |  | constraint none → start no earlier than 2015-03-13; resources oi → none |
| 182 | Aprovar Cronograma TI/UAT |  |  |  |  | 259d → 0d |  | constraint none → start no earlier than 2015-03-17; resources oi → none |
| 183 | Atualizar datas no ALM11 |  |  |  |  | 259d → 0d |  | constraint none → start no earlier than 2015-03-24 |
| 214 | **Construção/Configuração e Testes de Sistema** | 2014-05-19 → 2014-07-08 (+50d) | 2016-03-25 → 2015-07-10 (-259d) | 485d → 251d |  |  |  |  |
| 215 | **WEDO** | 2015-01-26 → 2015-02-03 (+8d) | 2015-06-01 → 2015-06-19 (+18d) | 91d → 93d |  | 204d → 0d |  |  |
| 216 | Realizar Construção e TU | 2015-01-26 → 2015-02-03 (+8d) | 2015-04-24 → 2015-05-15 (+21d) | 65d → 69d |  | 204d → 0d |  |  |
| 217 | Realizar Testes de sistema | 2015-04-20 → 2015-05-11 (+21d) | 2015-06-01 → 2015-06-19 (+18d) | 31d → 29d |  | 204d → 0d |  |  |
| 218 | Construção e Teste de sistema WEDO Finalizada | 2015-06-01 → 2015-06-19 (+18d) | 2015-06-01 → 2015-06-19 (+18d) |  |  | 204d → 0d |  |  |
| 219 | **ACCENTURE** | 2014-05-19 → 2014-07-08 (+50d) | 2016-03-25 → 2015-07-10 (-259d) | 485d → 251d |  |  |  |  |
| 220 | **Construção** | 2014-05-19 → 2015-01-27 (+253d) | 2015-04-16 → 2015-05-20 (+34d) | 239d → 77d |  | 246d → 0d |  |  |
| 221 | **Sistema Siebel 63** | 2015-01-26 → 2015-01-27 (+1d) | 2015-03-06 → 2015-05-20 (+75d) | 30d → 77d |  | 275d → 0d |  |  |
| 222 | Construção e teste unitário | 2015-01-26 → 2015-01-27 (+1d) | 2015-02-20 → 2015-02-24 (+4d) |  |  | 275d → 0d |  |  |
| 223 | Merge | 2015-02-23 → 2015-02-25 (+2d) | 2015-02-23 → 2015-02-25 (+2d) |  |  | 279d → 0d |  |  |
| 224 | Elaborar Runbook / Simproc | 2015-02-23 → 2015-02-25 (+2d) | 2015-02-27 → 2015-03-03 (+4d) |  |  | 275d → 0d |  |  |
| 225 | Validação Runbook / Simproc - Oi | 2015-03-02 → 2015-03-04 (+2d) | 2015-03-06 → 2015-03-10 (+4d) |  |  | 275d → 0d |  |  |
| 226 | Execução do teste de conectividade | 2015-02-24 → 2015-05-14 (+79d) | 2015-03-02 → 2015-05-20 (+79d) |  |  | 279d → 0d | 223 → none | constraint none → start no earlier than 2015-05-14 |
| 227 | **Sistema INFORMATICA** | 2014-05-19 → 2015-02-23 (+280d) | 2015-04-10 → 2015-05-20 (+40d) | 235d → 59d |  | 250d → 0d |  |  |
| 228 | Construção e teste unitário | 2015-02-16 → 2015-02-23 (+7d) | 2015-03-27 → 2015-04-06 (+10d) |  |  | 250d → 0d | 134 → 134FS+4d |  |
| 229 | Elaborar Runbook / Simproc | 2015-03-30 → 2015-04-07 (+8d) | 2015-04-03 → 2015-04-13 (+10d) |  |  | 250d → 0d |  |  |
| 230 | Validação Runbook / Simproc - Oi | 2015-04-06 → 2015-04-14 (+8d) | 2015-04-10 → 2015-04-20 (+10d) |  |  | 250d → 0d |  |  |
| 231 | Execução do teste de conectividade | 2014-05-19 → 2015-05-14 (+360d) | 2014-05-23 → 2015-05-20 (+362d) |  |  | 480d → 0d | none → 226SS |  |
| 232 | **Sistema STC** | 2015-03-31 → 2015-04-06 (+6d) | 2015-04-16 → 2015-04-24 (+8d) |  |  | 246d → 0d |  |  |
| 233 | Construção e teste unitário | 2015-03-31 → 2015-04-06 (+6d) | 2015-04-15 → 2015-04-22 (+7d) |  |  | 246d → 0d | 140 → 141FS+9d |  |
| 234 | Merge | 2015-04-16 → 2015-04-24 (+8d) | 2015-04-16 → 2015-04-24 (+8d) |  |  | 246d → 0d |  |  |
| 235 | **Sistema SAC** |  | 2015-04-07 → 2015-04-08 (+1d) |  |  | 253d → 0d |  |  |
| 236 | Construção e teste unitário |  | 2015-04-06 → 2015-04-07 (+1d) |  |  | 253d → 0d | 143 → 143FS+10d |  |
| 237 | Merge | 2015-04-07 → 2015-04-08 (+1d) | 2015-04-07 → 2015-04-08 (+1d) |  |  | 253d → 0d |  |  |
| 238 | **Sistema ARBOR** | 2015-02-03 → 2015-02-04 (+1d) | 2015-02-24 → 2015-02-26 (+2d) |  |  | 283d → 0d |  |  |
| 239 | Construção e teste unitário | 2015-02-03 → 2015-02-04 (+1d) | 2015-02-23 → 2015-02-25 (+2d) |  |  | 283d → 0d |  |  |
| 240 | Merge | 2015-02-24 → 2015-02-26 (+2d) | 2015-02-24 → 2015-02-26 (+2d) |  |  | 283d → 0d |  |  |
| 241 | **Migração** |  |  | 264d → 251d |  | 185d → 0d |  |  |
| 242 | **Sistema Siebel 63** |  |  | 79d → 74d |  | 177d → 0d |  |  |
| 244 | Migração para TI | 2015-05-12 → 2015-05-13 (+1d) | 2015-05-12 → 2015-05-13 (+1d) |  |  | 140d → 0d |  | constraint start no earlier than 2015-05-12 → start no earlier than 2015-05-13 |
| 246 | **Sistema INFORMATICA** |  | 2015-05-12 → 2015-05-13 (+1d) | 221d → 210d |  | 228d → 0d |  |  |
| 247 | Migração para TI | 2015-05-12 → 2015-05-13 (+1d) | 2015-05-12 → 2015-05-13 (+1d) |  |  | 228d → 0d |  | constraint start no earlier than 2015-05-12 → start no earlier than 2015-05-13 |
| 249 | **Sistema STC** | 2015-04-07 → 2015-04-24 (+17d) |  | 69d → 54d |  |  |  |  |
| 250 | Migração para TS | 2015-04-07 → 2015-04-24 (+17d) | 2015-04-07 → 2015-04-24 (+17d) |  |  |  | none → 234SS |  |
| 253 | **Sistema SAC** | 2015-04-07 → 2015-04-24 (+17d) |  | 69d → 54d |  |  |  |  |
| 254 | Migração para TS | 2015-04-07 → 2015-04-24 (+17d) | 2015-04-07 → 2015-04-24 (+17d) |  |  |  |  |  |
| 257 | **Sistema ARBOR** |  |  | 73d → 68d |  | 187d → 0d |  |  |
| 259 | Migração para TI | 2015-05-12 → 2015-05-13 (+1d) | 2015-05-12 → 2015-05-13 (+1d) |  |  | 228d → 0d | 244SS → 251SS |  |
| 261 | **Execução Testes de sistemas** |  | 2016-03-25 → 2015-05-07 (-323d) | 265d → 30d |  |  |  |  |
| 262 | **Sistema Siebel 63** |  | 2015-04-07 → 2015-04-08 (+1d) |  |  | 253d → 0d |  |  |
| 263 | Execução do teste |  | 2015-04-06 → 2015-04-07 (+1d) |  |  | 253d → 0d |  |  |
| 264 | Envio do Termo de Aceite do TS | 2015-04-07 → 2015-04-08 (+1d) | 2015-04-07 → 2015-04-08 (+1d) |  |  | 253d → 0d |  |  |
| 265 | **Sistema STC** | 2015-04-08 → 2015-04-27 (+19d) | 2015-04-17 → 2015-05-07 (+20d) |  |  | 245d → 0d |  |  |
| 266 | Execução do teste | 2015-04-08 → 2015-04-27 (+19d) | 2015-04-16 → 2015-05-06 (+20d) |  |  | 245d → 0d | 250 → 233FS+1d |  |

| ID | Task | Start | Finish | Duration | Total float | Predecessors | Other |
| --- | --- | --- | --- | --- | --- | --- | --- |
| 267 | Envio do Termo de Aceite do TS | 2015-04-17 → 2015-05-07 (+20d) | 2015-04-17 → 2015-05-07 (+20d) |  | 245d → 0d |  |  |
| 268 | **Sistema SAC** | 2015-04-08 → 2015-04-15 (+7d) | 2016-03-25 → 2015-04-28 (-332d) | 253d → 8d |  |  |  |
| 269 | Execução do teste | 2015-04-08 → 2015-04-15 (+7d) | 2016-03-24 → 2015-04-27 (-332d) | 252d → 7d |  | 254 → 237FS+4d |  |
| 270 | Envio do Termo de Aceite do TS | 2016-03-25 → 2015-04-28 (-332d) | 2016-03-25 → 2015-04-28 (-332d) |  |  |  |  |
| 271 | **Sistema ARBOR** |  | 2015-04-07 → 2015-04-08 (+1d) |  | 253d → 0d |  |  |
| 272 | Execução do teste |  | 2015-04-06 → 2015-04-07 (+1d) |  | 253d → 0d |  |  |
| 273 | Envio do Termo de Aceite do TS | 2015-04-07 → 2015-04-08 (+1d) | 2015-04-07 → 2015-04-08 (+1d) |  | 253d → 0d |  |  |
| 274 | **IBM** | 2015-01-05 → 2015-01-21 (+16d) | 2015-02-24 → 2015-04-27 (+62d) | 37d → 65d | 283d → 0d |  |  |
| 275 | Construção SFA e Geneva | 2015-01-05 → 2015-01-21 (+16d) | 2015-02-03 → 2015-04-01 (+57d) | 22d → 50d | 283d → 0d | 149 → 149FS+6d | constraint none → start no earlier than 2015-01-21 |
| 276 | Teste de Sistema | 2015-02-04 → 2015-04-02 (+57d) | 2015-02-24 → 2015-04-27 (+62d) |  | 283d → 0d |  |  |
| 278 | Preparar Treinamento (Material e ambiente) | 2015-06-02 → 2015-06-22 (+20d) | 2015-06-08 → 2015-06-26 (+18d) |  | 204d → 0d |  |  |
| 279 | Realizar Treinamento | 2015-06-09 → 2015-06-29 (+20d) | 2015-06-15 → 2015-07-03 (+18d) |  | 204d → 0d |  |  |
| 280 | Treinamento Finalizado | 2015-06-15 → 2015-07-03 (+18d) | 2015-06-15 → 2015-07-03 (+18d) |  | 204d → 0d |  |  |
| 281 | **Testes Integrados** | 2015-04-27 → 2015-04-20 (-7d) | 2015-07-06 → 2015-07-17 (+11d) | 51d → 61d | 152d → 0d |  |  |
| 282 | **ACCENTURE** | 2015-04-27 → 2015-04-20 (-7d) | 2015-06-11 → 2015-07-01 (+20d) | 34d → 49d | 152d → 0d |  |  |
| 302 | **IBM** | 2015-05-13 → 2015-05-11 (-2d) | 2015-06-11 → 2015-06-22 (+11d) | 22d → 30d | 201d → 0d |  |  |
| 311 | **WEDO** | 2015-06-02 → 2015-06-18 (+16d) | 2015-07-06 → 2015-07-17 (+11d) | 25d → 22d | 148d → 0d |  |  |
| 313 | Preparar Ambiente de Homologação para inicio dos TI (Migrar Funcionalidades) | 2015-06-02 → 2015-06-22 (+20d) | 2015-06-08 → 2015-06-26 (+18d) |  | 209d → 0d |  |  |
| 314 | Receber massa para Testes Integrados | 2015-06-12 → 2015-06-22 (+10d) | 2015-06-15 → 2015-06-23 (+8d) |  | 140d → 3d | Execução testes integrados Acc → 312 |  |
| 315 | Executar Testes Integrados | 2015-06-16 → 2015-06-29 (+13d) | 2015-06-29 → 2015-07-10 (+11d) |  | 140d → 0d | 314 → 314, 313 |  |
| 317 | Validar Evidencias Testes Integrados | 2015-06-30 → 2015-07-13 (+13d) | 2015-07-06 → 2015-07-17 (+11d) |  | 140d → 0d |  |  |
| 318 | Testes integrados Aprovados | 2015-07-06 → 2015-07-17 (+11d) | 2015-07-06 → 2015-07-17 (+11d) |  | 189d → 0d |  |  |
| 319 | Testes Integrados Finalizados | 2015-07-06 → 2015-07-17 (+11d) | 2015-07-06 → 2015-07-17 (+11d) |  | 140d → 0d |  |  |
| 324 | **UAT** | 2015-06-12 → 2015-05-26 (-17d) | 2015-08-04 → 2015-08-17 (+13d) | 38d → 59d | 157d → 0d |  |  |
| 325 | **ACCENTURE** | 2015-06-12 → 2015-05-26 (-17d) |  | 10d → 22d | 196d → 0d |  |  |
| 330 | **IBM** | 2015-06-12 → 2015-06-23 (+11d) | 2015-06-18 → 2015-06-29 (+11d) |  | 201d → 0d |  |  |
| 332 | **WEDO** | 2015-07-07 → 2015-07-20 (+13d) | 2015-08-04 → 2015-08-17 (+13d) |  | 140d → 0d |  |  |
| 333 | Validar Evidencias Testes de UAT | 2015-07-07 → 2015-07-20 (+13d) | 2015-08-03 → 2015-08-14 (+11d) |  | 140d → 0d |  |  |
| 334 | Aprovar UAT | 2015-08-04 → 2015-08-17 (+13d) | 2015-08-04 → 2015-08-17 (+13d) |  | 140d → 0d |  |  |
| 335 | Testes de UAT Finalizados e Aprovados | 2015-08-04 → 2015-08-17 (+13d) | 2015-08-04 → 2015-08-17 (+13d) |  | 140d → 0d |  |  |
| 336 | **Preparação para Implantação** | 2014-05-19 → 2015-05-18 (+364d) | 2015-09-03 → 2015-08-19 (-15d) | 339d → 67d | 146d → 0d |  |  |
| 337 | **WEDO** | 2015-07-07 → 2015-07-20 (+13d) | 2015-08-07 → 2015-08-19 (+12d) | 24d → 23d | 140d → 0d |  |  |
| 338 | Definir estratégia de Implantação e Preparar Plano de Implantação | 2015-07-07 → 2015-07-20 (+13d) | 2015-07-09 → 2015-07-22 (+13d) |  | 140d → 0d |  |  |
| 339 | Preparar Runbook e Manual da Operação RAID | 2015-07-10 → 2015-07-23 (+13d) | 2015-07-16 → 2015-07-29 (+13d) |  | 140d → 0d |  |  |
| 340 | Validar e Aprovar Runbook | 2015-07-17 → 2015-07-30 (+13d) | 2015-07-21 → 2015-08-03 (+13d) |  | 140d → 0d |  |  |
| 341 | Elaborar Runbook PI - Grupo 1 e 2 | 2015-07-10 → 2015-07-23 (+13d) | 2015-07-16 → 2015-07-29 (+13d) |  | 140d → 0d |  |  |
| 342 | Validar Runbook - Grupo 1 e 2 | 2015-07-17 → 2015-07-30 (+13d) | 2015-07-21 → 2015-08-03 (+13d) |  | 140d → 0d |  |  |
| 343 | Criação de CRQ | 2015-07-22 → 2015-08-04 (+13d) | 2015-07-23 → 2015-08-05 (+13d) |  | 174d → 0d |  |  |
| 344 | Validação de CRQ | 2015-07-24 → 2015-08-06 (+13d) | 2015-07-27 → 2015-08-07 (+11d) |  | 174d → 0d |  |  |
| 345 | Preparar cadeias ControlM e scripts | 2015-07-22 → 2015-08-04 (+13d) | 2015-08-04 → 2015-08-17 (+13d) |  | 140d → 0d |  |  |
| 346 | Abertura GMUD STI 84710 | 2015-08-05 → 2015-08-18 (+13d) | 2015-08-06 → 2015-08-19 (+13d) |  | 140d → 0d |  |  |
| 347 | Pronta para implantação | 2015-08-07 → 2015-08-19 (+12d) | 2015-08-07 → 2015-08-19 (+12d) | 1d → 0d | 140d → 0d |  |  |
| 348 | **ACCENTURE** | 2014-05-19 → 2015-05-18 (+364d) | 2014-05-26 → 2015-05-29 (+368d) | 6d → 10d | 479d → 0d |  |  |
| 349 | **Sistema STC** | 2014-05-19 → 2015-05-18 (+364d) | 2014-05-26 → 2015-05-29 (+368d) | 6d → 10d | 479d → 0d |  |  |
| 350 | Plano de implantação | 2014-05-19 → 2015-05-18 (+364d) | 2014-05-19 → 2015-05-22 (+368d) | 1d → 5d | 479d → 0d |  | constraint none → start no earlier than 2015-05-18 |
| 351 | Validação Plano Implantação | 2014-05-20 → 2015-05-25 (+370d) | 2014-05-26 → 2015-05-29 (+368d) |  | 479d → 0d |  |  |
| 353 | **Sistema SAC** | 2014-05-19 → 2015-05-19 (+365d) | 2014-05-23 → 2015-05-27 (+369d) | 5d → 7d | 480d → 0d |  |  |
| 354 | Plano de implantação | 2014-05-19 → 2015-05-19 (+365d) | 2014-05-20 → 2015-05-20 (+365d) |  | 483d → 0d | none → 350SS+1d |  |
| 355 | Validação Plano Implantação | 2014-05-19 → 2015-05-21 (+367d) | 2014-05-23 → 2015-05-27 (+369d) |  | 480d → 0d | none → 354 |  |
| 356 | **IBM** | 2015-05-06 → 2015-06-15 (+40d) | 2015-09-03 → 2015-07-03 (-62d) | 87d → 15d | 146d → 0d |  |  |
| 361 | Entrega RNC | 2015-05-06 → 2015-06-24 (+49d) | 2015-05-06 → 2015-06-24 (+49d) |  | 232d → 0d | none → 358FS+1d | resources oi → none |
| 362 | Abertura de CRQ | 2015-09-03 → 2015-07-03 (-62d) | 2015-09-03 → 2015-07-03 (-62d) |  | 146d → 0d |  | constraint start no earlier than 2015-09-03 → start no earlier than 2015-07-03 |
| 363 | **Colocar em Produção** | 2014-07-18 → 2015-07-14 (+361d) | 2015-08-12 → 2015-08-24 (+12d) | 279d → 30d | 162d → 0d |  |  |
| 364 | **WEDO** | 2015-08-10 → 2015-08-20 (+10d) | 2015-08-12 → 2015-08-24 (+12d) |  | 140d → 0d |  |  |
| 365 | Implantar RAID | 2015-08-10 → 2015-08-20 (+10d) | 2015-08-12 → 2015-08-24 (+12d) |  | 140d → 0d |  |  |
| 366 | **ACCENTURE** | 2014-07-18 → 2015-07-17 (+364d) |  | 267d → 7d | 174d → 0d |  |  |
| 379 | **Sistema ARBOR** | 2014-07-18 → 2015-07-17 (+364d) | 2014-07-21 → 2015-07-20 (+364d) |  | 439d → 0d |  |  |
| 380 | Pré-Implantação | 2014-07-18 → 2015-07-17 (+364d) | 2014-07-18 → 2015-07-17 (+364d) |  | 439d → 0d |  | constraint start no earlier than 2014-07-18 → start no earlier than 2015-07-17 |
| 381 | Release | 2014-07-18 → 2015-07-17 (+364d) | 2014-07-21 → 2015-07-20 (+364d) |  | 439d → 26d |  |  |
| 385 | Demanda 84710 - Upgrade PI - Grupo 1 e 2 Implantada | 2015-08-12 → 2015-08-24 (+12d) | 2015-08-12 → 2015-08-24 (+12d) |  | 162d → 0d |  |  |
| 386 | **PÓS-PRODUÇÃO** | 2015-08-13 → 2015-08-25 (+12d) | 2015-09-11 → 2015-09-24 (+13d) |  | 140d → 0d |  |  |
| 387 | **Rollout** | 2015-08-13 → 2015-08-25 (+12d) | 2015-09-09 → 2015-09-22 (+13d) |  | 140d → 0d |  |  |
| 388 | Acompanhar Produção RAID (WEDO) | 2015-08-13 → 2015-08-25 (+12d) | 2015-09-09 → 2015-09-22 (+13d) |  | 140d → 0d |  |  |
| 390 | Migrar Fluxos para ambiente de Produção | 2015-07-07 → 2015-08-25 (+49d) | 2015-07-13 → 2015-08-31 (+49d) |  | 177d → 0d | 319 → 365 |  |
| 391 | Realizar Testes de Performance | 2015-07-14 → 2015-09-01 (+49d) | 2015-07-20 → 2015-09-08 (+50d) |  | 177d → 0d |  |  |
| 392 | Gerar relatório de Performance | 2015-07-20 → 2015-09-08 (+50d) | 2015-07-20 → 2015-09-08 (+50d) |  | 177d → 0d |  |  |
| 393 | Validar Evidencias Testes Performance | 2015-07-21 → 2015-09-09 (+50d) | 2015-07-22 → 2015-09-10 (+50d) |  | 177d → 0d |  |  |
| 394 | Aprovar Testes de Perfomance | 2015-07-22 → 2015-09-10 (+50d) | 2015-07-22 → 2015-09-10 (+50d) |  | 177d → 0d |  |  |
| 395 | Testes de Performance Finalizado | 2015-07-22 → 2015-09-10 (+50d) | 2015-07-22 → 2015-09-10 (+50d) |  | 177d → 0d |  |  |
| 396 | **Fecho do Projeto** | 2015-09-10 → 2015-09-23 (+13d) | 2015-09-11 → 2015-09-24 (+13d) |  | 140d → 0d |  |  |

| ID | Task | Start | Finish | Total float | Predecessors |
| --- | --- | --- | --- | --- | --- |
| 397 | Gerar termo de Aceitação final do Projeto | 2015-09-10 → 2015-09-23 (+13d) | 2015-09-10 → 2015-09-23 (+13d) | 140d → 0d |  |
| 398 | Gerar Inquerito Satisfação do projeto | 2015-09-10 → 2015-09-23 (+13d) | 2015-09-10 → 2015-09-23 (+13d) | 140d → 0d |  |
| 399 | Assinar Termo de Aceitação Final do Projeto | 2015-09-11 → 2015-09-24 (+13d) | 2015-09-11 → 2015-09-24 (+13d) | 140d → 0d |  |
| 401 | Projeto Finalizado | 2015-09-10 → 2015-09-23 (+13d) | 2015-09-10 → 2015-09-23 (+13d) | 141d → 0d | Preencher Inquerito de Satisfaçãp do projetos → 400 |
