# STI 84200 - Vanilla - Projeto Sinergia OI-PT RA-Infra - Ambiente Desenvolvimento

How a schedule from MS Project changed from version to version. A marks actual dates.

## Version 1 (saved 2014-04-02, file Cronograma STI 84200 - Vanilla - Projeto Sinergia OI-PT RA-Infra v1.0 - 02.04.14.mpp)

Note of the change: up 201801031547

| ID | WBS | Task | Duration | Start | Finish | Predecessors | Complete | Total float |
| --- | --- | --- | --- | --- | --- | --- | --- | --- |
| 1 | 1 | **Plano** | 5d | 2014-02-04 A | 2014-02-10 A |  | 100% |  |
| 2 |  | Validação da documentação | 2d | 2014-02-04 A | 2014-02-05 A |  | 100% |  |
| 3 | 1.2 | **Demanda Complexa** | 3d | 2014-02-06 A | 2014-02-10 A |  | 100% |  |
| 4 |  | Validação/ Qualificação Demanda Complexa | 0.5d | 2014-02-06 A | 2014-02-06 A | 2 | 100% |  |
| 5 |  | Planejamento do Estudo Demanda Complexa | 2.5d | 2014-02-06 A | 2014-02-10 A | 4 | 100% |  |
| 6 | 2 | **Desenho da Solução** | 9d | 2014-02-11 A | 2014-02-21 A |  | 100% |  |
| 7 | 2.1 | **Demanda Complexa** | 9d | 2014-02-11 A | 2014-02-21 A |  | 100% |  |
| 8 |  | Elaboração do Estudo Demanda Complexa | 2d | 2014-02-11 A | 2014-02-12 A | 1 | 100% |  |
| 9 |  | Solicitação de Sizing e/ou OG | 3d | 2014-02-14 A | 2014-02-18 A | 8SS+3d | 100% |  |
| 10 |  | Validação do Estudo DC - Responsáveis Técnicos | 3d | 2014-02-13 A | 2014-02-17 A | 8 | 100% |  |
| 11 |  | Validação do Estudo DC - Solicitante | 4d | 2014-02-18 A | 2014-02-21 A | 10 | 100% |  |
| 12 | 3 | **Aprovação Financeira** | 0d | 2014-02-21 A | 2014-02-21 A |  | 100% |  |
| 13 |  | Preenchimento e envio da ficha financeira | 0d | 2014-02-21 A | 2014-02-21 A | 6 | 100% |  |
| 14 |  | Comitê de investimento - pegar esta data com o solicitante/PMO/PFTI | 0d | 2014-02-21 A | 2014-02-21 A | 13 | 100% |  |
| 15 | 4 | **Planejamento** | 12d | 2014-02-24 A | 2014-03-14 | 12 | 86% | 32.5d |
| 16 |  | Pré-Cadastramento dos ICs (Servidor Lógico, Banco de Dados, Instância BD, Application, URL) no CMDB | 1d | 2014-02-24 A | 2014-02-24 A |  | 100% |  |
| 17 | 4.2 | **ARS Filhos Obtenção de Recursos** | 2d | 2014-02-25 A | 2014-02-26 A | 16 | 100% |  |
| 18 |  | Solicitação p/ Reserva/alocação de Servidores Virtuais (VMWARE) | 2d | 2014-02-25 A | 2014-02-26 A |  | 100% |  |
| 19 |  | Solicitação p/ Reserva/alocação de espaço em disco - Storage (exceto Teradata) | 2d | 2014-02-25 A | 2014-02-26 A |  | 100% |  |
| 20 |  | Solicitação p/ Reserva/alocação de Servidor Compartilhado de Banco de Dados | 2d | 2014-02-25 A | 2014-02-26 A |  | 100% |  |
| 21 |  | Solicitação p/ Reserva/alocação de Servidor Compartilhado para Application ou Web Server | 2d | 2014-02-25 A | 2014-02-26 A |  | 100% |  |
| 22 |  | Solicitação p/ Reserva/alocação de IP - EXCETO para servidores a serem instalados no SCN | 2d | 2014-02-25 A | 2014-02-26 A |  | 100% |  |
| 23 |  | Solicitação p/ Reserva/alocação de Portas SAN e/ou HBAs (R1) | 2d | 2014-02-25 A | 2014-02-26 A |  | 100% |  |
| 24 |  | Solicitação de licença de software | 2d | 2014-02-25 A | 2014-02-26 A |  | 100% |  |
| 25 | 4.3 | **Cronograma** | 5d | 2014-02-27 A | 2014-03-10 A |  | 100% |  |
| 26 | 4.3.1 | **Demanda Complexa** | 5d | 2014-02-27 A | 2014-03-10 A |  | 100% |  |
| 27 |  | Elaboração do Cronograma | 3d | 2014-02-27 A | 2014-03-06 A | 18 | 100% |  |
| 28 |  | Aprovar Cronograma Infra | 1d | 2014-03-07 A | 2014-03-07 A | 27 | 100% |  |
| 29 |  | Aprovar Cronograma Solicitante | 1d | 2014-03-10 A | 2014-03-10 A | 28 | 100% |  |
| 30 | 4.4 | **Especificação Técnica (ET)** | 4d | 2014-03-11 A | 2014-03-14 |  | 19% | 32.5d |
| 31 | 4.4.1 | **Demanda Complexa** | 4d | 2014-03-11 A | 2014-03-14 |  | 19% | 32.5d |
| 32 |  | Elaboração da ET | 1d | 2014-03-11 A | 2014-03-11 | 26 | 75% | 32.5d |
| 33 |  | Aprovar ET Infra | 2d | 2014-03-12 | 2014-03-13 | 32 |  | 32.5d |
| 34 |  | Aprovar ET Solicitante | 1d | 2014-03-14 | 2014-03-14 | 33 |  | 32.5d |
| 35 | 5 | **Acessos Usuários/ Regras de Firewall** | 12.5d | 2014-02-27 A | 2014-03-20 | 17 | 80% | 29d |
| 36 |  | Solicitar criação dos usuários para acesso aos servidores R2 | 10d | 2014-02-27 A | 2014-03-20 | 16 | 75% | 29d |
| 37 |  | Solicitar liberação de regras de firewall para aplicação | 5d | 2014-02-27 A | 2014-03-20 | 16 | 75% | 29d |
| 38 |  | Inclusão do Servidor Unix/ Linux no FANOUT | 5d | 2014-02-27 A | 2014-03-10 A | 16 | 100% |  |
| 39 |  | Solicitar liberação de regras de firewall necessárias paras os times de infraestrutura | 5d | 2014-02-27 A | 2014-03-20 | 16 | 75% | 29d |
| 40 | 6 | **Executar configuração (física/ lógica)** | 29d | 2014-02-27 A | 2014-04-11 |  | 47% | 1d |
| 41 | 6.1 | **ARS Filhos Instalação/ Configuração - Ambiente: DEV - Camada: APLICAÇÃO Servidor(es): RAPDX01 e RAUDX01** | 26d | 2014-02-27 A | 2014-04-08 | 17 | 50% | 4d |
| 42 |  | Abertura dos ARSs Filhos | 4d | 2014-02-27 A | 2014-03-07 A |  | 100% |  |
| 43 | 6.1.2 | **Entrega Parcial** | 12d | 2014-03-10 A | 2014-03-25 | 42 | 75% | 4d |
| 44 | 6.1.2.1 | **Instalação de servidor virtual** | 4d | 2014-03-10 A | 2014-03-13 A | 42 | 100% |  |
| 45 |  | Criação de estrutura de maquina virtual diferente de Windows (R2) | 2d | 2014-03-10 A | 2014-03-11 A |  | 100% |  |
| 46 |  | Instalação do s.o. Linux (R2) | 2d | 2014-03-12 A | 2014-03-13 A | 45 | 100% |  |
| 47 | 6.1.2.2 | **Criação de partições/ filesystems e usuários** | 2d | 2014-03-14 A | 2014-03-17 A | 42 | 100% |  |
| 48 |  | Criação de filesystems e usuários Unix/Linux (R2) | 2d | 2014-03-14 A | 2014-03-17 A | 46 | 100% |  |
| 49 | 6.1.2.3 | **Instalação/ Configuração de Oracle Client 11g** | 2d | 2014-03-18 A | 2014-03-19 A | 42 | 100% |  |
| 50 |  | Instalação de cliente Oracle Client 11g | 2d | 2014-03-18 A | 2014-03-19 A | 44, 47 | 100% |  |
| 51 | 6.1.2.4 | **Implementação de Backup** | 4d | 2014-03-18 A | 2014-03-21 | 44, 47 | 50% | 6d |
| 52 |  | Implementação de Backup R2 | 4d | 2014-03-18 A | 2014-03-21 |  | 50% | 6d |
| 53 | 6.1.2.5 | **Implementação de Monitoração** | 4d | 2014-03-20 A | 2014-03-25 | 44, 47, 49 | 50% | 4d |
| 54 |  | Implementação de Monitoração R2 | 4d | 2014-03-20 A | 2014-03-25 |  | 50% | 4d |
| 55 | 6.1.3 | **Validação/ Aceite da Entrega Parcial Ambiente: DEV - Camada: APLICAÇÃO Servidor(es): RAUPDX01 e RAUDX01** | 2d | 2014-03-26 | 2014-03-27 | 43 |  | 12d |
| 56 |  | Validação/ Aceite da Entrega Parcial Ambiente | 1d | 2014-03-26 | 2014-03-26 |  |  | 12d |
| 57 |  | Aceite da Entrega Parcial | 1d | 2014-03-27 | 2014-03-27 | 56 |  | 12d |
| 58 | 6.1.4 | **Entrega Final** | 8d | 2014-03-26 | 2014-04-04 | 43 |  | 4d |
| 59 | 6.1.4.1 | **Certificação da Implantação** | 8d | 2014-03-26 | 2014-04-04 |  |  | 4d |
| 60 |  | Certificação da Implantação R2 | 8d | 2014-03-26 | 2014-04-04 | 49 |  | 4d |
| 61 | 6.1.5 | **Validação/Aceite da Entrega Final Ambiente: DEV - Camada: APLICAÇÃO Servidor(es): RADPDX01 e RAUDX01** | 2d | 2014-04-07 | 2014-04-08 | 58 |  | 4d |
| 62 |  | Validação/ Aceite da Entrega Final Ambiente | 1d | 2014-04-07 | 2014-04-07 | 60 |  | 4d |
| 63 |  | Aceite da Entrega Final | 1d | 2014-04-08 | 2014-04-08 | 62 |  | 4d |
| 64 | 6.2 | **ARS Filhos Instalação/ Configuração - Ambiente: DEV - Camada: BANCO DE DADOS Servidor(es): ORAHX02A, ORAHX02B - BD: RAPDEV01 e RAUDEV01** | 29d | 2014-02-27 A | 2014-04-11 |  | 45% | 1d |
| 65 |  | Abertura dos ARSs Filhos | 4d | 2014-02-27 A | 2014-03-07 A | 17 | 100% |  |
| 66 | 6.2.2 | **Entrega Parcial** | 15d | 2014-03-10 A | 2014-03-28 | 65 | 61% | 0d |
| 67 | 6.2.2.1 | **Configurção em Servidor Físico** | 3d | 2014-03-10 A | 2014-03-12 A | 65 | 100% |  |
| 68 |  | Criação de estrutura de maquina virtual diferente de Windows (R2) | 1d | 2014-03-10 A | 2014-03-10 A |  | 100% |  |
| 69 |  | Instalação do s.o. Linux (R2) | 2d | 2014-03-11 A | 2014-03-12 A | 68 | 100% |  |
| 70 | 6.2.2.2 | **Criação de partições/ filesystems e usuários** | 2d | 2014-03-13 A | 2014-03-14 A | 65 | 100% |  |

| ID | WBS | Task | Duration | Start | Finish | Predecessors | Complete | Total float |
| --- | --- | --- | --- | --- | --- | --- | --- | --- |
| 71 |  | Criação de filesystems e usuários Unix/Linux (R2) | 2d | 2014-03-13 A | 2014-03-14 A | 69 | 100% |  |
| 72 | 6.2.2.3 | **Instalação/ Configuração de banco de dados** | 8d | 2014-03-13 A | 2014-03-24 | 65, 67 | 50% | 0d |
| 73 |  | Instalação de Oracle Clusterware (Oracle RAC) | 1d | 2014-03-13 A | 2014-03-13 A |  | 100% |  |
| 74 |  | Instalação de binário | 2d | 2014-03-14 A | 2014-03-17 A | 73 | 100% |  |
| 75 |  | Criação de instância / banco | 1d | 2014-03-18 A | 2014-03-18 | 74 | 50% | 0d |
| 76 |  | Criação de schema (somente BD Oracle) | 1d | 2014-03-18 A | 2014-03-18 A | 74 | 100% |  |
| 77 |  | Implementação de Backup de Banco de Dados R2 | 4d | 2014-03-19 | 2014-03-24 | 73, 74, 75 |  | 0d |
| 78 | 6.2.2.4 | **Implementação de Backup** | 4d | 2014-03-17 A | 2014-03-20 | 67, 70 | 50% | 6d |
| 79 |  | Implementação de Backup R2 | 4d | 2014-03-17 A | 2014-03-20 |  | 50% | 6d |
| 80 | 6.2.2.5 | **Implementação de Monitoração** | 4d | 2014-03-25 A | 2014-03-28 | 67, 70, 72 | 50% | 0d |
| 81 |  | Implementação de Monitoração R2 | 4d | 2014-03-25 A | 2014-03-28 |  | 50% | 0d |
| 82 | 6.2.3 | **Validação/ Aceite da Entrega Parcial Ambiente: DEV - Camada: BANCO DE DADOS Servidor(es): ORAHX02 A/B; BD: RAPDEV01 e RAUDEV01** | 3d | 2014-03-31 | 2014-04-02 | 66 |  | 8d |
| 83 |  | Validação/ Aceite da Entrega Parcial Ambiente | 2d | 2014-03-31 | 2014-04-01 |  |  | 8d |
| 84 |  | Aceite da Entrega Parcial | 1d | 2014-04-02 | 2014-04-02 | 83 |  | 8d |
| 85 | 6.2.4 | **Entrega Final** | 8d | 2014-03-31 | 2014-04-09 | 66 |  | 0d |
| 86 | 6.2.4.1 | **Certificação da Implantação** | 8d | 2014-03-31 | 2014-04-09 |  |  | 0d |
| 87 |  | Certificação da Implantação R2 | 8d | 2014-03-31 | 2014-04-09 | 72 |  | 0d |
| 88 | 6.2.5 | **Validação/Aceite da Entrega Final Ambiente: DEV - Camada: BANCO DE DADOS Servidor(es): BD: RAPDEV01 e RAUDEV01** | 2d | 2014-04-10 | 2014-04-11 | 85 |  | 0d |
| 89 |  | Validação/ Aceite da Entrega Final Ambiente | 1d | 2014-04-10 | 2014-04-10 | 87 |  | 0d |
| 90 |  | Aceite da Entrega Final | 1d | 2014-04-11 | 2014-04-11 | 89 |  | 0d |
| 91 | 7 | **Implementação de Backup de Negócio** | 1d | 2014-04-14 | 2014-04-14 |  |  | 0d |
| 92 |  | Implementação de Backup R1 | 1d | 2014-04-14 | 2014-04-14 | 90 |  | 0d |
| 93 |  | Colocar em Produção | 1d | 2014-04-15 | 2014-04-15 | 40, 91 |  | 0d |
| 94 | 9 | **Acompanhamento Pós-Produção** | 10d | 2014-04-16 | 2014-05-06 | 93 |  | 0d |
| 95 | 9.1 | **Solicitação de Operação Assistida** | 10d | 2014-04-16 | 2014-05-06 |  |  | 0d |
| 96 |  | Realização de Operação Assistida | 10d | 2014-04-16 | 2014-05-06 |  |  | 0d |
| 97 |  | Conclusão | 0.5d | 2014-05-07 | 2014-05-07 | 95 |  | 0d |

## Version 2 (saved 2014-06-09, file Cronograma STI 84200 - Vanilla - Projeto Sinergia OI-PT RA-Infra v1.0 - 09.06.14.mpp)

Note of the change: up 201801031547

Last finish 2014-05-07 → 2015-04-16 (+344d). Complete tasks 33 → 39.

Added:

| ID | Task | Duration | Start | Finish | Predecessors | Resources |
| --- | --- | --- | --- | --- | --- | --- |
| 15 | Transferência de verba financeira para centro de custo do projeto | 15d | 2014-06-13 | 2014-07-07 | 14 |  |
| 41 | **Processo de Aquisição** | 90d | 2014-07-08 | 2014-11-11 |  |  |
| 42 | Aquisição de Recursos de Hardware (Servidores/ Storage) | 90d | 2014-07-08 | 2014-11-11 | 15 |  |
| 93 | **Entrega do Ambiente de Desenvolvimento** | 1d | 2014-04-30 A | 2014-04-30 A |  | Julio Silva; PMO |
| 94 | Entrega do Amiente de Desenvolvimento | 1d | 2014-04-30 A | 2014-04-30 A | 66, 92 |  |
| 95 | **Acompanhamento Pós-Entrega de Desenvolvimento** | 20d | 2014-05-05 A | 2014-05-30 A |  |  |
| 98 | **ARS Filhos Instalação/ Configuração - Ambiente: HOM - Camada: APLICAÇÃO Servidor(es): RAPHX02 e RAUHX02** | 25d | 2014-11-12 | 2014-12-18 |  |  |
| 99 | Abertura dos ARSs Filhos | 2d | 2014-11-12 | 2014-11-13 | 42, 36FS+15d | Thasio |
| 100 | **Entrega Parcial** | 13d | 2014-11-14 | 2014-12-04 | 99 |  |
| 101 | **Instalação de servidor físico** | 4d | 2014-11-14 | 2014-11-19 | 99 |  |
| 102 | Criação de estrutura de servidor físico Linux (R2) | 2d | 2014-11-14 | 2014-11-17 |  | Suporte Windows |
| 103 | Instalação do s.o. Linux (R2) | 2d | 2014-11-18 | 2014-11-19 | 102 | Suporte Unix |
| 104 | **Criação de partições/ filesystems e usuários** | 2d | 2014-11-24 | 2014-11-25 | 99 |  |
| 105 | Criação de filesystems e usuários Unix/Linux (R2) | 2d | 2014-11-24 | 2014-11-25 | 103 | Suporte Unix |
| 106 | **Instalação/ Configuração de Oracle Client 11g** | 2d | 2014-11-26 | 2014-11-27 | 99 |  |
| 107 | Instalação de cliente Oracle Client 11g | 2d | 2014-11-26 | 2014-11-27 | 101, 104 | Suporte BD |
| 108 | **Implementação/ Validação de Conectividade** | 5d | 2014-11-28 | 2014-12-04 |  |  |
| 109 | Implementação/ Validação de Conectividade | 5d | 2014-11-28 | 2014-12-04 | 107 | Integração |
| 110 | **Implementação de Backup** | 4d | 2014-11-26 | 2014-12-01 | 101, 104 |  |
| 111 | Implementação de Backup R2 | 4d | 2014-11-26 | 2014-12-01 |  | PCP Backup |
| 112 | **Implementação de Monitoração** | 4d | 2014-11-28 | 2014-12-03 | 101, 104, 106 |  |
| 113 | Implementação de Monitoração R2 | 4d | 2014-11-28 | 2014-12-03 |  | CCO |
| 114 | **Implementação de GA** | 5d | 2014-11-28 | 2014-12-04 |  |  |
| 115 | Implementação de GA | 5d | 2014-11-28 | 2014-12-04 | 107 | Leandro Frossard |
| 116 | **Validação/ Aceite da Entrega Parcial Ambiente: HOM - Camada: APLICAÇÃO Servidor(es): RAPHX02 e RAUHX02** | 2d | 2014-12-05 | 2014-12-08 | 100 |  |
| 117 | Validação/ Aceite da Entrega Parcial Ambiente | 1d | 2014-12-05 | 2014-12-05 |  | Leandro Frossard |
| 118 | Aceite da Entrega Parcial | 1d | 2014-12-08 | 2014-12-08 | 117 | Leandro Frossard |
| 119 | **Entrega Final** | 8d | 2014-12-05 | 2014-12-16 | 100 |  |
| 120 | **Certificação da Implantação** | 8d | 2014-12-05 | 2014-12-16 |  |  |
| 121 | Certificação da Implantação R2 | 8d | 2014-12-05 | 2014-12-16 | 106 | Segurança da Informação |
| 122 | **Validação/Aceite da Entrega Final Ambiente: HOM - Camada: APLICAÇÃO Servidor(es): RAPHX02 e RAUHX02** | 2d | 2014-12-17 | 2014-12-18 | 119 |  |
| 123 | Validação/ Aceite da Entrega Final Ambiente | 1d | 2014-12-17 | 2014-12-17 | 121 | Augusto; Frossard |
| 124 | Aceite da Entrega Final | 1d | 2014-12-18 | 2014-12-18 | 123 | Augusto; Frossard |
| 125 | **ARS Filhos Instalação/ Configuração - Ambiente: HOM - Camada: BANCO DE DADOS Servidor(es): RAPHX03A/B (Cluster)** | 25d | 2014-11-12 | 2014-12-18 |  |  |
| 126 | Abertura dos ARSs Filhos | 3d | 2014-11-12 | 2014-11-14 | 42, 36FS+15d | Thasio |
| 127 | **Entrega Parcial** | 21d | 2014-11-17 | 2014-12-17 | 126 |  |
| 128 | **Configurção em Servidor Físico** | 5d | 2014-11-17 | 2014-11-25 | 126 |  |
| 129 | Criação de estrutura de maquina física Linux (R2) | 2d | 2014-11-17 | 2014-11-18 |  | Suporte Windows |
| 130 | Instalação do s.o. Linux (R2) | 3d | 2014-11-19 | 2014-11-25 | 129 | Suporte Unix |
| 131 | **Criação de partições/ filesystems e usuários** | 2d | 2014-11-26 | 2014-11-27 | 126 |  |
| 132 | Criação de filesystems e usuários Unix/Linux (R2) | 2d | 2014-11-26 | 2014-11-27 | 130 | Suporte Unix |
| 133 | **Instalação/ Configuração de banco de dados** | 7d | 2014-11-26 | 2014-12-04 | 126, 128 |  |
| 134 | Instalação de Oracle Clusterware (Oracle RAC) | 2d | 2014-11-26 | 2014-11-27 |  | Suporte BD |
| 135 | Instalação de binário | 2d | 2014-11-28 | 2014-12-01 | 134 | Suporte BD |
| 136 | Criação de instância / banco | 3d | 2014-12-02 | 2014-12-04 | 135 | Suporte BD |
| 137 | Criação de schema (somente BD Oracle) | 2d | 2014-12-02 | 2014-12-03 | 135 |  |
| 138 | **Implementação/ Validação de Conectividade** | 10d | 2014-12-04 | 2014-12-17 |  |  |
| 139 | Implementação/ Validação de Conectividade | 10d | 2014-12-04 | 2014-12-17 | 137 | Integração |
| 140 | **Implementação de Backup** | 5d | 2014-11-28 | 2014-12-04 | 128, 131 |  |
| 141 | Implementação de Backup R2 | 5d | 2014-11-28 | 2014-12-04 |  | PCP Backup |
| 142 | **Implementação de Monitoração** | 4d | 2014-12-05 | 2014-12-10 | 128, 131, 133 |  |
| 143 | Implementação de Monitoração R2 | 4d | 2014-12-05 | 2014-12-10 |  | CCO |
| 144 | **Implementação de GA** | 10d | 2014-12-04 | 2014-12-17 |  |  |
| 145 | Implementação de GA | 10d | 2014-12-04 | 2014-12-17 | 137 | Leandro Frossard |
| 146 | **Validação/ Aceite da Entrega Parcial Ambiente: HOM - Camada: BANCO DE DADOS Servidor(es): RAPHX03A/B (Cluster)** | 2d | 2014-12-05 | 2014-12-08 |  |  |
| 147 | Validação/ Aceite da Entrega Parcial Ambiente | 1d | 2014-12-05 | 2014-12-05 | 141 | Augusto; Frossard |
| 148 | Aceite da Entrega Parcial | 1d | 2014-12-08 | 2014-12-08 | 147 | Augusto; Frossard |
| 149 | **Entrega Final** | 8d | 2014-12-05 | 2014-12-16 |  |  |
| 150 | **Certificação da Implantação** | 8d | 2014-12-05 | 2014-12-16 |  |  |
| 151 | Certificação da Implantação R2 | 8d | 2014-12-05 | 2014-12-16 | 133 | Segurança da Informação |
| 152 | **Validação/Aceite da Entrega Final Ambiente: HOM - Camada: BANCO DE DADOS Servidor(es): RAPHX03A/B (Cluster)** | 2d | 2014-12-17 | 2014-12-18 | 149 |  |
| 153 | Validação/ Aceite da Entrega Final Ambiente | 1d | 2014-12-17 | 2014-12-17 | 151 | Augusto; Frossard |
| 154 | Aceite da Entrega Final | 1d | 2014-12-18 | 2014-12-18 | 153 | Augusto; Frossard |
| 155 | **ARS Filhos Instalação/ Configuração - Ambiente: HOM - Camada: WEB Servidor(es): RAPHX01 e RAUHX01 (NLB); Ambiente: DEV Servidores RAPDX02 e RAUDX02** | 43d | 2014-11-12 | 2015-01-29 |  |  |
| 156 | Abertura dos ARSs Filhos | 2d | 2014-11-12 | 2014-11-13 | 42, 36FS+15d | Thasio |
| 157 | **Entrega Parcial** | 40d | 2014-11-14 | 2015-01-28 |  |  |
| 158 | **Instalação de servidor virtual** | 6d | 2014-11-14 | 2014-11-25 |  |  |
| 159 | Instalação do s.o. (Linux/Unix) R2 (BSB:SIG) | 4d | 2014-11-14 | 2014-11-19 | 156 | Suporte Unix |
| 160 | Instalação e configuração de área de disco e configurações de servidor virtual (BSB:SIG) | 2d | 2014-11-24 | 2014-11-25 | 159 | Suporte Storage |
| 161 | **Criação de partições/ filesystems e usuários** | 4d | 2014-11-26 | 2014-12-01 |  |  |
| 162 | Criação de filesystems e usuários Unix/Linux R2 (BSB:SIG) | 4d | 2014-11-26 | 2014-12-01 | 158 | Suporte Unix |
| 163 | **Cadastro do IP de backup no media server** | 2d | 2014-12-02 | 2014-12-03 |  |  |
| 164 | Cadastro do IP de backup no media server R2 (BSB:SIG) | 2d | 2014-12-02 | 2014-12-03 | 162 | Suporte Unix |
| 165 | **Instalação/ Configuração de serviços Web e Integração** | 16d | 2014-12-04 | 2015-01-08 |  |  |
| 166 | Validação do ambiente (Infra Core) | 2d | 2014-12-04 | 2014-12-05 | 164 | Suporte Web |
| 167 | Criação de entrada no DNS *** somente em caso de site externo *** | 2d | 2014-12-08 | 2014-12-09 | 166 | Rede Corporativa |
| 168 | **Web Servers - UNIX - Apache e IBMIHS** | 7d | 2014-12-10 | 2014-12-18 | 162, 166 |  |
| 169 | Criação de Site em Apache (com ou sem PHP) e IBMIHS | 2d | 2014-12-10 | 2014-12-11 | 167 | Suporte Web |
| 170 | Instalação de Web Server - Apache (com ou sem PHP) ou IBMIHS | 5d | 2014-12-12 | 2014-12-18 | 169 | Suporte Web |
| 171 | **Implementação/ Validação de Conectividade** | 5d | 2014-12-19 | 2015-01-08 |  |  |
| 172 | Implementação/ Validaão de Conectividade | 5d | 2014-12-19 | 2015-01-08 | 170 | Integração |
| 173 | **Implementação de Backup** | 5d | 2014-12-19 | 2015-01-08 |  |  |
| 174 | Implementação de Backup R2 (BSB:SIG) | 5d | 2014-12-19 | 2015-01-08 | 170 | PCP Backup |
| 175 | **Certificação da Implantação** | 8d | 2015-01-09 | 2015-01-22 |  |  |
| 176 | Certificação da Implantação R2 (BSB:SIG) | 8d | 2015-01-09 | 2015-01-22 | 174 | Segurança da Informação |
| 177 | **Implementação de Monitoração** | 7d | 2014-12-19 | 2015-01-12 |  |  |
| 178 | Implementação de Monitoração R2 (BSB:SIG) | 7d | 2014-12-19 | 2015-01-12 | 170 | CCO |
| 179 | **Implementação de GA** | 10d | 2015-01-13 | 2015-01-28 | 178 |  |
| 180 | Implementação de GA | 10d | 2015-01-13 | 2015-01-28 |  | Leandro Frossard |
| 181 | **Validação/ Aceite da Entrega Parcial Ambiente: HOM - Camada: WEB Servidor(es): RAPHX01; RAUHX01** | 1d | 2015-01-09 | 2015-01-09 |  |  |
| 182 | Validação/ Aceite da Entrega Parcial Ambiente: HOM - Camada: WEB Servidor(es): RAPHX01; RAUHX01 | 1d | 2015-01-09 | 2015-01-09 | 174 | Vivian |
| 183 | **Entrega Final - Certificação de Implantação e Monitoramento** | 1d | 2015-01-29 | 2015-01-29 |  |  |
| 184 | **Validação/ Aceite da Entrega Final Ambiente: HOM - Camada: WEB Servidor(es): RAPHX01; RAUHX01** | 1d | 2015-01-29 | 2015-01-29 |  |  |
| 185 | Validação/ Aceite da Entrega Final Ambiente: HOM - Camada: WEB Servidor(es): RAPHX01; RAUHX01 | 1d | 2015-01-29 | 2015-01-29 | 180 | Vivian |
| 186 | **Entrega do Ambiente de Homologação** | 2d | 2015-01-29 | 2015-01-30 |  |  |
| 187 | Entrega do Ambiente de Homologação | 2d | 2015-01-29 | 2015-01-30 | 180, 154, 124 |  |
| 188 | **Acompanhamento Pós-Entrega de Homologação** | 19d | 2015-01-30 | 2015-03-02 |  |  |
| 189 | **Solicitação de Operação Assistida** | 19d | 2015-01-30 | 2015-03-02 |  |  |
| 190 | Realização de Operação Assistida | 19d | 2015-01-30 | 2015-03-02 | 185 | Integração |
| 191 | **ARS Filhos Instalação/ Configuração - Ambiente: PRD - Camada: APLICAÇÃO Servidor(es): RAPPX02A/B/C e RAUPX02A/B/C (Cluster)** | 42d | 2014-12-19 | 2015-03-09 |  |  |
| 192 | Abertura dos ARSs Filhos | 2d | 2014-12-19 | 2015-01-05 | 124, 186 | Thasio |
| 193 | **Entrega Parcial** | 30d | 2015-01-06 | 2015-02-23 | 192 |  |
| 194 | **Instalação de servidor físico** | 12d | 2015-01-06 | 2015-01-23 | 192 |  |
| 195 | Criação de estrutura de servidor físico Linux (R2) | 2d | 2015-01-06 | 2015-01-07 |  | Suporte Windows |
| 196 | Instalação do s.o. Linux (R2) | 10d | 2015-01-08 | 2015-01-23 | 195 | Suporte Unix |
| 197 | **Criação de partições/ filesystems e usuários** | 5d | 2015-01-26 | 2015-01-30 | 192 |  |
| 198 | Criação de filesystems e usuários Unix/Linux (R2) | 5d | 2015-01-26 | 2015-01-30 | 196 | Suporte Unix |
| 199 | **Instalação/ Configuração de Oracle Client 11g** | 3d | 2015-02-02 | 2015-02-04 | 192 |  |
| 200 | Instalação de cliente Oracle Client 11g | 3d | 2015-02-02 | 2015-02-04 | 194, 197 | Suporte BD |
| 201 | **Implementação/ Validação de Conectividade** | 10d | 2015-02-05 | 2015-02-23 |  |  |
| 202 | Implementação/ Validação de Conectividade | 10d | 2015-02-05 | 2015-02-23 | 200 | Integração |
| 203 | **Implementação de Backup** | 10d | 2015-02-02 | 2015-02-13 | 194, 197 |  |
| 204 | Implementação de Backup R2 | 10d | 2015-02-02 | 2015-02-13 |  | PCP Backup |
| 205 | **Implementação de Monitoração** | 10d | 2015-02-05 | 2015-02-23 | 194, 197, 199 |  |
| 206 | Implementação de Monitoração R2 | 10d | 2015-02-05 | 2015-02-23 |  | CCO |
| 207 | **Implementação de GA** | 10d | 2015-02-05 | 2015-02-23 |  |  |
| 208 | Implementação de GA | 10d | 2015-02-05 | 2015-02-23 | 200 | Leandro Frossard |
| 209 | **Validação/ Aceite da Entrega Parcial Ambiente: HOM - Camada: APLICAÇÃO Servidor(es): RAPHX02 e RAUHX02** | 2d | 2015-02-24 | 2015-02-25 | 193 |  |
| 210 | Validação/ Aceite da Entrega Parcial Ambiente | 1d | 2015-02-24 | 2015-02-24 |  | Leandro Frossard |
| 211 | Aceite da Entrega Parcial | 1d | 2015-02-25 | 2015-02-25 | 210 | Leandro Frossard |
| 212 | **Entrega Final** | 8d | 2015-02-24 | 2015-03-05 | 193 |  |
| 213 | **Certificação da Implantação** | 8d | 2015-02-24 | 2015-03-05 |  |  |
| 214 | Certificação da Implantação R2 | 8d | 2015-02-24 | 2015-03-05 | 199 | Segurança da Informação |
| 215 | **Validação/Aceite da Entrega Final Ambiente: HOM - Camada: APLICAÇÃO Servidor(es): RAPHX02 e RAUHX02** | 2d | 2015-03-06 | 2015-03-09 | 212 |  |
| 216 | Validação/ Aceite da Entrega Final Ambiente | 1d | 2015-03-06 | 2015-03-06 | 214 | Augusto; Frossard |
| 217 | Aceite da Entrega Final | 1d | 2015-03-09 | 2015-03-09 | 216 | Augusto; Frossard |
| 218 | **ARS Filhos Instalação/ Configuração - Ambiente: PRD - Camada: BANCO DE DADOS Servidor(es): RAPPX03A/B/C e RAUPX03A/B/C (Cluster)** | 42d | 2014-12-19 | 2015-03-09 |  |  |
| 219 | Abertura dos ARSs Filhos | 3d | 2014-12-19 | 2015-01-06 | 154, 186 | Thasio |
| 220 | **Entrega Parcial** | 39d | 2015-01-07 | 2015-03-09 | 219 |  |
| 221 | **Configurção em Servidor Físico** | 15d | 2015-01-07 | 2015-01-29 | 219 |  |
| 222 | Criação de estrutura de maquina física Linux (R2) | 5d | 2015-01-07 | 2015-01-13 |  | Suporte Windows |
| 223 | Instalação do s.o. Linux (R2) | 10d | 2015-01-14 | 2015-01-29 | 222 | Suporte Unix |
| 224 | **Criação de partições/ filesystems e usuários** | 5d | 2015-01-30 | 2015-02-05 | 219 |  |
| 225 | Criação de filesystems e usuários Unix/Linux (R2) | 5d | 2015-01-30 | 2015-02-05 | 223 | Suporte Unix |
| 226 | **Instalação/ Configuração de banco de dados** | 12d | 2015-01-30 | 2015-02-19 | 219, 221 |  |
| 227 | Instalação de Oracle Clusterware (Oracle RAC) | 5d | 2015-01-30 | 2015-02-05 |  | Suporte BD |
| 228 | Instalação de binário | 2d | 2015-02-06 | 2015-02-09 | 227 | Suporte BD |
| 229 | Criação de instância / banco | 5d | 2015-02-10 | 2015-02-19 | 228 | Suporte BD |
| 230 | Criação de schema (somente BD Oracle) | 2d | 2015-02-10 | 2015-02-11 | 228 |  |
| 231 | **Implementação/ Validação de Conectividade** | 10d | 2015-02-12 | 2015-03-02 |  |  |
| 232 | Implementação/ Validação de Conectividade | 10d | 2015-02-12 | 2015-03-02 | 230 | Integração |
| 233 | **Implementação de Backup** | 10d | 2015-02-06 | 2015-02-24 | 221, 224 |  |
| 234 | Implementação de Backup R2 | 10d | 2015-02-06 | 2015-02-24 |  | PCP Backup |
| 235 | **Implementação de Monitoração** | 10d | 2015-02-20 | 2015-03-05 | 221, 224, 226 |  |
| 236 | Implementação de Monitoração R2 | 10d | 2015-02-20 | 2015-03-05 |  | CCO |
| 237 | **Implementação de GA** | 15d | 2015-02-12 | 2015-03-09 |  |  |
| 238 | Implementação de GA | 15d | 2015-02-12 | 2015-03-09 | 230 | Leandro Frossard |
| 239 | **Validação/ Aceite da Entrega Parcial Ambiente: HOM - Camada: BANCO DE DADOS Servidor(es): RAPHX03A/B (Cluster)** | 2d | 2015-02-25 | 2015-02-26 |  |  |
| 240 | Validação/ Aceite da Entrega Parcial Ambiente | 1d | 2015-02-25 | 2015-02-25 | 234 | Augusto; Frossard |
| 241 | Aceite da Entrega Parcial | 1d | 2015-02-26 | 2015-02-26 | 240 | Augusto; Frossard |
| 242 | **Entrega Final** | 8d | 2015-02-20 | 2015-03-03 |  |  |
| 243 | **Certificação da Implantação** | 8d | 2015-02-20 | 2015-03-03 |  |  |
| 244 | Certificação da Implantação R2 | 8d | 2015-02-20 | 2015-03-03 | 226 | Segurança da Informação |
| 245 | **Validação/Aceite da Entrega Final Ambiente: HOM - Camada: BANCO DE DADOS Servidor(es): RAPHX03A/B (Cluster)** | 2d | 2015-03-04 | 2015-03-05 | 242 |  |
| 246 | Validação/ Aceite da Entrega Final Ambiente | 1d | 2015-03-04 | 2015-03-04 | 244 | Augusto; Frossard |
| 247 | Aceite da Entrega Final | 1d | 2015-03-05 | 2015-03-05 | 246 | Augusto; Frossard |
| 248 | **ARS Filhos Instalação/ Configuração - Ambiente: PRD - Camada: WEB Servidor(es): RAPPX01A/B/C** | 45d | 2014-12-19 | 2015-03-12 |  |  |
| 249 | Abertura dos ARSs Filhos | 3d | 2014-12-19 | 2015-01-06 | 170, 186 | Thasio |
| 250 | **Entrega Parcial** | 41d | 2015-01-07 | 2015-03-11 |  |  |
| 251 | **Instalação de servidor virtual** | 5d | 2015-01-07 | 2015-01-13 |  |  |
| 252 | Instalação do s.o. (Linux/Unix) R2 (BSB:SIG) | 3d | 2015-01-07 | 2015-01-09 | 249 | Suporte Unix |
| 253 | Instalação e configuração de área de disco e configurações de servidor virtual (BSB:SIG) | 2d | 2015-01-12 | 2015-01-13 | 252 | Suporte Storage |
| 254 | **Criação de partições/ filesystems e usuários** | 2d | 2015-01-14 | 2015-01-15 |  |  |
| 255 | Criação de filesystems e usuários Unix/Linux R2 (BSB:SIG) | 2d | 2015-01-14 | 2015-01-15 | 251 | Suporte Unix |
| 256 | **Cadastro do IP de backup no media server** | 2d | 2015-01-16 | 2015-01-21 |  |  |
| 257 | Cadastro do IP de backup no media server R2 (BSB:SIG) | 2d | 2015-01-16 | 2015-01-21 | 255 | Suporte Unix |
| 258 | **Instalação/ Configuração de serviços Web e Integração** | 22d | 2015-01-22 | 2015-02-25 |  |  |
| 259 | Validação do ambiente (Infra Core) | 2d | 2015-01-22 | 2015-01-23 | 257 | Suporte Web |
| 260 | Criação de entrada no DNS *** somente em caso de site externo *** | 2d | 2015-01-26 | 2015-01-27 | 259 | Rede Corporativa |
| 261 | **Web Servers - UNIX - Apache e IBMIHS** | 8d | 2015-01-28 | 2015-02-06 | 255, 259 |  |
| 262 | Criação de Site em Apache (com ou sem PHP) e IBMIHS | 3d | 2015-01-28 | 2015-01-30 | 260 | Suporte Web |
| 263 | Instalação de Web Server - Apache (com ou sem PHP) ou IBMIHS | 5d | 2015-02-02 | 2015-02-06 | 262 | Suporte Web |
| 264 | **Implementação/ Validação de Conectividade** | 10d | 2015-02-09 | 2015-02-25 |  |  |
| 265 | Implementação/ Validaão de Conectividade | 10d | 2015-02-09 | 2015-02-25 | 263 | Integração |
| 266 | **Implementação de Backup** | 5d | 2015-02-09 | 2015-02-13 |  |  |
| 267 | Implementação de Backup R2 (BSB:SIG) | 5d | 2015-02-09 | 2015-02-13 | 263 | PCP Backup |
| 268 | **Certificação da Implantação** | 8d | 2015-02-19 | 2015-03-02 |  |  |
| 269 | Certificação da Implantação R2 (BSB:SIG) | 8d | 2015-02-19 | 2015-03-02 | 267 | Segurança da Informação |
| 270 | **Implementação de Monitoração** | 5d | 2015-02-09 | 2015-02-13 |  |  |
| 271 | Implementação de Monitoração R2 (BSB:SIG) | 5d | 2015-02-09 | 2015-02-13 | 263 | CCO |
| 272 | **Implementação de GA** | 15d | 2015-02-19 | 2015-03-11 | 271 |  |
| 273 | Implementação de GA | 15d | 2015-02-19 | 2015-03-11 |  | Leandro Frossard |
| 274 | **Validação/ Aceite da Entrega Parcial Ambiente: HOM - Camada: WEB Servidor(es): RAPHX01; RAUHX01** | 1d | 2015-02-19 | 2015-02-19 |  |  |
| 275 | Validação/ Aceite da Entrega Parcial Ambiente: HOM - Camada: WEB Servidor(es): RAPHX01; RAUHX01 | 1d | 2015-02-19 | 2015-02-19 | 267 | Vivian |
| 276 | **Entrega Final - Certificação de Implantação e Monitoramento** | 1d | 2015-03-12 | 2015-03-12 |  |  |
| 277 | **Validação/ Aceite da Entrega Final Ambiente: HOM - Camada: WEB Servidor(es): RAPHX01; RAUHX01** | 1d | 2015-03-12 | 2015-03-12 |  |  |
| 278 | Validação/ Aceite da Entrega Final Ambiente: HOM - Camada: WEB Servidor(es): RAPHX01; RAUHX01 | 1d | 2015-03-12 | 2015-03-12 | 273 | Vivian |
| 279 | **Colocar em Produção** | 2d | 2015-03-13 | 2015-03-16 |  |  |
| 282 | **Solicitação de Operação Assistida** | 21d | 2015-03-17 | 2015-04-15 |  |  |
| 283 | Realização de Operação Assistida | 21d | 2015-03-17 | 2015-04-15 | 280 | Integração |
| 285 | Encerrameno do Projeto | 1d | 2015-04-16 | 2015-04-16 | 283 |  |

Removed: 77 Implementação de Backup de Banco de Dados R2; 91 Implementação de Backup de Negócio; 92 Implementação de Backup R1

Changed:

| ID | Task | Start | Finish | Duration | Complete | Total float | Predecessors | Other |
| --- | --- | --- | --- | --- | --- | --- | --- | --- |
| 6 | **Desenho da Solução** |  | 2014-02-21 A → 2014-06-03 A (+102d) | 9d → 73d |  |  |  |  |
| 7 | **Demanda Complexa** |  | 2014-02-21 A → 2014-06-03 A (+102d) | 9d → 73d |  |  |  |  |
| 8 | Elaboração do Estudo Demanda Complexa |  | 2014-02-12 A → 2014-05-15 A (+92d) | 2d → 60d |  |  |  |  |
| 9 | Solicitação de Sizing e Validação de CF | 2014-02-14 A → 2014-05-16 A (+91d) | 2014-02-18 A → 2014-05-23 A (+94d) | 3d → 6d |  |  | 8SS+3d → 8 | was named Solicitação de Sizing e/ou OG; resources Sinesio; Julio → Sinesio; Julio; Vanessa; Pedro |
| 10 | Validação do Estudo DC - Responsáveis Técnicos | 2014-02-13 A → 2014-05-16 A (+92d) | 2014-02-17 A → 2014-05-27 A (+99d) | 3d → 8d |  |  |  |  |
| 11 | Validação do Estudo DC - Solicitante | 2014-02-18 A → 2014-05-28 A (+99d) | 2014-02-21 A → 2014-06-03 A (+102d) | 4d → 5d |  |  |  | resources Felippe Santos → Leandro Frossard |
| 12 | **Aprovação Financeira** | 2014-02-21 A → 2014-05-29 A (+97d) | 2014-02-21 A → 2014-07-07 (+136d) | 0d → 26d | 100% → 23% | none → 0d |  |  |
| 13 | Preenchimento e envio da ficha financeira | 2014-02-21 A → 2014-05-29 A (+97d) | 2014-02-21 A → 2014-05-29 A (+97d) | 0d → 1d |  |  | 6 → 9 | resources Julio; Augusto → Leandro Frossard; Thais |
| 14 | Comitê de investimento - pegar esta data com o solicitante/PMO/PFTI | 2014-02-21 A → 2014-05-30 A (+98d) | 2014-02-21 A → 2014-06-12 (+111d) | 0d → 10d | 100% → 50% | none → 0d |  |  |
| 16 | **Planejamento** | 2014-02-24 A → 2014-03-14 A (+18d) | 2014-03-14 → 2014-07-08 (+116d) | 12d → 76d | 86% → 37% | 32.5d → 202d | 12 → none |  |
| 17 | Pré-Cadastramento dos ICs (Servidor Lógico, Banco de Dados, Instância BD, Application, URL) no CMDB | 2014-02-24 A → 2014-03-14 A (+18d) | 2014-02-24 A → 2014-03-17 (+21d) | 1d → 2d | 100% → 35% | none → 272.75d | none → 5FS+20d |  |
| 18 | **ARS Filhos Obtenção de Recursos** | 2014-02-25 A → 2014-03-18 A (+21d) | 2014-02-26 A → 2014-03-24 (+26d) | 2d → 5d | 100% → 35% | none → 271d |  |  |
| 19 | Solicitação p/ Reserva/alocação de Servidores Virtuais (VMWARE) | 2014-02-25 A → 2014-03-18 A (+21d) | 2014-02-26 A → 2014-03-24 (+26d) | 2d → 5d | 100% → 35% | none → 271d |  |  |
| 20 | Solicitação p/ Reserva/alocação de espaço em disco - Storage (exceto Teradata) | 2014-02-25 A → 2014-03-18 A (+21d) | 2014-02-26 A → 2014-03-24 (+26d) | 2d → 5d | 100% → 35% | none → 271d |  |  |
| 21 | Solicitação p/ Reserva/alocação de Servidor Compartilhado de Banco de Dados | 2014-02-25 A → 2014-03-18 A (+21d) | 2014-02-26 A → 2014-03-24 (+26d) | 2d → 5d | 100% → 35% | none → 271d |  |  |
| 22 | Solicitação p/ Reserva/alocação de Servidor Compartilhado para Application ou Web Server | 2014-02-25 A → 2014-03-18 A (+21d) | 2014-02-26 A → 2014-03-24 (+26d) | 2d → 5d | 100% → 35% | none → 271d |  |  |
| 23 | Solicitação p/ Reserva/alocação de IP - EXCETO para servidores a serem instalados no SCN | 2014-02-25 A → 2014-03-18 A (+21d) | 2014-02-26 A → 2014-03-24 (+26d) | 2d → 5d | 100% → 35% | none → 271d |  |  |
| 24 | Solicitação p/ Reserva/alocação de Portas SAN e/ou HBAs (R2) | 2014-02-25 A → 2014-03-18 A (+21d) | 2014-02-26 A → 2014-03-24 (+26d) | 2d → 5d | 100% → 35% | none → 271d |  | was named Solicitação p/ Reserva/alocação de Portas SAN e/ou HBAs (R1) |
| 25 | Solicitação de licença de software | 2014-02-25 A → 2014-03-18 A (+21d) | 2014-02-26 A → 2014-03-24 (+26d) | 2d → 5d | 100% → 35% | none → 271d |  |  |
| 26 | **Cronograma** | 2014-02-27 A → 2014-06-04 A (+97d) | 2014-03-10 A → 2014-06-13 (+95d) | 5d → 8d | 100% → 50% | none → 194.25d |  |  |
| 27 | **Demanda Complexa** | 2014-02-27 A → 2014-06-04 A (+97d) | 2014-03-10 A → 2014-06-13 (+95d) | 5d → 8d | 100% → 50% | none → 194.25d |  |  |
| 28 | Elaboração do Cronograma | 2014-02-27 A → 2014-06-04 A (+97d) | 2014-03-06 A → 2014-06-06 A (+92d) |  |  |  | 19 → 11 |  |
| 29 | Aprovar Cronograma Infra | 2014-03-07 A → 2014-06-09 A (+94d) | 2014-03-07 A → 2014-06-09 A (+94d) |  |  |  |  |  |
| 30 | Aprovar Cronograma Solicitante | 2014-03-10 A → 2014-06-10 (+92d) | 2014-03-10 A → 2014-06-13 (+95d) | 1d → 4d | 100% → 0% | none → 203.25d |  |  |
| 31 | **Especificação Técnica (ET)** | 2014-03-11 A → 2014-06-16 A (+97d) | 2014-03-14 → 2014-07-08 (+116d) | 4d → 15d | 19% → 35% | 32.5d → 189d |  |  |
| 32 | **Demanda Complexa** | 2014-03-11 A → 2014-06-16 A (+97d) | 2014-03-14 → 2014-07-08 (+116d) | 4d → 15d | 19% → 35% | 32.5d → 189d |  |  |
| 33 | Elaboração da ET | 2014-03-11 A → 2014-06-16 A (+97d) | 2014-03-11 → 2014-06-27 (+108d) | 1d → 8d | 75% → 35% | 32.5d → 191.45d |  |  |
| 34 | Aprovar ET Infra | 2014-03-12 → 2014-06-30 A (+110d) | 2014-03-13 → 2014-07-01 (+110d) |  | 0% → 35% | 32.5d → 190.75d |  |  |
| 35 | Aprovar ET Solicitante | 2014-03-14 → 2014-07-02 A (+110d) | 2014-03-14 → 2014-07-08 (+116d) | 1d → 5d | 0% → 35% | 32.5d → 189d |  |  |
| 36 | **Acessos Usuários/ Regras de Firewall** | 2014-02-27 A → 2014-07-09 A (+132d) | 2014-03-20 → 2014-08-05 (+138d) | 12.5d → 20d | 80% → 35% | 29d → 182d | 18 → none |  |
| 37 | Solicitar criação dos usuários para acesso aos servidores R2 | 2014-02-27 A → 2014-07-09 A (+132d) | 2014-03-20 → 2014-07-29 (+131d) | 10d → 15d | 75% → 35% | 29d → 187d | 17 → 35 | resources Augusto; Frossard → DDSA; Integração |
| 38 | Solicitar liberação de regras de firewall para aplicação | 2014-02-27 A → 2014-07-09 A (+132d) | 2014-03-20 → 2014-08-05 (+138d) | 5d → 20d | 75% → 35% | 29d → 182d | 17 → 35 | resources Augusto; Frossard → DDSA; Integração |
| 39 | Inclusão do Servidor Unix/ Linux no FANOUT | 2014-02-27 A → 2014-07-09 A (+132d) | 2014-03-10 A → 2014-07-15 (+127d) |  | 100% → 35% | none → 190.5d | 17 → 35 |  |
| 40 | Solicitar liberação de regras de firewall necessárias paras os times de infraestrutura | 2014-02-27 A → 2014-07-16 A (+139d) | 2014-03-20 → 2014-07-29 (+131d) | 5d → 10d | 75% → 35% | 29d → 187d | 17 → 39 | resources Augusto; Frossard → DDSA; Integração |
| 43 | **Executar configuração (física/ lógica)** | 2014-02-27 A → 2014-03-25 A (+26d) | 2014-04-11 → 2015-04-15 (+369d) | 29d → 251d | 47% → 16% |  |  |  |
| 44 | **ARS Filhos Instalação/ Configuração - Ambiente: DEV - Camada: APLICAÇÃO Servidor(es): RAPDX01 e RAUDX01** | 2014-02-27 A → 2014-03-25 A (+26d) | 2014-04-08 → 2014-04-29 A (+21d) | 26d → 23d | 50% → 100% | 4d → none |  |  |
| 45 | Abertura dos ARSs Filhos | 2014-02-27 A → 2014-03-25 A (+26d) | 2014-03-07 A → 2014-03-27 A (+20d) | 4d → 3d |  |  |  |  |
| 46 | **Entrega Parcial** | 2014-03-10 A → 2014-03-28 A (+18d) | 2014-03-25 → 2014-04-10 A (+16d) | 12d → 10d | 75% → 100% | 4d → none |  |  |
| 47 | **Instalação de servidor virtual** | 2014-03-10 A → 2014-03-28 A (+18d) | 2014-03-13 A → 2014-04-01 A (+19d) | 4d → 3d |  |  |  |  |
| 48 | Criação de estrutura de maquina virtual diferente de Windows (R2) | 2014-03-10 A → 2014-03-28 A (+18d) | 2014-03-11 A → 2014-03-28 A (+17d) | 2d → 1d |  |  |  |  |
| 49 | Instalação do s.o. Linux (R2) | 2014-03-12 A → 2014-03-31 A (+19d) | 2014-03-13 A → 2014-04-01 A (+19d) |  |  |  |  |  |
| 50 | **Criação de partições/ filesystems e usuários** | 2014-03-14 A → 2014-04-02 A (+19d) | 2014-03-17 A → 2014-04-03 A (+17d) |  |  |  |  |  |
| 51 | Criação de filesystems e usuários Unix/Linux (R2) | 2014-03-14 A → 2014-04-02 A (+19d) | 2014-03-17 A → 2014-04-03 A (+17d) |  |  |  |  |  |
| 52 | **Instalação/ Configuração de Oracle Client 11g** | 2014-03-18 A → 2014-04-04 A (+17d) | 2014-03-19 A → 2014-04-04 A (+16d) | 2d → 1d |  |  |  |  |
| 53 | Instalação de cliente Oracle Client 11g | 2014-03-18 A → 2014-04-04 A (+17d) | 2014-03-19 A → 2014-04-04 A (+16d) | 2d → 1d |  |  |  |  |
| 54 | **Implementação de Backup** | 2014-03-18 A → 2014-04-04 A (+17d) | 2014-03-21 → 2014-04-09 A (+19d) |  | 50% → 100% | 6d → none |  |  |
| 55 | Implementação de Backup R2 | 2014-03-18 A → 2014-04-04 A (+17d) | 2014-03-21 → 2014-04-09 A (+19d) |  | 50% → 100% | 6d → none |  |  |
| 56 | **Implementação de Monitoração** | 2014-03-20 A → 2014-04-07 A (+18d) | 2014-03-25 → 2014-04-10 A (+16d) |  | 50% → 100% | 4d → none |  |  |
| 57 | Implementação de Monitoração R2 | 2014-03-20 A → 2014-04-07 A (+18d) | 2014-03-25 → 2014-04-10 A (+16d) |  | 50% → 100% | 4d → none |  |  |
| 58 | **Validação/ Aceite da Entrega Parcial Ambiente: DEV - Camada: APLICAÇÃO Servidor(es): RAUPDX01 e RAUDX01** | 2014-03-26 → 2014-04-11 A (+16d) | 2014-03-27 → 2014-04-14 A (+18d) |  | 0% → 100% | 12d → none |  |  |
| 59 | Validação/ Aceite da Entrega Parcial Ambiente | 2014-03-26 → 2014-04-11 A (+16d) | 2014-03-26 → 2014-04-11 A (+16d) |  | 0% → 100% | 12d → none |  |  |
| 60 | Aceite da Entrega Parcial | 2014-03-27 → 2014-04-14 A (+18d) | 2014-03-27 → 2014-04-14 A (+18d) |  | 0% → 100% | 12d → none |  |  |
| 61 | **Entrega Final** | 2014-03-26 → 2014-04-11 A (+16d) | 2014-04-04 → 2014-04-25 A (+21d) |  | 0% → 100% | 4d → none |  |  |
| 62 | **Certificação da Implantação** | 2014-03-26 → 2014-04-11 A (+16d) | 2014-04-04 → 2014-04-25 A (+21d) |  | 0% → 100% | 4d → none |  |  |
| 63 | Certificação da Implantação R2 | 2014-03-26 → 2014-04-11 A (+16d) | 2014-04-04 → 2014-04-25 A (+21d) |  | 0% → 100% | 4d → none |  |  |
| 64 | **Validação/Aceite da Entrega Final Ambiente: DEV - Camada: APLICAÇÃO Servidor(es): RADPDX01 e RAUDX01** | 2014-04-07 → 2014-04-28 A (+21d) | 2014-04-08 → 2014-04-29 A (+21d) |  | 0% → 100% | 4d → none |  |  |
| 65 | Validação/ Aceite da Entrega Final Ambiente | 2014-04-07 → 2014-04-28 A (+21d) | 2014-04-07 → 2014-04-28 A (+21d) |  | 0% → 100% | 4d → none |  |  |
| 66 | Aceite da Entrega Final | 2014-04-08 → 2014-04-29 A (+21d) | 2014-04-08 → 2014-04-29 A (+21d) |  | 0% → 100% | 4d → none |  |  |
| 67 | **ARS Filhos Instalação/ Configuração - Ambiente: DEV - Camada: BANCO DE DADOS Servidor(es): ORAHX02A, ORAHX02B - BD: RAPDEV01 e RAUDEV01** | 2014-02-27 A → 2014-03-25 A (+26d) | 2014-04-11 → 2014-04-29 A (+18d) | 29d → 23d | 45% → 100% | 1d → none |  |  |
| 68 | Abertura dos ARSs Filhos | 2014-02-27 A → 2014-03-25 A (+26d) | 2014-03-07 A → 2014-03-27 A (+20d) | 4d → 3d |  |  |  | resources Luciana → Luciana; Thasio |
| 69 | **Entrega Parcial** | 2014-03-10 A → 2014-03-28 A (+18d) | 2014-03-28 → 2014-04-10 A (+13d) | 15d → 10d | 61% → 100% | 0d → none |  |  |
| 70 | **Configurção em Servidor Físico** | 2014-03-10 A → 2014-03-28 A (+18d) | 2014-03-12 A → 2014-04-01 A (+20d) |  |  |  |  |  |
| 71 | Criação de estrutura de maquina virtual diferente de Windows (R2) | 2014-03-10 A → 2014-03-28 A (+18d) | 2014-03-10 A → 2014-03-28 A (+18d) |  |  |  |  |  |
| 72 | Instalação do s.o. Linux (R2) | 2014-03-11 A → 2014-03-31 A (+20d) | 2014-03-12 A → 2014-04-01 A (+20d) |  |  |  |  |  |
| 73 | **Criação de partições/ filesystems e usuários** | 2014-03-13 A → 2014-04-02 A (+20d) | 2014-03-14 A → 2014-04-03 A (+20d) |  |  |  |  |  |
| 74 | Criação de filesystems e usuários Unix/Linux (R2) | 2014-03-13 A → 2014-04-02 A (+20d) | 2014-03-14 A → 2014-04-03 A (+20d) |  |  |  |  |  |
| 75 | **Instalação/ Configuração de banco de dados** | 2014-03-13 A → 2014-04-02 A (+20d) | 2014-03-24 → 2014-04-04 A (+11d) | 8d → 3d | 50% → 100% | 0d → none |  |  |
| 76 | Instalação de Oracle Clusterware (Oracle RAC) | 2014-03-13 A → 2014-04-02 A (+20d) | 2014-03-13 A → 2014-04-02 A (+20d) |  |  |  |  |  |
| 77 | Instalação de binário | 2014-03-14 A → 2014-04-03 A (+20d) | 2014-03-17 A → 2014-04-03 A (+17d) | 2d → 1d |  |  |  |  |
| 78 | Criação de instância / banco | 2014-03-18 A → 2014-04-04 A (+17d) | 2014-03-18 → 2014-04-04 A (+17d) |  | 50% → 100% | 0d → none |  |  |

| ID | Task | Start | Finish | Duration | Complete | Total float | Predecessors | Other |
| --- | --- | --- | --- | --- | --- | --- | --- | --- |
| 79 | Criação de schema (somente BD Oracle) | 2014-03-18 A → 2014-04-04 A (+17d) | 2014-03-18 A → 2014-04-04 A (+17d) |  |  |  |  |  |
| 80 | **Implementação de Backup** | 2014-03-17 A → 2014-04-04 A (+18d) | 2014-03-20 → 2014-04-09 A (+20d) |  | 50% → 100% | 6d → none |  |  |
| 81 | Implementação de Backup R2 | 2014-03-17 A → 2014-04-04 A (+18d) | 2014-03-20 → 2014-04-09 A (+20d) |  | 50% → 100% | 6d → none |  |  |
| 82 | **Implementação de Monitoração** | 2014-03-25 A → 2014-04-07 A (+13d) | 2014-03-28 → 2014-04-10 A (+13d) |  | 50% → 100% | 0d → none |  |  |
| 83 | Implementação de Monitoração R2 | 2014-03-25 A → 2014-04-07 A (+13d) | 2014-03-28 → 2014-04-10 A (+13d) |  | 50% → 100% | 0d → none |  |  |
| 84 | **Validação/ Aceite da Entrega Parcial Ambiente: DEV - Camada: BANCO DE DADOS Servidor(es): ORAHX02 A/B; BD: RAPDEV01 e RAUDEV01** | 2014-03-31 → 2014-04-11 A (+11d) | 2014-04-02 → 2014-04-14 A (+12d) | 3d → 2d | 0% → 100% | 8d → none |  |  |
| 85 | Validação/ Aceite da Entrega Parcial Ambiente | 2014-03-31 → 2014-04-11 A (+11d) | 2014-04-01 → 2014-04-11 A (+10d) | 2d → 1d | 0% → 100% | 8d → none |  |  |
| 86 | Aceite da Entrega Parcial | 2014-04-02 → 2014-04-14 A (+12d) | 2014-04-02 → 2014-04-14 A (+12d) |  | 0% → 100% | 8d → none |  |  |
| 87 | **Entrega Final** | 2014-03-31 → 2014-04-11 A (+11d) | 2014-04-09 → 2014-04-25 A (+16d) |  | 0% → 100% | 0d → none |  |  |
| 88 | **Certificação da Implantação** | 2014-03-31 → 2014-04-11 A (+11d) | 2014-04-09 → 2014-04-25 A (+16d) |  | 0% → 100% | 0d → none |  |  |
| 89 | Certificação da Implantação R2 | 2014-03-31 → 2014-04-11 A (+11d) | 2014-04-09 → 2014-04-25 A (+16d) |  | 0% → 100% | 0d → none | 75 → 79 |  |
| 90 | **Validação/ Aceite da Entrega Final Ambiente: DEV - Camada: BANCO DE DADOS Servidor(es): BD: RAPDEV01 e RAUDEV01** | 2014-04-10 → 2014-04-28 A (+18d) | 2014-04-11 → 2014-04-29 A (+18d) |  | 0% → 100% | 0d → none |  | was named Validação/Aceite da Entrega Final Ambiente: DEV - Camada: BANCO DE DADOS Servidor(es): BD: RAPDEV01 e RAUDEV01 |
| 91 | Validação/ Aceite da Entrega Final Ambiente | 2014-04-10 → 2014-04-28 A (+18d) | 2014-04-10 → 2014-04-28 A (+18d) |  | 0% → 100% | 0d → none |  |  |
| 92 | Aceite da Entrega Final | 2014-04-11 → 2014-04-29 A (+18d) | 2014-04-11 → 2014-04-29 A (+18d) |  | 0% → 100% | 0d → none |  |  |
| 96 | **Solicitação de Operação Assistida** | 2014-04-16 → 2014-05-05 A (+19d) | 2014-05-06 → 2014-05-30 A (+24d) | 10d → 20d | 0% → 100% | 0d → none |  |  |
| 97 | Realização de Operação Assistida | 2014-04-16 → 2014-05-05 A (+19d) | 2014-05-06 → 2014-05-30 A (+24d) | 10d → 20d | 0% → 100% | 0d → none | none → 94 |  |
| 280 | Colocar em Produção | 2014-04-15 → 2015-03-13 (+332d) | 2014-04-15 → 2015-03-16 (+335d) | 1d → 2d |  |  | 43, Implementação de Backup de Negócio → 278, 217, 247 | resources Julio Silva; PMO → none |
| 281 | **Acompanhamento Pós-Produção** | 2014-04-16 → 2015-03-17 (+335d) | 2014-05-06 → 2015-04-15 (+344d) | 10d → 21d |  |  | 280 → none |  |
| 294 | Conclusão | 2014-05-07 → 2014-06-02 (+26d) | 2014-05-07 → 2014-06-02 (+26d) |  |  | 0d → 245.5d |  |  |
