# MPP_BR.A.16.POI.039.00 - PROJETO FRAUDE OI

How a schedule from MS Project changed from version to version. A marks actual dates.

## Version 1 (data date 2018-01-19, saved 2018-01-23, file PLN_BR.A.16.POI.039.00_P_003 - RAID_FMS_Onda2_19012018.mpp)

Note of the change: up 201802081255

| ID | WBS | Task | Duration | Start | Finish | Predecessors | Complete | Total float | Constraint |
| --- | --- | --- | --- | --- | --- | --- | --- | --- | --- |
| 1 | 1 | **Projeto RAID FMS OI - Programa 1** | 341d | 2017-09-04 A | 2019-01-22 |  | 35% | 253d |  |
| 2 | 1.1 | **Aquisição de Infra-estrutura** | 235d | 2017-09-18 A | 2018-08-27 |  | 75% | 350d |  |
| 3 | 1.1.1 | **Acessos Lógicos** | 10d | 2017-09-18 A | 2017-09-29 A |  | 100% |  |  |
| 4 |  | Enviar dados de acesso e contas de serviço | 3d | 2017-09-18 A | 2017-09-20 A |  | 100% |  |  |
| 5 |  | Liberar acessos | 7d | 2017-09-21 A | 2017-09-29 A | 4 | 100% |  |  |
| 6 |  | Acessos Lógicos Liberados | 0d | 2017-09-29 A | 2017-09-29 A | 5 | 100% |  |  |
| 7 |  | Ambiente de DEV disponível (RAID FMS) | 18d | 2017-12-04 A | 2017-12-29 A |  | 100% |  | start no earlier than 2017-12-04 |
| 8 |  | Instalação Vanila Ambiente DEV (RAID FMS) | 3d | 2017-12-29 A | 2018-01-04 A | 7 | 100% |  | start no earlier than 2017-12-11 |
| 9 |  | Ambiente de DEV contingência disponível (RAID UC - HML) | 1d | 2017-10-30 A | 2017-10-30 A |  | 100% |  | must finish on 2017-10-26 |
| 10 |  | Instalação Vanila DEV contingência (RAID UC - HML) | 4d | 2017-10-30 A | 2017-11-03 A | 9 | 100% |  |  |
| 11 |  | Ambiente de HML disponível (RAID FMS) | 1d | 2018-05-15 | 2018-05-15 |  |  | 418d | start no earlier than 2018-05-15 |
| 12 |  | Instalação Vanila Ambiente HML (RAID FMS) | 5d | 2018-05-16 | 2018-05-22 | 11 |  | 418d |  |
| 13 |  | Ambiente de PRD disponível (RAID FMS) | 1d | 2018-08-20 | 2018-08-20 |  |  | 350d | start no earlier than 2018-08-20 |
| 14 |  | Instalação Vanila Ambiente PRD (RAID FMS) | 5d | 2018-08-21 | 2018-08-27 | 13 |  | 350d |  |
| 15 | 1.2 | **ONDA 0: Planejamento e Setup** | 90.12d | 2017-09-18 A | 2018-01-30 |  | 99% | 494.88d |  |
| 16 |  | Acessos Físicos Liberados | 0d | 2017-09-18 A | 2017-09-18 A |  | 100% |  |  |
| 17 |  | Elaborar Plano de Desenvolvimento do Projeto (PDP) | 26d | 2017-09-26 A | 2017-11-03 A |  | 100% |  | finish no earlier than 2017-11-03 |
| 18 |  | Elaborar Material kick-off | 4d | 2017-10-09 A | 2017-10-13 A |  | 100% |  |  |
| 19 |  | Reunião de Kick-off | 0d | 2018-01-30 | 2018-01-30 | 17, 18 |  | 0d | must start on 2018-01-30 |
| 20 |  | Onda 0 - Planejamento e Setup - Finalizada | 0d | 2018-01-30 | 2018-01-30 | 19 |  | 494.88d |  |
| 21 | 1.3 | **Treinamento - Conceitos Básicos - Teoria (FMS-01)** | 6d | 2017-10-10 A | 2017-10-19 |  | 100% |  |  |
| 22 |  | Elaborar material | 4d | 2017-10-10 A | 2017-10-17 A |  | 100% |  |  |
| 23 |  | Ambiente disponibilizado | 0d | 2017-10-17 A | 2017-10-17 A | 22 | 100% |  |  |
| 24 |  | Realizar Treinamento | 1d | 2017-10-18 A | 2017-10-18 A | 23 | 100% |  |  |
| 25 |  | Treinamento Finalizado | 0d | 2017-10-18 A | 2017-10-18 A | 24 | 100% |  |  |
| 26 | 1.4 | **ONDA 2: TV Offline (Quick Wins - Motor de Fraude)** | 87d | 2017-10-04 A | 2018-02-09 |  | 79% |  |  |
| 27 | 1.4.1 | **Detalhamento de regras de negócio e critérios de aceitação** | 12d | 2017-10-04 A | 2017-10-23 A |  | 100% |  |  |
| 28 |  | 1o lote de regras para validação TI/WEDO (fontes de dados ainda indefinidas) | 3d | 2017-10-04 A | 2017-10-06 A |  | 100% |  |  |
| 29 |  | 2o lote de regras para validação TI/WEDO | 8d | 2017-10-04 A | 2017-10-17 A | 28 | 100% |  |  |
| 30 |  | Entrega versão final da documentação de regras (Definir entregas Onda) | 1d | 2017-10-23 A | 2017-10-23 A | 29 | 100% |  | start no earlier than 2017-10-23 |
| 31 |  | Validação do detalhamento de regras e criterios de aceitação | 3d | 2017-10-24 A | 2017-10-26 A | 29 | 100% |  | start no earlier than 2017-10-24 |
| 32 |  | Elaboração DAS de Arquitetura-Oi | 8d | 2017-10-13 A | 2017-10-25 A |  | 100% |  | start no earlier than 2017-10-17 |
| 33 | 1.4.4 | **Análise (Desenho de Solução, Plano de Testes e Critérios de Aceitação)** | 22d | 2017-10-23 A | 2017-11-23 |  | 98% |  | start no earlier than 2017-10-23 |
| 34 |  | Elaboração de DSOL | 12d | 2017-10-23 A | 2017-11-08 A |  | 100% |  |  |
| 35 |  | Aprovação de DSOL | 1d | 2017-11-08 A | 2017-11-09 A | 34FF | 100% |  |  |
| 36 |  | Elaboração de Plano de Testes Consolidado | 8d | 2017-11-09 A | 2017-11-21 | 34, 30 | 95% | 1.9d |  |
| 37 |  | Aprovação de Plano de Testes Consolidado | 2d | 2017-11-22 A | 2017-11-23 | 36 | 95% | 0d |  |
| 38 | 1.4.5 | **Construção e Testes Unitários (DEV contingência - RAID UC/HML)** | 31d | 2017-11-13 A | 2017-12-27 A | 10, 35, 33 | 100% |  | start no earlier than 2017-11-13 |
| 39 |  | Carregamentos | 31d | 2017-11-13 A | 2017-12-27 A |  | 100% |  |  |
| 40 |  | Motor de Fraude | 31d | 2017-11-13 A | 2017-12-27 A |  | 100% |  |  |
| 41 |  | Front End & Workflow | 31d | 2017-11-13 A | 2017-12-27 A |  | 100% |  |  |
| 42 |  | Relatórios | 31d | 2017-11-13 A | 2017-12-27 A |  | 100% |  |  |
| 43 |  | Atualização de Servidores DEV Definitivo no CMDB [agente DISCOVER] | 4d | 2017-12-04 | 2017-12-08 |  |  | 529.88d | start no earlier than 2017-12-04 |
| 44 |  | Testes de Sistema (DEV contingência - RAID UC / HML) | 7d | 2017-12-29 A | 2018-01-09 A | 38FS+1d | 100% |  |  |
| 45 |  | Pacote de Implantação (Criação e Instalação: DEV - RAID FMS) | 2d | 2018-01-08 A | 2018-01-09 A | 44FF | 100% |  |  |
| 46 |  | UAT (DEV - RAID FMS) | 10d | 2018-01-10 A | 2018-01-23 | 8, 44, 45 | 95% | 0d |  |
| 47 | 1.4.10 | **Pré-Implantação** | 41d | 2017-12-04 A | 2018-02-01 |  | 32% | 492.88d |  |
| 48 | 1.4.10.1 | **Definição responsabilidades N1/N2 [WEDO/Operações]** | 12.12d | 2018-01-02 | 2018-01-18 |  | 57% |  |  |
| 49 |  | Definição de arvore de atendimento remedy [CCO/N1/N2/N3] | 4d | 2017-12-28 | 2018-01-04 | 38 |  | 512.88d | start no earlier than 2017-12-28 |
| 50 |  | Elaboração de matrix RACI [responsáveis x atividades] | 4d | 2017-12-28 | 2018-01-04 | 38 |  | 512.88d | start no earlier than 2017-12-28 |
| 51 |  | Elaboração Runbook | 4d | 2017-12-28 A | 2018-01-04 A | 38 | 100% |  | start no earlier than 2017-12-28 |
| 52 |  | Validar/Aprovar Runbook | 4d | 2018-01-05 | 2018-01-11 | 51 |  | 7.88d | start no earlier than 2018-01-05 |
| 53 |  | Elaboração de MOP | 13d | 2017-12-28 A | 2018-01-17 A | 38 | 100% |  | start no earlier than 2017-12-28 |
| 54 |  | Workshop com Operações | 1d | 2018-01-17 | 2018-01-18 | 53 |  | 502.88d | finish no earlier than 2018-01-05 |
| 55 |  | Construção de Scripts de Monitoração (RAID ou Control-M?) | 14d | 2018-01-12 | 2018-02-01 | 52 |  | 6.88d | start no earlier than 2018-01-12 |
| 56 |  | Testes de Conectividade e Transmissão [liberação portas de firewall e gestão de acesso] | 4d | 2017-12-04 | 2017-12-08 |  |  | 43.88d | start no earlier than 2017-12-04 |
| 57 |  | Elaborar PLIM | 2d | 2018-01-10 A | 2018-01-11 A | 44 | 100% |  |  |
| 58 |  | Validar/Aprovar PLIM | 0d | 2018-01-11 A | 2018-01-11 A | 57 | 100% |  |  |
| 59 |  | Abrir de CRQ | 1d | 2018-01-11 A | 2018-01-11 A | 58FF | 100% |  |  |
| 60 |  | Aprovar de CRQ | 5d | 2018-01-12 | 2018-01-18 | 59 |  | 4d |  |
| 61 |  | Planejamento/Aprovação de GMUD | 5d | 2018-01-24 | 2018-01-30 | 60, 46 |  | 1d |  |
| 62 |  | Pacote de Implantação (Criação e Instalação: DEV - RAID FMS) | 2d | 2018-01-24 | 2018-01-25 | 46 |  | 4d |  |
| 63 | 1.4.11 | **Implantação** | 7d | 2018-01-31 | 2018-02-08 |  |  | 1d |  |
| 64 |  | Entrada em Produção (DEV - RAID FMS) | 1d | 2018-01-31 | 2018-01-31 | 62, 61, 46, 8 |  | 1d |  |
| 65 |  | Operação Assistida | 5d | 2018-02-02 | 2018-02-08 | 64FS+1d |  | 1d |  |
| 66 |  | Entrega da Especificação Técnica | 5d | 2018-02-02 | 2018-02-08 | 65SS |  | 487d |  |
| 67 |  | Onda 2 - TV off line - Finalizada | 0d | 2018-02-08 | 2018-02-08 | 66, 65 |  | 487d |  |
| 68 |  | WAC - Criação de Modelos (calibragem dos pesos para geração do score) | 35d | 2018-02-01 | 2018-03-23 | 64 |  | 458d |  |
| 69 | 1.8 | **ONDA 3: Oi Total 2P + Fixa R1 2P** | 44d | 2018-01-24 | 2018-03-28 |  |  | 0d |  |
| 70 |  | Análise (Desenho de Solução, Especificação Técnica, Cenários de Teste e Critérios de Aceitação) | 9d | 2018-01-29 | 2018-02-08 | 71 |  | 0d |  |

| ID | WBS | Task | Duration | Start | Finish | Predecessors | Total float |
| --- | --- | --- | --- | --- | --- | --- | --- |
| 71 |  | Análise Transact | 3d | 2018-01-24 | 2018-01-26 | 46 | 0d |
| 72 |  | Construção e Testes Unitários | 8d | 2018-02-09 | 2018-02-22 | 70 | 0d |
| 73 |  | Construção e Testes Unitários - Transact | 7d | 2018-02-23 | 2018-03-05 | 72 | 0d |
| 74 |  | Elaborar Runbook | 2d | 2018-03-06 | 2018-03-07 | 73 | 470d |
| 75 |  | Testes de Sistema | 4d | 2018-03-06 | 2018-03-09 | 73 | 0d |
| 76 |  | Testes Integrados | 3d | 2018-03-12 | 2018-03-14 | 75 | 0d |
| 77 |  | UAT | 3d | 2018-03-15 | 2018-03-19 | 76 | 0d |
| 78 |  | Elaborar PLIM | 2d | 2018-03-15 | 2018-03-16 | 76 | 463d |
| 79 |  | Implantação | 2d | 2018-03-20 | 2018-03-21 | 77 | 0d |
| 80 |  | Operação Assistida | 5d | 2018-03-22 | 2018-03-28 | 79 | 455d |
| 81 |  | Onda 3 - Oi Total 2P + Fixa R1 1P - Finalizada | 0d | 2018-03-28 | 2018-03-28 | 80 | 455d |
| 82 |  | WAC - Analytics (construção dos modelos) | 35d | 2018-02-07 | 2018-03-29 |  |  |
| 83 | 1.10 | **Treinamento Usuário (FMS-04)** | 8d | 2018-02-16 | 2018-02-27 |  | 476d |
| 84 |  | Elaborar material | 5d | 2018-02-16 | 2018-02-22 | 72SS+3d | 476d |
| 85 |  | Ambiente disponibilizado | 0d | 2018-02-22 | 2018-02-22 | 84 | 476d |
| 86 |  | Realizar Treinamento | 3d | 2018-02-23 | 2018-02-27 | 85 | 476d |
| 87 |  | Treinamento Usuário Finalizado | 0d | 2018-02-27 | 2018-02-27 | 86 | 476d |
| 88 | 1.11 | **ONDAS 4, 5 e 6: Oi Total (3P) + Móvel Puro Online + Oi Total Online (4P)** | 34d | 2018-03-22 | 2018-05-10 |  | 0d |
| 89 |  | Análise (Desenho de Solução, Especificação Técnica, Cenários de Teste e Critérios de Aceitação) | 7d | 2018-03-22 | 2018-04-02 | 79 | 0d |
| 90 |  | Construção e Testes Unitários | 15d | 2018-04-03 | 2018-04-23 | 89 | 0d |
| 91 |  | Elaborar Runbook | 2d | 2018-04-24 | 2018-04-25 | 90 | 436d |
| 92 |  | Testes de Sistema | 4d | 2018-04-24 | 2018-04-27 | 90 | 0d |
| 93 |  | Testes Integrados | 2d | 2018-04-30 | 2018-05-02 | 92 | 0d |
| 94 |  | UAT | 4d | 2018-05-03 | 2018-05-08 | 93 | 0d |
| 95 |  | Elaborar PLIM | 2d | 2018-05-03 | 2018-05-04 | 93 | 430d |
| 96 |  | Implantação | 2d | 2018-05-09 | 2018-05-10 | 94 | 0d |
| 97 |  | Ondas 4, 5 e 6 - Oi Total 3P + Móvel Puro Online + Oi Total Online - Finalizada | 0d | 2018-05-10 | 2018-05-10 | 96 | 0d |
| 98 | 1.12 | **ONDA 7.1: Integração Bases de Dados (CRM)** | 57d | 2018-05-11 | 2018-07-31 |  | 0d |
| 99 |  | Análise (Desenho de Solução, Especificação Técnica, Cenários de Teste e Critérios de Aceitação) | 10d | 2018-05-11 | 2018-05-24 | 97 | 0d |
| 100 |  | Construção e Testes Unitários | 25d | 2018-05-25 | 2018-06-29 | 99 | 0d |
| 101 |  | Elaborar Runbook | 2d | 2018-07-02 | 2018-07-03 | 100 | 389d |
| 102 |  | Testes de Sistema | 5d | 2018-07-02 | 2018-07-06 | 100 | 0d |
| 103 |  | Testes Integrados - Plano e Execução | 10d | 2018-07-09 | 2018-07-20 | 102 | 0d |
| 104 |  | UAT | 5d | 2018-07-23 | 2018-07-27 | 103 | 0d |
| 105 |  | Elaborar PLIM | 2d | 2018-07-23 | 2018-07-24 | 103 | 374d |
| 106 |  | Implantação | 2d | 2018-07-30 | 2018-07-31 | 104 | 0d |
| 107 |  | Onda 7.1 - Integração Bases de Dados - Finalizada | 0d | 2018-07-31 | 2018-07-31 | 106 | 0d |
| 108 | 1.13 | **ONDA 7.2: Integração Bases de Dados (Inadimplência e Recargas)** | 31d | 2018-08-01 | 2018-09-13 |  | 0d |
| 109 |  | Análise (Desenho de Solução, Especificação Técnica, Cenários de Teste e Critérios de Aceitação) | 5d | 2018-08-01 | 2018-08-07 | 107 | 0d |
| 110 |  | Construção e Testes Unitários | 15d | 2018-08-08 | 2018-08-28 | 109 | 0d |
| 111 |  | Elaborar Runbook | 2d | 2018-08-29 | 2018-08-30 | 110 | 347d |
| 112 |  | Testes de Sistema | 3d | 2018-08-29 | 2018-08-31 | 110 | 0d |
| 113 |  | Testes Integrados - Plano e Execução | 3d | 2018-09-03 | 2018-09-05 | 112 | 0d |
| 114 |  | UAT | 3d | 2018-09-06 | 2018-09-11 | 113 | 0d |
| 115 |  | Elaborar PLIM | 2d | 2018-09-06 | 2018-09-10 | 113 | 341d |
| 116 |  | Implantação | 2d | 2018-09-12 | 2018-09-13 | 114 | 0d |
| 117 |  | Onda 7.2 - Integração Bases de Dados - Finalizada | 0d | 2018-09-13 | 2018-09-13 | 116 | 338d |
| 118 | 1.14 | **Treinamento Administração Técnica (FMS-02)** | 8d | 2018-08-08 | 2018-08-17 |  | 356d |
| 119 |  | Elaborar material | 5d | 2018-08-08 | 2018-08-14 | 110SS | 356d |
| 120 |  | Ambiente disponibilizado | 0d | 2018-08-14 | 2018-08-14 | 119 | 356d |
| 121 |  | Realizar Treinamento | 3d | 2018-08-15 | 2018-08-17 | 120 | 356d |
| 122 |  | Treinamento Administração Técnica Finalizado | 0d | 2018-08-17 | 2018-08-17 | 121 | 356d |
| 123 | 1.15 | **Treinamento Administração Funcional (FMS-03)** | 8d | 2017-09-04 | 2017-09-14 |  | 586d |
| 124 |  | Elaborar material | 5d | 2017-09-04 | 2017-09-11 |  | 586d |
| 125 |  | Ambiente disponibilizado | 0d | 2017-09-11 | 2017-09-11 | 124 | 586d |
| 126 |  | Realizar Treinamento | 3d | 2017-09-12 | 2017-09-14 | 125 | 586d |
| 127 |  | Treinamento Administração Funcional Finalizado | 0d | 2017-09-14 | 2017-09-14 | 126 | 586d |
| 128 | 1.16 | **ONDA 9: Telas para Operação de Crédito** | 38d | 2018-09-14 | 2018-11-09 |  | 300d |
| 129 |  | Análise (Desenho de Solução, Especificação Técnica, Cenários de Teste e Critérios de Aceitação) | 5d | 2018-09-14 | 2018-09-20 | 116 | 300d |
| 130 |  | Construção e Testes Unitários | 15d | 2018-09-21 | 2018-10-11 | 129 | 300d |
| 131 |  | Elaborar Runbook | 2d | 2018-10-15 | 2018-10-17 | 130 | 316d |
| 132 |  | Testes de Sistema | 5d | 2018-10-15 | 2018-10-22 | 130 | 300d |
| 133 |  | Testes Integrados | 1d | 2018-10-23 | 2018-10-23 | 132 | 300d |
| 134 |  | UAT | 5d | 2018-10-24 | 2018-10-30 | 133 | 300d |
| 135 |  | Elaborar PLIM | 2d | 2018-10-24 | 2018-10-25 | 133 | 310d |
| 136 |  | Implantação | 2d | 2018-10-31 | 2018-11-01 | 134 | 300d |
| 137 |  | Operação Assistida | 5d | 2018-11-05 | 2018-11-09 | 136 | 300d |
| 138 |  | Onda 9 - Telas para Operação de Crédito - Finalizada | 0d | 2018-11-09 | 2018-11-09 | 137 | 300d |
| 139 | 1.17 | **ONDA 10: Oi Controle Sem Fatura Online** | 45d | 2018-09-14 | 2018-11-21 |  | 0d |
| 140 |  | Análise (Desenho de Solução, Especificação Técnica, Cenários de Teste e Critérios de Aceitação) | 10d | 2018-09-14 | 2018-09-27 | 116 | 0d |

| ID | WBS | Task | Duration | Start | Finish | Predecessors | Total float |
| --- | --- | --- | --- | --- | --- | --- | --- |
| 141 |  | Construção e Testes Unitários | 18d | 2018-09-28 | 2018-10-25 | 140 | 0d |
| 142 |  | Elaborar Runbook | 2d | 2018-10-26 | 2018-10-29 | 141 | 308d |
| 143 |  | Testes de Sistema | 4d | 2018-10-26 | 2018-10-31 | 141 | 0d |
| 144 |  | Testes Integrados | 3d | 2018-11-01 | 2018-11-06 | 143 | 0d |
| 145 |  | UAT | 4d | 2018-11-07 | 2018-11-12 | 144 | 299d |
| 146 |  | Elaborar PLIM | 2d | 2018-11-07 | 2018-11-08 | 144 | 0d |
| 147 |  | Implantação | 3d | 2018-11-09 | 2018-11-13 | 146 | 0d |
| 148 |  | Operação Assistida | 5d | 2018-11-14 | 2018-11-21 | 147 | 293d |
| 149 |  | Onda 10 - Oi Controle Sem Fatura Online - Finalizada | 0d | 2018-11-21 | 2018-11-21 | 148 | 293d |
| 150 | 1.18 | **ONDA 8: Oi Fibra Online** | 10d | 2018-11-14 | 2018-11-28 |  | 288d |
| 151 |  | Análise (Desenho de Solução, Especificação Técnica, Cenários de Teste e Critérios de Aceitação) | 3d | 2018-11-14 | 2018-11-19 | 147 | 288d |
| 152 |  | Construção e Testes Unitários | 3d | 2018-11-20 | 2018-11-22 | 151 | 288d |
| 153 |  | Elaborar Runbook | 1d | 2018-11-20 | 2018-11-20 | 151 | 294d |
| 154 |  | Testes de Sistema | 1d | 2018-11-23 | 2018-11-23 | 152 | 288d |
| 155 |  | Testes Integrados | 1d | 2018-11-26 | 2018-11-26 | 154 | 288d |
| 156 |  | UAT | 1d | 2018-11-27 | 2018-11-27 | 155 | 289d |
| 157 |  | Elaborar PLIM | 1d | 2018-11-27 | 2018-11-27 | 155 | 288d |
| 158 |  | Implantação | 1d | 2018-11-28 | 2018-11-28 | 157 | 288d |
| 159 |  | Onda 8 - Oi Fibra Online - Finalizada | 0d | 2018-11-28 | 2018-11-28 | 158 | 288d |
| 160 | 1.19 | **ONDA 11: Fixa R2 Offline** | 25d | 2018-11-14 | 2018-12-19 |  | 253d |
| 161 |  | Análise (Desenho de Solução, Especificação Técnica, Cenários de Teste e Critérios de Aceitação) | 5d | 2018-11-14 | 2018-11-21 | 147 | 253d |
| 162 |  | Construção e Testes Unitários | 10d | 2018-11-22 | 2018-12-05 | 161 | 253d |
| 163 |  | Elaborar Runbook | 2d | 2018-12-06 | 2018-12-07 | 162 | 281d |
| 164 |  | Testes de Sistema | 4d | 2018-12-06 | 2018-12-11 | 162 | 253d |
| 165 |  | Testes Integrados | 2d | 2018-12-12 | 2018-12-13 | 164 | 253d |
| 166 |  | UAT | 3d | 2018-12-14 | 2018-12-18 | 165 | 274d |
| 167 |  | Elaborar PLIM | 2d | 2018-12-14 | 2018-12-17 | 165 | 253d |
| 168 |  | Implantação | 2d | 2018-12-18 | 2018-12-19 | 167 | 253d |
| 169 |  | Onda 11 - Fixa R2 Offline - Finalizada | 0d | 2018-12-19 | 2018-12-19 | 168 | 253d |
| 170 | 1.20 | **ONDA 12: Fixa R2 Online** | 20d | 2018-12-20 | 2019-01-22 |  | 253d |
| 171 |  | Análise (Desenho de Solução, Especificação Técnica, Cenários de Teste e Critérios de Aceitação) | 5d | 2018-12-20 | 2018-12-28 | 169 | 253d |
| 172 |  | Construção e Testes Unitários | 7d | 2019-01-02 | 2019-01-10 | 171 | 253d |
| 173 |  | Elaborar Runbook | 2d | 2019-01-11 | 2019-01-14 | 172 | 259d |
| 174 |  | Testes de Sistema | 3d | 2019-01-11 | 2019-01-15 | 172 | 253d |
| 175 |  | Testes Integrados | 1d | 2019-01-16 | 2019-01-16 | 174 | 253d |
| 176 |  | UAT | 3d | 2019-01-17 | 2019-01-21 | 175 | 254d |
| 177 |  | Elaborar PLIM | 2d | 2019-01-17 | 2019-01-18 | 175 | 253d |
| 178 |  | Implantação | 2d | 2019-01-21 | 2019-01-22 | 177 | 253d |
| 179 |  | Operação Assistida | 0d | 2019-01-22 | 2019-01-22 | 178 | 253d |
| 180 |  | Onda 12 - Fixa R2 Online - Finalizada | 0d | 2019-01-22 | 2019-01-22 | 179 | 253d |
| 181 | 2 | **Projeto RAID FMS OI - Programa 2** | 317d | 2018-10-17 | 2020-01-24 |  | 0d |
| 182 | 2.1 | **ONDA 1: Planejamento e Setup** | 7d | 2018-11-14 | 2018-11-23 |  | 0d |
| 183 |  | Detalhamento (Macro Requisitos) | 7d | 2018-11-14 | 2018-11-23 | 147 | 291d |
| 184 |  | Revisão do Cronograma | 7d | 2018-11-14 | 2018-11-23 | 147 | 291d |
| 185 |  | Atualização PDP | 7d | 2018-11-14 | 2018-11-23 | 147 | 0d |
| 186 | 2.2 | **ONDA 1.1: Configuração Ambiente** | 30d | 2018-10-17 | 2018-11-29 |  | 0d |
| 187 |  | Integração Hadoop | 30d | 2018-10-17 | 2018-11-29 | 147 |  |
| 188 | 2.3 | **ONDAS 13 e 14: Fraude LDI + Roaming internacional Near Real Time** | 63d | 2018-11-26 | 2019-02-26 |  | 0d |
| 189 |  | Análise (Desenho de Solução, Especificação Técnica, Cenários de Teste e Critérios de Aceitação) | 12d | 2018-11-26 | 2018-12-11 | 185 | 0d |
| 190 |  | Construção e Testes Unitários | 29d | 2018-12-12 | 2019-01-25 | 189 | 203d |
| 191 |  | Elaborar Runbook | 3d | 2019-01-28 | 2019-01-30 | 190 | 247d |
| 192 |  | Testes de Sistema | 6d | 2019-01-28 | 2019-02-04 | 190 | 203d |
| 193 |  | Testes Integrados | 3d | 2019-02-05 | 2019-02-07 | 192 | 203d |
| 194 |  | UAT | 6d | 2019-02-08 | 2019-02-15 | 193 | 203d |
| 195 |  | Elaborar PLIM | 2d | 2019-02-08 | 2019-02-11 | 193 | 239d |
| 196 |  | Implantação | 2d | 2019-02-18 | 2019-02-19 | 194 | 203d |
| 197 |  | Operação Assistida | 5d | 2019-02-20 | 2019-02-26 | 196 | 228d |
| 198 |  | ONDAS 13 e 14: Fraude LDI + Roaming internacional Near Real Time - Finalizado | 0d | 2019-02-26 | 2019-02-26 | 197 | 228d |
| 199 | 2.4 | **Treinamento Help Desk (FMS-06)** | 4d | 2018-12-17 | 2018-12-20 |  | 272d |
| 200 |  | Elaborar material | 2d | 2018-12-17 | 2018-12-18 | 190SS+3d | 272d |
| 201 |  | Ambiente disponibilizado | 0d | 2018-12-18 | 2018-12-18 | 200 | 272d |
| 202 |  | Realizar Treinamento | 2d | 2018-12-19 | 2018-12-20 | 201 | 272d |
| 203 |  | Treinamento Usuário Finalizado | 0d | 2018-12-20 | 2018-12-20 | 202 | 272d |
| 204 | 2.5 | **ONDA 15: Alarmes Externos** | 30d | 2019-02-20 | 2019-04-04 |  | 203d |
| 205 |  | Análise (Desenho de Solução, Especificação Técnica, Cenários de Teste e Critérios de Aceitação) | 5d | 2019-02-20 | 2019-02-26 | 196 | 203d |
| 206 |  | Construção e Testes Unitários | 12d | 2019-02-27 | 2019-03-18 | 205 | 203d |
| 207 |  | Elaborar Runbook | 2d | 2019-03-19 | 2019-03-20 | 206 | 214d |
| 208 |  | Testes de Sistema | 3d | 2019-03-19 | 2019-03-21 | 206 | 203d |
| 209 |  | Testes Integrados | 1d | 2019-03-22 | 2019-03-22 | 208 | 203d |
| 210 |  | UAT | 3d | 2019-03-25 | 2019-03-27 | 209 | 209d |

| ID | WBS | Task | Duration | Start | Finish | Predecessors | Total float |
| --- | --- | --- | --- | --- | --- | --- | --- |
| 211 |  | Elaborar PLIM | 2d | 2019-03-25 | 2019-03-26 | 209 | 203d |
| 212 |  | Implantação | 2d | 2019-03-27 | 2019-03-28 | 211 | 203d |
| 213 |  | Operação Assistida | 5d | 2019-03-29 | 2019-04-04 | 212 | 203d |
| 214 |  | Onda 15 - Alarmes Externos - Finalizado | 0d | 2019-04-04 | 2019-04-04 | 213 | 203d |
| 215 | 2.6 | **ONDAS 16 e 18: Carga + Motor Uso - Tráfego (Móvel, Fixa, VOD, VoIP, TV)** | 105d | 2018-11-26 | 2019-04-29 |  | 0d |
| 216 |  | Análise (Desenho de Solução, Especificação Técnica, Cenários de Teste e Critérios de Aceitação) | 15d | 2018-11-26 | 2018-12-14 | 189SS | 0d |
| 217 |  | Construção e Testes Unitários | 60d | 2018-12-17 | 2019-03-18 | 216 | 0d |
| 218 |  | Elaborar Runbook | 2d | 2019-03-19 | 2019-03-20 | 217 | 214d |
| 219 |  | Testes de Sistema | 10d | 2019-03-19 | 2019-04-01 | 217 | 0d |
| 220 |  | Testes Integrados | 10d | 2019-04-02 | 2019-04-15 | 219 | 0d |
| 221 |  | UAT | 10d | 2019-04-16 | 2019-04-29 | 220 | 186d |
| 222 |  | Elaborar PLIM | 2d | 2019-04-16 | 2019-04-17 | 220 | 0d |
| 223 |  | Implantação | 2d | 2019-04-18 | 2019-04-19 | 222 | 0d |
| 224 |  | ONDAS 16 e 18: Carga + Motor Uso - Tráfego (Móvel, Fixa, VOD, VoIP, TV) - Finalizada | 0d | 2019-04-19 | 2019-04-19 | 223 | 0d |
| 225 | 2.7 | **ONDA 17: Motor Detecção - Tráfego** | 49d | 2019-04-22 | 2019-07-01 |  | 0d |
| 226 |  | Análise (Desenho de Solução, Especificação Técnica, Cenários de Teste e Critérios de Aceitação) | 10d | 2019-04-22 | 2019-05-06 | 224 | 0d |
| 227 |  | Construção e Testes Unitários | 23d | 2019-05-07 | 2019-06-06 | 226 | 0d |
| 228 |  | Elaborar Runbook | 2d | 2019-06-07 | 2019-06-10 | 227 | 157d |
| 229 |  | Testes de Sistema | 5d | 2019-06-07 | 2019-06-13 | 227 | 0d |
| 230 |  | Testes Integrados | 2d | 2019-06-14 | 2019-06-17 | 229 | 0d |
| 231 |  | UAT | 5d | 2019-06-18 | 2019-06-25 | 230 | 147d |
| 232 |  | Elaborar PLIM | 2d | 2019-06-18 | 2019-06-19 | 230 | 0d |
| 233 |  | Implantação | 2d | 2019-06-21 | 2019-06-24 | 232 | 0d |
| 234 |  | Operação Assistida | 5d | 2019-06-25 | 2019-07-01 | 233 | 0d |
| 235 |  | Onda 17 - Motor Detecção - Tráfego | 0d | 2019-07-01 | 2019-07-01 | 234 | 0d |
| 236 | 2.8 | **ONDA 19: Recargas Pre-Pago** | 15d | 2019-07-02 | 2019-07-22 |  | 0d |
| 237 |  | Análise (Desenho de Solução, Especificação Técnica, Cenários de Teste e Critérios de Aceitação) | 3d | 2019-07-02 | 2019-07-04 | 235 | 0d |
| 238 |  | Construção e Testes Unitários | 8d | 2019-07-05 | 2019-07-16 | 237 | 0d |
| 239 |  | Elaborar Runbook | 1d | 2019-07-17 | 2019-07-17 | 238 | 131d |
| 240 |  | Testes de Sistema | 1d | 2019-07-17 | 2019-07-17 | 238 | 0d |
| 241 |  | Testes Integrados | 1d | 2019-07-18 | 2019-07-18 | 240 | 0d |
| 242 |  | UAT | 1d | 2019-07-19 | 2019-07-19 | 241 | 129d |
| 243 |  | Elaborar PLIM | 1d | 2019-07-19 | 2019-07-19 | 241 | 0d |
| 244 |  | Implantação | 1d | 2019-07-22 | 2019-07-22 | 243 | 0d |
| 245 |  | Onda 19 - Recargas Pre-Pago - Finalizada | 0d | 2019-07-22 | 2019-07-22 | 244 | 128d |
| 246 | 2.9 | **ONDA 20: Criação de telas para operação (detecção de fraude Fixa R1, detecção de fraude Fixa R2, detecção de fraude TV, detecção de fraude Movel e Oi Total** | 55d | 2019-07-23 | 2019-10-07 |  | 0d |
| 247 |  | Análise (Desenho de Solução, Especificação Técnica, Cenários de Teste e Critérios de Aceitação) | 10d | 2019-07-23 | 2019-08-05 | 244 | 0d |
| 248 |  | Construção e Testes Unitários | 24d | 2019-08-06 | 2019-09-06 | 247 | 0d |
| 249 |  | Elaborar Runbook | 2d | 2019-09-09 | 2019-09-10 | 248 | 92d |
| 250 |  | Testes de Sistema | 5d | 2019-09-09 | 2019-09-13 | 248 | 0d |
| 251 |  | Testes Integrados | 2d | 2019-09-16 | 2019-09-17 | 250 | 0d |
| 252 |  | UAT | 5d | 2019-09-18 | 2019-09-24 | 251 | 82d |
| 253 |  | Elaborar PLIM | 2d | 2019-09-18 | 2019-09-19 | 251 | 0d |
| 254 |  | Implantação | 2d | 2019-09-20 | 2019-09-23 | 253 | 0d |
| 255 |  | Operação Assistida | 10d | 2019-09-24 | 2019-10-07 | 254 | 73d |
| 256 |  | Onda 20 - Criação de telas para operação (detecção de fraude Fixa R1, detecção de fraude Fixa R2, detecção de fraude TV, detecção de fraude Movel e Oi Total - Finalizada | 0d | 2019-10-07 | 2019-10-07 | 255 | 73d |
| 257 | 2.10 | **ONDA 21: Pós Tratamento da Fraude (Regras de Desbloqueio)** | 40d | 2019-09-24 | 2019-11-20 |  | 0d |
| 258 |  | Análise (Desenho de Solução, Especificação Técnica, Cenários de Teste e Critérios de Aceitação) | 5d | 2019-09-24 | 2019-09-30 | 254 | 0d |
| 259 |  | Construção e Testes Unitários | 15d | 2019-10-01 | 2019-10-22 | 258 | 0d |
| 260 |  | Elaborar Runbook | 2d | 2019-10-23 | 2019-10-24 | 259 | 61d |
| 261 |  | Testes de Sistema | 4d | 2019-10-23 | 2019-10-28 | 259 | 0d |
| 262 |  | Testes Integrados | 3d | 2019-10-29 | 2019-10-31 | 261 | 0d |
| 263 |  | UAT | 4d | 2019-11-01 | 2019-11-06 | 262 | 52d |
| 264 |  | Elaborar PLIM | 2d | 2019-11-01 | 2019-11-04 | 262 | 0d |
| 265 |  | Implantação | 1d | 2019-11-05 | 2019-11-05 | 264 | 0d |
| 266 |  | Operação Assistida | 10d | 2019-11-06 | 2019-11-20 | 265 | 43d |
| 267 |  | Onda 21 - Pos Tratamento da Fraude Regras de desbloqueio - Finalizada | 0d | 2019-11-20 | 2019-11-20 | 266 | 43d |
| 268 | 2.11 | **ONDA 22: Pós Tratamento da Fraude (Integração Fat, Cob e Contest)** | 50d | 2019-11-06 | 2020-01-21 |  | 0d |
| 269 |  | Análise (Desenho de Solução, Especificação Técnica, Cenários de Teste e Critérios de Aceitação) | 10d | 2019-11-06 | 2019-11-20 | 265 | 0d |
| 270 |  | Construção e Testes Unitários | 25d | 2019-11-21 | 2019-12-27 | 269 | 0d |
| 271 |  | Elaborar Runbook | 2d | 2019-12-30 | 2020-01-02 | 270 | 16d |
| 272 |  | Testes de Sistema | 4d | 2019-12-30 | 2020-01-06 | 270 | 3d |
| 273 |  | Testes Integrados | 2d | 2020-01-07 | 2020-01-08 | 272 | 3d |
| 274 |  | UAT | 3d | 2020-01-09 | 2020-01-13 | 273 | 9d |
| 275 |  | Elaborar PLIM | 2d | 2020-01-09 | 2020-01-10 | 273 | 3d |
| 276 |  | Implantação | 2d | 2020-01-13 | 2020-01-14 | 275 | 3d |
| 277 |  | Operação Assistida | 5d | 2020-01-15 | 2020-01-21 | 276 | 3d |
| 278 |  | Onda 22 - Pos Tratamento da Fraude - Finalizada | 0d | 2020-01-21 | 2020-01-21 | 277 | 3d |
| 279 | 2.12 | **Treinamento Help Desk (FMS-06)** | 3d | 2019-12-30 | 2020-01-03 |  | 0d |
| 280 |  | Elaborar material | 1d | 2019-12-30 | 2019-12-30 | 270 | 0d |

| ID | WBS | Task | Duration | Start | Finish | Predecessors | Total float |
| --- | --- | --- | --- | --- | --- | --- | --- |
| 281 |  | Ambiente disponibilizado | 0d | 2019-12-30 | 2019-12-30 | 280 | 0d |
| 282 |  | Realizar Treinamento | 2d | 2020-01-02 | 2020-01-03 | 281 | 0d |
| 283 |  | Treinamento Usuário Finalizado | 0d | 2020-01-03 | 2020-01-03 | 282 | 0d |
| 284 | 2.13 | **Treinamento Administração Funcional (FMS-03)** | 5d | 2020-01-06 | 2020-01-10 |  | 0d |
| 285 |  | Elaborar material | 2d | 2020-01-06 | 2020-01-07 | 283 | 0d |
| 286 |  | Ambiente disponibilizado | 0d | 2020-01-07 | 2020-01-07 | 285 | 0d |
| 287 |  | Realizar Treinamento | 3d | 2020-01-08 | 2020-01-10 | 286 | 0d |
| 288 |  | Treinamento Administração Funcional Finalizado | 0d | 2020-01-10 | 2020-01-10 | 287 | 0d |
| 289 | 2.14 | **Treinamento Administração Técnica (FMS-02)** | 6d | 2020-01-13 | 2020-01-20 |  | 0d |
| 290 |  | Elaborar material | 3d | 2020-01-13 | 2020-01-15 | 288 | 0d |
| 291 |  | Ambiente disponibilizado | 0d | 2020-01-15 | 2020-01-15 | 290 | 0d |
| 292 |  | Realizar Treinamento | 3d | 2020-01-16 | 2020-01-20 | 291 | 0d |
| 293 |  | Treinamento Administração Técnica Finalizado | 0d | 2020-01-20 | 2020-01-20 | 292 | 0d |
| 294 | 2.15 | **Treinamento Usuário (FMS-04)** | 4d | 2020-01-21 | 2020-01-24 |  | 0d |
| 295 |  | Elaborar material | 2d | 2020-01-21 | 2020-01-22 | 293 | 0d |
| 296 |  | Ambiente disponibilizado | 0d | 2020-01-22 | 2020-01-22 | 295 | 0d |
| 297 |  | Realizar Treinamento | 2d | 2020-01-23 | 2020-01-24 | 296 | 0d |
| 298 |  | Treinamento Usuário Finalizado | 0d | 2020-01-24 | 2020-01-24 | 297 | 0d |

## Version 2 (data date 2018-01-26, saved 2018-01-29, file PLN_BR.A.16.POI.039.00_P_003 - RAID_FMS_26012018.mpp)

Note of the change: up 201802081255

Last finish stays 2020-01-24. Complete tasks 32 → 47.

Added:

| ID | Task | Duration | Start | Finish | Predecessors |
| --- | --- | --- | --- | --- | --- |
| 70 | **Especificação Funcional** | 12d | 2018-01-24 A | 2018-02-08 | 46 |

Changed:

| ID | Task | Start | Finish | Complete | Total float |
| --- | --- | --- | --- | --- | --- |
| 1 | **Projeto RAID FMS OI - Programa 1** |  |  | 35% → 42% |  |
| 26 | **ONDA 2: TV Offline (Quick Wins - Motor de Fraude)** |  |  | 79% → 95% |  |
| 33 | **Análise (Desenho de Solução, Plano de Testes e Critérios de Aceitação)** |  |  | 98% → 99% |  |
| 36 | Elaboração de Plano de Testes Consolidado |  | 2017-11-21 A | 95% → 100% | 1.9d → none |
| 37 | Aprovação de Plano de Testes Consolidado |  | 2017-11-23 A | 95% → 100% | 0d → none |
| 43 | Atualização de Servidores DEV Definitivo no CMDB [agente DISCOVER] | 2017-12-04 A | 2017-12-08 A | 0% → 100% | 529.88d → none |
| 46 | UAT (DEV - RAID FMS) |  | 2018-01-23 A | 95% → 100% | 0d → none |
| 47 | **Pré-Implantação** |  |  | 32% → 89% | 492.88d → 6.88d |
| 48 | **Definição responsabilidades N1/N2 [WEDO/Operações]** |  |  | 57% → 99% |  |
| 49 | Definição de arvore de atendimento remedy [CCO/N1/N2/N3] | 2017-12-28 A | 2018-01-04 A | 0% → 100% | 512.88d → none |
| 50 | Elaboração de matrix RACI [responsáveis x atividades] | 2017-12-28 A | 2018-01-04 A | 0% → 100% | 512.88d → none |
| 52 | Validar/Aprovar Runbook | 2018-01-05 A | 2018-01-11 A | 0% → 100% | 7.88d → none |
| 54 | Workshop com Operações | 2018-01-17 A | 2018-01-18 A | 0% → 100% | 502.88d → none |
| 55 | Construção de Scripts de Monitoração (RAID ou Control-M?) | 2018-01-12 A |  | 0% → 71% |  |
| 56 | Testes de Conectividade e Transmissão [liberação portas de firewall e gestão de acesso] | 2017-12-04 A | 2017-12-08 A | 0% → 100% | 43.88d → none |
| 60 | Aprovar de CRQ | 2018-01-12 A | 2018-01-18 A | 0% → 100% | 4d → none |
| 61 | Planejamento/Aprovação de GMUD | 2018-01-24 A |  | 0% → 43% |  |
| 62 | Pacote de Implantação (Criação e Instalação: DEV - RAID FMS) | 2018-01-24 A | 2018-01-25 A | 0% → 100% | 4d → none |
| 69 | **ONDA 3: Oi Total 2P + Fixa R1 2P** | 2018-01-24 A |  | 0% → 4% | 0d → 455d |
| 72 | Análise Transact | 2018-01-24 A |  | 0% → 71% |  |
| 124 | **Treinamento Administração Funcional (FMS-03)** | 2017-09-04 A | 2017-09-14 A | 0% → 100% | 586d → none |
| 125 | Elaborar material | 2017-09-04 A | 2017-09-11 A | 0% → 100% | 586d → none |
| 126 | Ambiente disponibilizado | 2017-09-11 A | 2017-09-11 A | 0% → 100% | 586d → none |
| 127 | Realizar Treinamento | 2017-09-12 A | 2017-09-14 A | 0% → 100% | 586d → none |
| 128 | Treinamento Administração Funcional Finalizado | 2017-09-14 A | 2017-09-14 A | 0% → 100% | 586d → none |
