# PRJ24387 - Programa Antifraude RAID-FMS - Onda 2

How a schedule from MS Project changed from version to version. A marks actual dates.

## Version 1 (data date 2017-12-12, saved 2018-01-04, file PRJ24387 - Programa Antifraude RAID-FMS - Onda 2_fup20180104.mpp)

Note of the change: up 201801041823

| ID | WBS | Task | Duration | Start | Finish | Predecessors | Complete | Total float | Constraint |
| --- | --- | --- | --- | --- | --- | --- | --- | --- | --- |
| 1 | 1 | **Projeto RAID FMS OI - Programa 1 ==== PG60 ====** | 228d | 2017-09-18 A | 2018-08-20 |  | 45% | 0d |  |
| 2 | 1.1 | **PRJ00024387 - Marcos de Aquisição de Infra-estrutura** | 228d | 2017-09-18 A | 2018-08-20 |  | 76% | 0d |  |
| 3 |  | Acessos Lógicos | 10d | 2017-09-18 A | 2017-09-29 A |  | 100% |  |  |
| 7 |  | Disponibilização do ambiente DEV - Onda 2 (Contingência HML do RAID) | 0d | 2017-10-27 A | 2017-10-27 A |  | 100% |  | start no earlier than 2017-10-27 |
| 8 |  | Instalação Vanilla em DEV - Onda 2 | 5d | 2017-10-27 A | 2017-11-03 A | 7 | 100% |  |  |
| 9 |  | PRJ00024506 - Ambiente de DEV disponível | 10d | 2017-12-04 A | 2017-12-15 |  | 40% | 108d | start no earlier than 2017-12-04 |
| 10 |  | PRJ00024506 - Ambiente de HML disponível | 0d | 2018-05-15 | 2018-05-15 |  |  | 68d | start no earlier than 2018-05-15 |
| 11 |  | PRJ00024931 - Ambiente de PRD disponível | 0d | 2018-08-20 | 2018-08-20 |  |  | 0d | start no earlier than 2018-08-20 |
| 12 | 1.2 | **PRJ00025887 - ONDA 1: Planejamento e Setup** | 42d | 2017-09-18 A | 2017-11-21 |  | 98% | 186d |  |
| 13 |  | Acessos Físicos Liberados | 0d | 2017-09-18 A | 2017-09-18 A |  | 100% |  |  |
| 14 |  | Levantamento e elaboração Blueprint | 12d | 2017-09-18 A | 2017-10-03 A |  | 100% |  |  |
| 15 |  | Validação do blueprint Oi | 3d | 2017-10-04 A | 2017-10-06 A | 14 | 100% |  |  |
| 16 |  | Validação do blueprint WeDo | 27d | 2017-10-09 A | 2017-11-21 A | 15 | 100% |  |  |
| 17 |  | Elaborar Plano de Desenvolvimento do Projeto (PDP) | 6d | 2017-09-26 A | 2017-10-03 A | 14SS+6d | 100% |  |  |
| 18 |  | Elaborar Material kick-off | 1d | 2017-10-04 A | 2017-10-04 A | 17 | 100% |  |  |
| 19 |  | Reunião de Kick-off | 1d | 2017-10-05 | 2017-10-05 | 14 |  | 214d | start no earlier than 2017-10-05 |
| 20 |  | Onda 1 - Planejamento e Setup - Finalizada | 0d | 2017-11-21 | 2017-11-21 | 16, 19 |  | 186d |  |
| 21 |  | Treinamento - Conceitos Básicos - Teoria (FMS-01) | 6d | 2017-10-06 A | 2017-10-17 A |  | 100% |  |  |
| 26 | 1.3 | **PRJ00025351/SUB25837 - ONDA 2: TV off line (Quick Wins - Motor de Fraude)** | 15d | 2017-10-04 A | 2017-10-26 |  | 99% | 0d |  |
| 27 | 1.3.1 | **Detalhamento de regras de negócio e critérios de aceitação** | 12d | 2017-10-04 A | 2017-10-23 |  | 99% | 0d |  |
| 28 |  | 1o lote de regras para validação TI/WEDO (fontes de dados ainda indefinidas) | 3d | 2017-10-04 A | 2017-10-06 A |  | 100% |  |  |
| 29 |  | 2o lote de regras para validação TI/WEDO | 8d | 2017-10-04 A | 2017-10-17 A |  | 100% |  |  |
| 30 |  | Entrega versão final da documentação de regras | 1d | 2017-10-23 A | 2017-10-23 A |  | 100% |  |  |
| 31 |  | Validação do detalhamento de regras e criterios de aceitação | 3d | 2017-10-18 A | 2017-10-26 A | 30 | 100% |  |  |
| 32 |  | Elaboração DAS de Arquitetura | 8d | 2017-10-13 A | 2017-10-25 A | 31FF | 100% |  |  |
| 33 | 1.4 | **Análise (Desenho de Solução, Especificação Técnica, Cenários de Teste e Critérios de Aceitação)** | 29d | 2017-10-23 A | 2017-12-05 |  | 99% | 0d |  |
| 34 |  | Elaboração de DSOL RAID-FMS | 12d | 2017-10-23 A | 2017-11-08 A | 31 | 100% |  |  |
| 35 |  | Aprovação de DSOL RAID-FMS | 2d | 2017-11-08 A | 2017-11-09 A | 34FF | 100% |  |  |
| 36 |  | Elaboração de plano de testes Consolidado | 7d | 2017-11-09 A | 2017-11-21 A | 31, 34 | 100% |  |  |
| 37 |  | Aprovação de plano de testes Consolidado | 10d | 2017-11-22 A | 2017-12-05 A | 36 | 100% |  |  |
| 38 |  | Construção e Testes Unitários no ambiente DEV (Contingência HML RAID) | 30d | 2017-11-13 A | 2017-12-27 | 8FS+1d, 35FS+1d | 65% | 94d |  |
| 39 |  | Atualização de Servidores DEV no CMDB [agente DISCOVER] | 5d | 2017-12-18 | 2017-12-22 | 9 |  | 108d |  |
| 40 |  | Instalação Vanila Ambiente DEV (RAID FMS) | 4d | 2017-12-26 | 2017-12-29 | 39 |  | 159d |  |
| 41 |  | Testes de Sistema (Contingência HML RAID) | 7d | 2017-12-29 | 2018-01-09 | 38FS+1d |  | 94d |  |
| 42 |  | Pacote de Implantação (Criação e Instalação: DEV - RAID FMS) | 1d | 2018-01-09 | 2018-01-09 | 41FF |  | 153d |  |
| 43 |  | UAT em ambiente DEV (Ambiente DEV definitivo) | 10d | 2018-01-10 | 2018-01-23 | 41, 9 |  | 94d |  |
| 44 |  | Validação Prévia - Pacote de Cargas | 4d | 2017-12-13 | 2017-12-18 | 38SS+20d |  | 166d | finish no earlier than 2017-12-18 |
| 45 |  | Avaliação das Críticas/Dúvidas após validação | 1d | 2017-12-19 | 2017-12-19 | 44 |  | 166d |  |
| 46 | 1.13 | **Definição responsabilidades N1/N2 [WEDO/Operações]** | 10d | 2017-12-28 | 2018-01-11 |  |  | 136d |  |
| 47 |  | Definição de arvore de atendimento remedy [CCO/N1/N2/N3] | 5d | 2017-12-28 | 2018-01-04 | 38 |  | 156d |  |
| 48 |  | Elaboração de matrix RACI [responsáveis x atividades] | 5d | 2017-12-28 | 2018-01-04 | 38 |  | 156d |  |
| 49 |  | Elaborar Runbook | 5d | 2017-12-28 | 2018-01-04 | 38 |  | 136d |  |
| 50 |  | Validação de runbook | 5d | 2018-01-05 | 2018-01-11 | 49 |  | 136d |  |
| 51 |  | Elaboração de MOP | 5d | 2017-12-28 | 2018-01-04 | 38 |  | 155d |  |
| 52 |  | Workshop com Operações | 1d | 2018-01-05 | 2018-01-05 | 51 |  | 155d |  |
| 53 |  | Construção de scripts de monitoração | 15d | 2018-01-12 | 2018-02-01 | 49, 50 |  | 136d |  |
| 54 |  | Construção de scripts de transmissão | 15d | 2018-01-12 | 2018-02-01 | 49, 50 |  | 136d |  |
| 55 |  | Testes de Conectividade e Transmissão [liberação portas de firewall e gestão de acesso] | 5d | 2017-12-18 | 2017-12-22 | 33, 9 |  | 163d |  |
| 56 |  | Elaborar PLIM | 2d | 2018-01-10 | 2018-01-11 | 38, 41 |  | 97d |  |
| 57 |  | Abertura de CRQ | 1d | 2018-01-11 | 2018-01-11 | 56FF, 39 |  | 97d |  |
| 58 |  | Aprovação de CRQ | 5d | 2018-01-12 | 2018-01-18 | 56, 57 |  | 97d |  |
| 59 |  | Planejamento e aprovação de GMUD | 5d | 2018-01-24 | 2018-01-30 | 58, 43 |  | 94d |  |
| 60 |  | Pacote RAID-FMS pronto para Implantação | 2d | 2018-01-24 | 2018-01-25 | 43 |  | 97d |  |
| 61 |  | Implantação [considerando ambiente DEV definitiva como Contingência de PRD Onda 2) | 2d | 2018-01-31 | 2018-02-01 | 9, 60, 43, 59 |  | 94d |  |
| 62 |  | Operação Assistida | 5d | 2018-02-05 | 2018-02-09 | 61FS+1d |  | 130d |  |
| 63 |  | Entrega da especificação técnica | 5d | 2018-02-05 | 2018-02-09 | 60, 62SS |  | 130d |  |
| 64 |  | WAC - Analytics (calibragem das regras) | 35d | 2018-02-02 | 2018-03-26 | 61 |  | 94d |  |
| 65 |  | WAC - Treinamento | 7d | 2018-03-27 | 2018-04-05 | 64 |  | 94d |  |
| 66 |  | Onda 2 - TV off line - Finalizada | 0d | 2018-02-09 | 2018-02-09 | 62, 63 |  | 130d |  |

## Version 2 (data date 2017-12-12, saved 2018-01-04, file PRJ24387 - Programa Antifraude RAID-FMS - Onda 2_fup20180104.mpp)

Note of the change: up 201801041823

Last finish stays 2018-08-20. Complete tasks 19 → 24.

Changed:

| ID | Task | Start | Finish | Duration | Complete | Total float |
| --- | --- | --- | --- | --- | --- | --- |
| 1 | **Projeto RAID FMS OI - Programa 1 ==== PG60 ====** |  |  |  | 45% → 60% |  |
| 2 | **PRJ00024387 - Marcos de Aquisição de Infra-estrutura** |  |  |  | 76% → 99% |  |
| 9 | PRJ00024506 - Ambiente de DEV disponível |  | 2017-12-15 → 2018-01-02 A (+18d) | 10d → 20d | 40% → 100% | 108d → none |
| 38 | Construção e Testes Unitários no ambiente DEV (Contingência HML RAID) |  | 2017-12-27 A |  | 65% → 100% | 94d → none |
| 39 | Atualização de Servidores DEV no CMDB [agente DISCOVER] | 2017-12-18 A | 2017-12-22 → 2018-01-09 (+18d) |  | 0% → 95% | 108d → 98d |
| 40 | Instalação Vanila Ambiente DEV (RAID FMS) | 2017-12-26 A | 2017-12-29 → 2018-01-15 (+17d) |  | 0% → 90% | 159d → 149d |
| 41 | Testes de Sistema (Contingência HML RAID) | 2017-12-29 A |  |  | 0% → 50% |  |
| 46 | **Definição responsabilidades N1/N2 [WEDO/Operações]** | 2017-12-28 A |  |  | 0% → 54% | 136d → 151d |
| 47 | Definição de arvore de atendimento remedy [CCO/N1/N2/N3] | 2017-12-28 A |  |  | 0% → 10% |  |
| 48 | Elaboração de matrix RACI [responsáveis x atividades] | 2017-12-28 A | 2018-01-04 A |  | 0% → 100% | 156d → none |
| 49 | Elaborar Runbook | 2017-12-28 A | 2018-01-04 A |  | 0% → 100% | 136d → none |
| 51 | Elaboração de MOP | 2017-12-28 A |  |  | 0% → 50% | 155d → 156d |
| 52 | Workshop com Operações | 2018-01-05 A | 2018-01-05 A |  | 0% → 100% | 155d → none |
| 55 | Testes de Conectividade e Transmissão [liberação portas de firewall e gestão de acesso] | 2017-12-18 → 2018-01-03 A (+16d) | 2017-12-22 → 2018-01-09 (+18d) |  | 0% → 50% | 163d → 153d |

## Version 3 (data date 2017-12-12, saved 2018-01-11, file PRJ24387 - Programa Antifraude RAID-FMS - Onda 2_fup20180104.mpp)

Note of the change: up 201801151139

Last finish stays 2018-08-20. Complete tasks 24 → 27.

Changed:

| ID | Task | Start | Finish | Duration | Complete | Total float |
| --- | --- | --- | --- | --- | --- | --- |
| 42 | Pacote de Implantação (Criação e Instalação: DEV - RAID FMS) | 2018-01-09 A | 2018-01-09 A |  | 0% → 100% | 153d → none |
| 43 | UAT em ambiente DEV (Ambiente DEV definitivo) | 2018-01-10 A |  |  | 0% → 20% |  |
| 44 | Validação Prévia - Pacote de Cargas | 2017-12-13 A | 2017-12-18 A |  | 0% → 100% | 166d → none |
| 45 | Avaliação das Críticas/Dúvidas após validação | 2017-12-19 A | 2017-12-19 A |  | 0% → 100% | 166d → none |
| 46 | **Definição responsabilidades N1/N2 [WEDO/Operações]** |  | 2018-01-11 → 2018-01-18 (+7d) | 10d → 15d | 54% → 39% | 151d → 146d |
| 47 | Definição de arvore de atendimento remedy [CCO/N1/N2/N3] | 2017-12-28 A → 2017-12-28 | 2018-01-04 → 2018-01-18 (+14d) | 5d → 15d | 10% → 0% | 156d → 146d |
| 50 | Validação de runbook | 2018-01-05 A |  |  | 0% → 50% |  |
| 51 | Elaboração de MOP |  | 2018-01-04 → 2018-01-17 (+13d) | 5d → 14d | 50% → 30% | 156d → 147d |
| 56 | Elaborar PLIM |  | 2018-01-11 → 2018-01-12 (+1d) | 2d → 3d |  | 97d → 96d |
| 57 | Abertura de CRQ | 2018-01-11 → 2018-01-12 (+1d) | 2018-01-11 → 2018-01-12 (+1d) |  |  | 97d → 96d |
| 58 | Aprovação de CRQ | 2018-01-12 → 2018-01-15 (+3d) | 2018-01-18 → 2018-01-19 (+1d) |  |  | 97d → 96d |

## Version 4 (data date 2017-12-29, saved 2017-12-29, file PRJ24387 - Programa Antifraude RAID-FMS - Onda 2.mpp)

Note of the change: up 201712291311

Last finish stays 2018-08-20. Complete tasks 27 → 22.

Changed:

| ID | Task | Start | Finish | Duration | Complete | Total float | Predecessors |
| --- | --- | --- | --- | --- | --- | --- | --- |
| 1 | **Projeto RAID FMS OI - Programa 1 ==== PG60 ====** |  |  |  | 60% → 52% |  |  |
| 9 | PRJ00024506 - Ambiente de DEV disponível |  | 2018-01-02 A → 2017-12-26 A (-7d) | 20d → 16d |  |  |  |
| 20 | Onda 1 - Planejamento e Setup - Finalizada | 2017-11-21 A | 2017-11-21 A |  | 0% → 100% | 186d → none |  |
| 39 | Atualização de Servidores DEV no CMDB [agente DISCOVER] | 2017-12-18 A → 2017-12-27 (+9d) | 2018-01-09 → 2018-01-03 (-6d) |  | 95% → 0% | 98d → 102d |  |
| 40 | Instalação Vanila Ambiente DEV (RAID FMS) | 2017-12-26 A → 2017-12-27 A (+1d) | 2018-01-15 → 2018-01-02 (-13d) |  | 90% → 50% | 149d → 158d | 39 → 9 |
| 41 | Testes de Sistema (Contingência HML RAID) | 2017-12-29 A → 2017-12-29 |  |  | 50% → 0% |  |  |
| 42 | Pacote de Implantação (Criação e Instalação: DEV - RAID FMS) | 2018-01-09 A → 2018-01-09 | 2018-01-09 A → 2018-01-09 |  | 100% → 0% | none → 153d |  |
| 43 | UAT em ambiente DEV (Ambiente DEV definitivo) | 2018-01-10 A → 2018-01-10 |  |  | 20% → 0% |  |  |
| 44 | Validação Prévia - Pacote de Cargas | 2017-12-13 A → 2017-12-13 | 2017-12-18 A → 2017-12-18 |  | 100% → 0% | none → 166d |  |
| 45 | Avaliação das Críticas/Dúvidas após validação | 2017-12-19 A → 2017-12-19 | 2017-12-19 A → 2017-12-19 |  | 100% → 0% | none → 166d |  |
| 46 | **Definição responsabilidades N1/N2 [WEDO/Operações]** | 2017-12-28 A → 2017-12-28 | 2018-01-18 → 2018-01-11 (-7d) | 15d → 10d | 39% → 0% | 146d → 136d |  |
| 47 | Definição de arvore de atendimento remedy [CCO/N1/N2/N3] |  | 2018-01-18 → 2018-01-04 (-14d) | 15d → 5d |  | 146d → 156d |  |
| 48 | Elaboração de matrix RACI [responsáveis x atividades] | 2017-12-28 A → 2017-12-28 | 2018-01-04 A → 2018-01-04 |  | 100% → 0% | none → 156d |  |
| 49 | Elaborar Runbook | 2017-12-28 A → 2017-12-28 | 2018-01-04 A → 2018-01-04 |  | 100% → 0% | none → 136d |  |
| 50 | Validação de runbook | 2018-01-05 A → 2018-01-05 |  |  | 50% → 0% |  |  |
| 51 | Elaboração de MOP | 2017-12-28 A → 2017-12-28 | 2018-01-17 → 2018-01-04 (-13d) | 14d → 5d | 30% → 0% | 147d → 155d |  |
| 52 | Workshop com Operações | 2018-01-05 A → 2018-01-05 | 2018-01-05 A → 2018-01-05 |  | 100% → 0% | none → 155d |  |
| 55 | Testes de Conectividade e Transmissão [liberação portas de firewall e gestão de acesso] | 2018-01-03 A → 2017-12-27 (-7d) | 2018-01-09 → 2018-01-03 (-6d) |  | 50% → 0% | 153d → 157d |  |
| 56 | Elaborar PLIM |  | 2018-01-12 → 2018-01-11 (-1d) | 3d → 2d |  | 96d → 97d |  |
| 57 | Abertura de CRQ | 2018-01-12 → 2018-01-11 (-1d) | 2018-01-12 → 2018-01-11 (-1d) |  |  | 96d → 97d |  |
| 58 | Aprovação de CRQ | 2018-01-15 → 2018-01-12 (-3d) | 2018-01-19 → 2018-01-18 (-1d) |  |  | 96d → 97d |  |

## Version 5 (data date 2018-01-02, saved 2018-01-02, file PRJ24387 - Programa Antifraude RAID-FMS - Onda 2_201801031238.mpp)

Note of the change: up 201801031547

Last finish stays 2018-08-20. Complete tasks 22 → 23.

Removed: 45 Avaliação das Críticas/Dúvidas após validação

Changed:

| ID | Task | Start | Finish | Complete | Total float |
| --- | --- | --- | --- | --- | --- |
| 1 | **Projeto RAID FMS OI - Programa 1 ==== PG60 ====** |  |  | 52% → 56% |  |
| 10 | PRJ00024506 - Ambiente de HML disponível | 2018-05-15 A |  | 0% → 80% |  |
| 19 | Reunião de Kick-off | 2017-10-05 A |  |  | 214d → 0d |
| 39 | Atualização de Servidores DEV no CMDB [agente DISCOVER] | 2017-12-27 A |  | 0% → 90% |  |
| 41 | Testes de Sistema (Contingência HML RAID) | 2017-12-29 A |  |  |  |
| 44 | Validação Prévia - Pacote de Cargas | 2017-12-13 A | 2017-12-18 A | 0% → 100% | 166d → none |
| 45 | **Definição responsabilidades N1/N2 [WEDO/Operações]** | 2017-12-28 A |  |  | 136d → 151d |
| 46 | Definição de arvore de atendimento remedy [CCO/N1/N2/N3] | 2017-12-28 A |  |  |  |
| 47 | Elaboração de matrix RACI [responsáveis x atividades] | 2017-12-28 A |  |  |  |
| 48 | Elaborar Runbook | 2017-12-28 A |  |  |  |
| 50 | Elaboração de MOP | 2017-12-28 A |  |  |  |
| 54 | Testes de Conectividade e Transmissão [liberação portas de firewall e gestão de acesso] | 2017-12-27 A |  | 0% → 80% |  |
