# Plano de DSOL Onda 3

How a schedule from MS Project changed from version to version. A marks actual dates.

## Version 1 (saved 2018-01-12, file Plano de DSOL Onda 3.mpp)

Note of the change: up 201801151139

| ID | WBS | Task | Duration | Start | Finish | Predecessors | Total float |
| --- | --- | --- | --- | --- | --- | --- | --- |
| 1 | 1 | **DSOL Consolidado Onda 3** | 23d | 2018-01-24 | 2018-02-23 |  |  |
| 2 | 1.1 | **Elaboração DSOL RAID-FMS, TRANSACT e SOA** | 13d | 2018-01-24 | 2018-02-09 |  |  |
| 3 |  | Disponibilização de insumos de telas de crédito e operação | 1d | 2018-01-23 | 2018-01-23 |  |  |
| 4 |  | Plenária inicial de Alinhamento geral de solução | 1d | 2018-01-24 | 2018-01-24 |  |  |
| 5 | 1.1.3 | **Elaboração Documentação DFs RAID-FMS** | 12d | 2018-01-25 | 2018-02-09 | 4 |  |
| 6 |  | Definição funcional de input de dados SOA->TRANSACT | 2d | 2018-01-24 | 2018-01-25 |  |  |
| 7 |  | Definição de telas operação de credito e produtividade | 3d | 2018-01-31 | 2018-02-02 | 4FS+2d |  |
| 8 |  | Definição de fluxo online de propostas derivadas Transact x RAID-FMS | 2d | 2018-02-05 | 2018-02-06 | 4FS+7d |  |
| 9 |  | Elaboração Documentação DF´s TRANSACT | 13d | 2018-01-24 | 2018-02-09 | 4SF |  |
| 10 |  | Plenária de alinhamento integração SOA-Transact-FMS | 2d | 2018-02-05 | 2018-02-06 | 4FS+10d |  |
| 11 |  | Elaboração de DF´s integração Transact-SOA-FMS | 5d | 2018-02-05 | 2018-02-09 | 10FF |  |
| 12 |  | Plenária final de Visão Geral da Solução | 1d | 2018-02-09 | 2018-02-09 |  |  |
| 13 | 1.2 | **Consolidação e Validação DSOL Onda 3** | 7d | 2018-02-15 | 2018-02-23 |  | 0d |
| 14 |  | Elaboração DSOL consolidado | 5d | 2018-02-15 | 2018-02-21 | 12 |  |
| 15 |  | Plenária de validação DSOL Consolidado | 1d | 2018-02-22 | 2018-02-22 | 14 |  |
| 16 |  | Aprovação Documento Controlado CA | 5d | 2018-02-19 | 2018-02-23 | 15 |  |
| 17 |  | Fim Plano DSOL | 0d | 2018-02-23 | 2018-02-23 | 16FF |  |
| 22 |  | Carnaval | 5d | 2018-02-12 | 2018-02-16 |  |  |
| 23 |  | definição de input de dados | 2d | 2018-01-24 | 2018-01-25 |  |  |
| 24 |  | detalhamento de regras e prototipo de telas de credito | 3d | 2018-01-24 | 2018-01-26 |  |  |
| 25 |  | reunião sobre telas com priscila | 3d | 2018-01-31 | 2018-02-02 |  |  |
| 26 |  | Reunião sobre integração propostas | 2d | 2018-02-05 | 2018-02-06 |  |  |

## Version 2 (saved 2018-01-16, file Plano de DSOL Onda 3 versão 1.0.mpp)

Note of the change: up 201801161917

Last finish stays 2018-02-23.

Removed: 22 Carnaval; 23 definição de input de dados; 24 detalhamento de regras e prototipo de telas de credito; 25 reunião sobre telas com priscila; 26 Reunião sobre integração propostas

## Version 3 (saved 2018-02-01, file Plano de DSOL Onda 3 [CR SD] versão 2.0.mpp)

Note of the change: up 201802081255

Last finish 2018-02-23 → 2018-03-06 (+11d). Complete tasks 0 → 3.

Added:

| ID | Task | Duration | Start | Finish | Predecessors |
| --- | --- | --- | --- | --- | --- |
| 9 | Elaboraçao artefatos RAID-FMS | 6d | 2018-02-09 | 2018-02-16 | 6, 7FS+3d, 8FS+2d |

Changed:

| ID | Task | Start | Finish | Duration | Complete | Total float | Predecessors |
| --- | --- | --- | --- | --- | --- | --- | --- |
| 1 | **DSOL Consolidado Onda 3** |  |  |  | 0% → 7% |  |  |
| 2 | **Elaboração DSOL RAID-FMS, TRANSACT e SOA** |  |  |  | 0% → 11% |  |  |
| 3 | Disponibilização de insumos de telas de crédito e operação | 2018-01-23 A | 2018-01-23 A |  | 0% → 100% |  |  |
| 4 | Plenária inicial de Alinhamento geral de solução | 2018-01-24 A | 2018-01-24 A |  | 0% → 100% |  |  |
| 5 | **Elaboração Documentação DFs RAID-FMS** |  |  |  | 0% → 13% |  |  |
| 6 | Definição funcional de input de dados SOA->TRANSACT | 2018-01-24 A | 2018-01-25 A |  | 0% → 100% |  |  |
| 7 | Definição de telas operação de credito e produtividade | 2018-01-31 → 2018-01-29 (-2d) |  | 3d → 5d |  |  |  |
| 11 | Plenária de alinhamento integração SOA-Transact-FMS | 2018-02-05 → 2018-02-08 (+3d) | 2018-02-06 → 2018-02-09 (+3d) |  |  | none → 0d |  |
| 13 | Plenária final de Visão Geral da Solução | 2018-02-09 → 2018-02-19 (+10d) | 2018-02-09 → 2018-02-19 (+10d) |  |  | none → -7d | none → 9 |
| 14 | **Consolidação e Validação DSOL Onda 3** | 2018-02-15 → 2018-02-20 (+5d) | 2018-02-23 → 2018-03-06 (+11d) | 7d → 11d |  | 0d → -7d |  |
| 15 | Elaboração DSOL consolidado | 2018-02-15 → 2018-02-20 (+5d) | 2018-02-21 → 2018-02-26 (+5d) |  |  | none → -7d |  |
| 16 | Plenária de validação DSOL Consolidado | 2018-02-22 → 2018-02-27 (+5d) | 2018-02-22 → 2018-02-27 (+5d) |  |  | none → -7d |  |
| 17 | Aprovação Documento Controlado CA | 2018-02-19 → 2018-02-28 (+9d) | 2018-02-23 → 2018-03-06 (+11d) |  |  | none → -7d |  |
| 18 | Fim Plano DSOL | 2018-02-23 → 2018-03-06 (+11d) | 2018-02-23 → 2018-03-06 (+11d) |  |  | none → -7d |  |
